How a schedule from MS Project changed from version to version. A marks actual dates.

## Version 1 (saved 2022-09-01, file Archivo PROJECT Control de Proyecto.mpp)

Note of the change: DOCUMENTACION

| ID | WBS | Task | Duration | Start | Finish | Complete | Constraint |
| --- | --- | --- | --- | --- | --- | --- | --- |
| 1 | 1 | **Proyecto de PDRMyE** | 136d | 2022-05-11 A | 2022-11-16 | 20% |  |
| 2 |  | Inicio | 0d | 2022-05-11 | 2022-05-11 |  |  |
| 3 | 1.2 | **Inicio y Planificación** | 80d | 2022-05-11 A | 2022-08-30 | 100% |  |
| 4 | 1.2.1 | **Levantamiento de Generalidades Técnicas** | 48d | 2022-05-11 | 2022-07-15 | 100% |  |
| 5 |  | Reunion CPH | 1d | 2022-06-14 A | 2022-06-15 A | 100% |  |
| 6 |  | Reunion DAMOP | 1d | 2022-06-15 A | 2022-06-16 A | 100% |  |
| 7 |  | Reunion CPH | 1d | 2022-06-16 A | 2022-06-17 A | 100% |  |
| 8 |  | Reunion CPH | 1d | 2022-06-17 A | 2022-06-20 A | 100% |  |
| 9 |  | Reunion CPH | 1d | 2022-06-20 A | 2022-06-21 A | 100% |  |
| 10 |  | Reunion DAMOP | 1d | 2022-06-21 A | 2022-06-22 A | 100% |  |
| 11 |  | Reunion DAMOP | 1d | 2022-06-23 A | 2022-06-24 A | 100% |  |
| 12 |  | Reunion DAMOP | 1d | 2022-06-29 A | 2022-06-30 A | 100% |  |
| 13 |  | Reunion DAMOP | 1d | 2022-07-12 A | 2022-07-13 A | 100% |  |
| 14 |  | Reunion DAF | 1d | 2022-07-12 A | 2022-07-13 A | 100% |  |
| 15 |  | Reunion DCCP | 1d | 2022-07-13 A | 2022-07-14 A | 100% |  |
| 16 |  | Reunion DPCP | 1d | 2022-07-13 A | 2022-07-14 A | 100% | finish no earlier than 2022-07-14 |
| 17 | 1.2.2 | **Objeto y Proyección del Alcance** | 32d | 2022-07-15 | 2022-08-29 | 100% |  |
| 18 |  | Avance de Maqueta para Plataforma de Distribuciones | 1d | 2022-05-11 A | 2022-05-11 A | 100% |  |
| 19 |  | Revision de cambios a maqueta | 1d | 2022-05-11 A | 2022-05-11 A | 100% |  |
| 20 |  | Reunion_AVANCES_Semanal | 1d | 2022-05-11 A | 2022-05-11 A | 100% |  |
| 21 |  | Reunión sobre Seguridad de la Plataforma | 1d | 2022-05-11 A | 2022-05-11 A | 100% |  |
| 22 |  | Reunion_AVANCES_Semanal | 1d | 2022-05-11 A | 2022-05-11 A | 100% |  |
| 23 |  | Edicion de maquetas CPH, DPCP, DAMOP, DCCP, DAF, Municipios | 1d | 2022-05-11 A | 2022-05-11 A | 100% |  |
| 24 |  | Reunion_AVANCES_Semanal | 1d | 2022-05-11 A | 2022-05-11 A | 100% |  |
| 25 |  | Definir la arquitectura que se utilizara | 1d | 2022-05-11 A | 2022-05-11 A | 100% |  |
| 26 |  | Presentacion de Propuesta Arquitectura de Micro sitios | 1d | 2022-05-11 A | 2022-05-11 A | 100% |  |
| 27 |  | Aprobacion de Propuesta de Arquitectura de Micro sitios | 1d | 2022-05-11 A | 2022-05-11 A | 100% |  |
| 28 |  | Presentación de Maqueta PDRMyE | 1d | 2022-05-11 A | 2022-05-11 A | 100% |  |
| 29 |  | Gerente de Proyecto Reviso maqueta de CPH | 1d | 2022-05-11 A | 2022-05-11 A | 100% |  |
| 30 |  | Reunion_AVANCES_Semanal | 1d | 2022-05-11 A | 2022-05-11 A | 100% |  |
| 31 |  | Retroalimentacion de maquetado con CPH | 1d | 2022-05-11 A | 2022-05-11 A | 100% |  |
| 32 |  | Retroalimentacion de maquetado con DAMOP | 1d | 2022-05-11 A | 2022-05-11 A | 100% |  |
| 33 |  | Retroalimentacion de maquetado con DCCP | 1d | 2022-05-11 A | 2022-05-11 A | 100% |  |
| 34 |  | Reunion_AVANCES_Semanal | 1d | 2022-05-11 A | 2022-05-11 A | 100% |  |
| 35 |  | Revisioin de avances de maquetas | 1d | 2022-05-11 A | 2022-05-11 A | 100% |  |
| 36 |  | Reunion_AVANCES_Semanal | 1d | 2022-05-11 A | 2022-05-11 A | 100% |  |
| 37 |  | Aclaracion dudas con la maqueta de firma electronica | 1d | 2022-05-11 A | 2022-05-11 A | 100% |  |
| 38 |  | Revision de maqueta de firma electronica | 1d | 2022-05-11 A | 2022-05-11 A | 100% |  |
| 39 |  | Reunion_AVANCES_Semanal | 1d | 2022-05-11 A | 2022-05-11 A | 100% |  |
| 40 |  | reunión demostración plataforma Ing. Marisol | 1d | 2022-05-11 A | 2022-05-11 A | 100% |  |
| 41 | 1.3 | **Diseño y Desarrollo BACK** | 88d | 2022-07-15 | 2022-11-15 | 22% |  |
| 42 | 1.3.1 | **Módulo de Administración** | 53.75d | 2022-09-01 A | 2022-11-15 | 46% |  |
| 43 | 1.3.1.1 | **Base** | 53.75d | 2022-09-01 A | 2022-11-15 | 50% |  |
| 44 |  | Login | 53.75d | 2022-09-01 A | 2022-11-15 A | 100% |  |
| 45 |  | Logout | 53.75d | 2022-09-01 A | 2022-11-15 A | 100% |  |
| 46 |  | Bloqueo de Sesión | 53.75d? | 2022-09-01 | 2022-11-15 |  |  |
| 47 |  | Perfil | 53.75d? | 2022-09-01 | 2022-11-15 |  |  |
| 48 | 1.3.1.2 | **Administración de Usuarios** | 1d | 2022-09-01 | 2022-09-01 |  |  |
| 49 |  | Agregar | 1d? | 2022-09-01 | 2022-09-01 |  |  |
| 50 |  | Pantalla Principal | 1d? | 2022-09-01 | 2022-09-01 |  |  |
| 51 |  | Editar | 1d? | 2022-09-01 | 2022-09-01 |  |  |
| 52 |  | Eliminar | 1d? | 2022-09-01 | 2022-09-01 |  |  |
| 53 |  | Configuración de Dashboard | 1d? | 2022-09-01 | 2022-09-01 |  |  |
| 54 |  | Exportación de dashboard PDF | 1d | 2022-09-01 | 2022-09-01 |  |  |
| 55 |  | Exportación de dashboard Excel | 1d | 2022-09-01 | 2022-09-01 |  |  |
| 56 |  | Paginación Dashboard | 1d | 2022-09-01 | 2022-09-01 |  |  |
| 57 |  | Busqueda Dash board | 1d | 2022-09-01 | 2022-09-01 |  |  |
| 58 |  | Ventanas emergentes de validación | 1d | 2022-09-01 | 2022-09-01 |  |  |
| 59 | 1.3.1.3 | **Administración de Roles y Permisos** | 1d | 2022-09-01 | 2022-09-01 |  |  |
| 60 |  | Pantalla Principal | 1d | 2022-09-01 | 2022-09-01 |  |  |
| 61 |  | Agregar | 1d | 2022-09-01 | 2022-09-01 |  |  |
| 62 |  | Editar | 1d | 2022-09-01 | 2022-09-01 |  |  |
| 63 |  | Eliminar | 1d | 2022-09-01 | 2022-09-01 |  |  |
| 64 |  | Configuración de Dashboard | 1d | 2022-09-01 | 2022-09-01 |  |  |
| 65 |  | Exportación de dashboard PDF | 1d | 2022-09-01 | 2022-09-01 |  |  |
| 66 |  | Exportación de dashboard Excel | 1d | 2022-09-01 | 2022-09-01 |  |  |
| 67 |  | Paginación Dashboard | 1d | 2022-09-01 | 2022-09-01 |  |  |
| 68 |  | Busqueda Dash board | 1d | 2022-09-01 | 2022-09-01 |  |  |
| 69 |  | Ventanas emergentes de validación | 1d | 2022-09-01 | 2022-09-01 |  |  |
| 70 | 1.3.2 | **Módulo CPH** | 53d | 2022-09-01 A | 2022-11-14 | 21% |  |

| ID | WBS | Task | Duration | Start | Finish | Complete |
| --- | --- | --- | --- | --- | --- | --- |
| 71 | 1.3.2.1 | **Base** | 1d | 2022-09-01 | 2022-09-01 |  |
| 72 |  | Perfil | 1d | 2022-09-01 | 2022-09-01 |  |
| 73 |  | Pop up Notificaciones | 1d | 2022-09-01 | 2022-09-01 |  |
| 74 |  | Contador de Notificaciones (Icono campanita) | 1d | 2022-09-01 | 2022-09-01 |  |
| 75 |  | Bandeja entrada de Notificaciones | 1d | 2022-09-01 | 2022-09-01 |  |
| 76 | 1.3.2.2 | **Administración de Municipios** | 1d | 2022-09-01 A | 2022-09-01 | 30% |
| 77 |  | Pantalla Principal | 1d | 2022-09-01 | 2022-09-01 |  |
| 78 |  | Agregar | 1d | 2022-09-01 A | 2022-09-01 A | 100% |
| 79 |  | Editar | 1d | 2022-09-01 A | 2022-09-01 A | 100% |
| 80 |  | Eliminar | 1d | 2022-09-01 A | 2022-09-01 A | 100% |
| 81 |  | Configuración de Dashboard | 1d | 2022-09-01 | 2022-09-01 |  |
| 82 |  | Exportación de dashboard PDF | 1d | 2022-09-01 | 2022-09-01 |  |
| 83 |  | Exportación de dashboard Excel | 1d | 2022-09-01 | 2022-09-01 |  |
| 84 |  | Paginación Dashboard | 1d | 2022-09-01 | 2022-09-01 |  |
| 85 |  | Busqueda Dash board | 1d | 2022-09-01 | 2022-09-01 |  |
| 86 |  | Ventanas emergentes de validación | 1d | 2022-09-01 | 2022-09-01 |  |
| 87 | 1.3.2.3 | **Administración de Fondos** | 1d | 2022-09-01 | 2022-09-01 |  |
| 88 |  | Pantalla Principal | 1d | 2022-09-01 | 2022-09-01 |  |
| 89 |  | Agregar | 1d | 2022-09-01 | 2022-09-01 |  |
| 90 |  | Editar | 1d | 2022-09-01 | 2022-09-01 |  |
| 91 |  | Eliminar | 1d | 2022-09-01 | 2022-09-01 |  |
| 92 |  | Configuración de Dashboard | 1d | 2022-09-01 | 2022-09-01 |  |
| 93 |  | Exportación de dashboard PDF | 1d | 2022-09-01 | 2022-09-01 |  |
| 94 |  | Exportación de dashboard Excel | 1d | 2022-09-01 | 2022-09-01 |  |
| 95 |  | Paginación Dashboard | 1d | 2022-09-01 | 2022-09-01 |  |
| 96 |  | Busqueda Dash board | 1d | 2022-09-01 | 2022-09-01 |  |
| 97 |  | Ventanas emergentes de validación | 1d | 2022-09-01 | 2022-09-01 |  |
| 98 | 1.3.2.4 | **Administración de Presupuesto** | 1d | 2022-09-01 | 2022-09-01 |  |
| 99 |  | Pantalla Principal | 1d | 2022-09-01 | 2022-09-01 |  |
| 100 |  | Agregar | 1d | 2022-09-01 | 2022-09-01 |  |
| 101 |  | Editar | 1d | 2022-09-01 | 2022-09-01 |  |
| 102 |  | Eliminar | 1d | 2022-09-01 | 2022-09-01 |  |
| 103 |  | Configuración de Dashboard | 1d | 2022-09-01 | 2022-09-01 |  |
| 104 |  | Exportación de dashboard PDF | 1d | 2022-09-01 | 2022-09-01 |  |
| 105 |  | Exportación de dashboard Excel | 1d | 2022-09-01 | 2022-09-01 |  |
| 106 |  | Paginación Dashboard | 1d | 2022-09-01 | 2022-09-01 |  |
| 107 |  | Busqueda Dash board | 1d | 2022-09-01 | 2022-09-01 |  |
| 108 |  | Ventanas emergentes de validación | 1d | 2022-09-01 | 2022-09-01 |  |
| 109 | 1.3.2.5 | **Administración de UMA** | 1d | 2022-09-01 A | 2022-09-01 | 30% |
| 110 |  | Pantalla Principal | 1d | 2022-09-01 | 2022-09-01 |  |
| 111 |  | Agregar | 1d | 2022-09-01 A | 2022-09-01 A | 100% |
| 112 |  | Editar | 1d | 2022-09-01 A | 2022-09-01 A | 100% |
| 113 |  | Eliminar | 1d | 2022-09-01 A | 2022-09-01 A | 100% |
| 114 |  | Configuración de Dashboard | 1d | 2022-09-01 | 2022-09-01 |  |
| 115 |  | Exportación de dashboard PDF | 1d | 2022-09-01 | 2022-09-01 |  |
| 116 |  | Exportación de dashboard Excel | 1d | 2022-09-01 | 2022-09-01 |  |
| 117 |  | Paginación Dashboard | 1d | 2022-09-01 | 2022-09-01 |  |
| 118 |  | Busqueda Dashboard | 1d | 2022-09-01 | 2022-09-01 |  |
| 119 |  | Ventanas emergentes de validación | 1d | 2022-09-01 | 2022-09-01 |  |
| 120 | 1.3.2.6 | **Administración de Inflación** | 1d | 2022-09-01 A | 2022-09-01 | 42% |
| 121 |  | Pantalla Principal | 1d | 2022-09-01 | 2022-09-01 |  |
| 122 |  | Plantilla Carga Masiva Inflación | 1d | 2022-09-01 A | 2022-09-01 A | 100% |
| 123 |  | Api Plantilla caga masiva Municipio - Inflación | 1d | 2022-09-01 A | 2022-09-01 A | 100% |
| 124 |  | Agregar | 1d | 2022-09-01 A | 2022-09-01 A | 100% |
| 125 |  | Editar | 1d | 2022-09-01 A | 2022-09-01 A | 100% |
| 126 |  | Eliminar | 1d | 2022-09-01 A | 2022-09-01 A | 100% |
| 127 |  | Configuración de Dashboard | 1d | 2022-09-01 | 2022-09-01 |  |
| 128 |  | Exportación de dashboard PDF | 1d | 2022-09-01 | 2022-09-01 |  |
| 129 |  | Exportación de dashboard Excel | 1d | 2022-09-01 | 2022-09-01 |  |
| 130 |  | Paginación Dashboard | 1d | 2022-09-01 | 2022-09-01 |  |
| 131 |  | Busqueda Dash board | 1d | 2022-09-01 | 2022-09-01 |  |
| 132 |  | Ventanas emergentes de validación | 1d | 2022-09-01 | 2022-09-01 |  |
| 133 | 1.3.2.7 | **Administración de Crecimiento** | 1d | 2022-09-01 A | 2022-09-01 | 42% |
| 134 |  | Pantalla Principal | 1d | 2022-09-01 | 2022-09-01 |  |
| 135 |  | Plantilla Carga Masiva Crecimiento | 1d | 2022-09-01 A | 2022-09-01 A | 100% |
| 136 |  | Api Plantilla caga masiva Municipio - Crecimiento | 1d | 2022-09-01 A | 2022-09-01 A | 100% |
| 137 |  | Agregar | 1d | 2022-09-01 A | 2022-09-01 A | 100% |
| 138 |  | Editar | 1d | 2022-09-01 A | 2022-09-01 A | 100% |
| 139 |  | Eliminar | 1d | 2022-09-01 A | 2022-09-01 A | 100% |
| 140 |  | Configuración de Dashboard | 1d | 2022-09-01 | 2022-09-01 |  |

| ID | WBS | Task | Duration | Start | Finish | Complete |
| --- | --- | --- | --- | --- | --- | --- |
| 141 |  | Exportación de dashboard PDF | 1d | 2022-09-01 | 2022-09-01 |  |
| 142 |  | Exportación de dashboard Excel | 1d | 2022-09-01 | 2022-09-01 |  |
| 143 |  | Paginación Dashboard | 1d | 2022-09-01 | 2022-09-01 |  |
| 144 |  | Busqueda Dash board | 1d | 2022-09-01 | 2022-09-01 |  |
| 145 |  | Ventanas emergentes de validación | 1d | 2022-09-01 | 2022-09-01 |  |
| 146 | 1.3.2.8 | **Administración de Facturación** | 1d | 2022-09-01 A | 2022-09-01 | 30% |
| 147 |  | Pantalla Principal | 1d | 2022-09-01 | 2022-09-01 |  |
| 148 |  | Agregar | 1d | 2022-09-01 A | 2022-09-01 A | 100% |
| 149 |  | Editar | 1d | 2022-09-01 A | 2022-09-01 A | 100% |
| 150 |  | Eliminar | 1d | 2022-09-01 A | 2022-09-01 A | 100% |
| 151 |  | Configuración de Dashboard | 1d | 2022-09-01 | 2022-09-01 |  |
| 152 |  | Exportación de dashboard PDF | 1d | 2022-09-01 | 2022-09-01 |  |
| 153 |  | Exportación de dashboard Excel | 1d | 2022-09-01 | 2022-09-01 |  |
| 154 |  | Paginación Dashboard | 1d | 2022-09-01 | 2022-09-01 |  |
| 155 |  | Busqueda Dash board | 1d | 2022-09-01 | 2022-09-01 |  |
| 156 |  | Ventanas emergentes de validación | 1d | 2022-09-01 | 2022-09-01 |  |
| 157 | 1.3.2.9 | **Administración de Recaudación** | 1d | 2022-09-01 A | 2022-09-01 | 42% |
| 158 |  | Pantalla Principal | 1d | 2022-09-01 | 2022-09-01 |  |
| 159 |  | Plantilla Carga Masiva Recaudación | 1d | 2022-09-01 A | 2022-09-01 A | 100% |
| 160 |  | Api Plantilla caga masiva Municipio - Recaudación | 1d | 2022-09-01 A | 2022-09-01 A | 100% |
| 161 |  | Agregar | 1d | 2022-09-01 A | 2022-09-01 A | 100% |
| 162 |  | Editar | 1d | 2022-09-01 A | 2022-09-01 A | 100% |
| 163 |  | Eliminar | 1d | 2022-09-01 A | 2022-09-01 A | 100% |
| 164 |  | Configuración de Dashboard | 1d | 2022-09-01 | 2022-09-01 |  |
| 165 |  | Exportación de dashboard PDF | 1d | 2022-09-01 | 2022-09-01 |  |
| 166 |  | Exportación de dashboard Excel | 1d | 2022-09-01 | 2022-09-01 |  |
| 167 |  | Paginación Dashboard | 1d | 2022-09-01 | 2022-09-01 |  |
| 168 |  | Busqueda Dash board | 1d | 2022-09-01 | 2022-09-01 |  |
| 169 |  | Ventanas emergentes de validación | 1d | 2022-09-01 | 2022-09-01 |  |
| 170 | 1.3.2.10 | **Administración de Población** | 1d | 2022-09-01 A | 2022-09-01 | 30% |
| 171 |  | Pantalla Principal | 1d | 2022-09-01 | 2022-09-01 |  |
| 172 |  | Agregar | 1d | 2022-09-01 A | 2022-09-01 A | 100% |
| 173 |  | Editar | 1d | 2022-09-01 A | 2022-09-01 A | 100% |
| 174 |  | Eliminar | 1d | 2022-09-01 A | 2022-09-01 A | 100% |
| 175 |  | Configuración de Dashboard | 1d | 2022-09-01 | 2022-09-01 |  |
| 176 |  | Exportación de dashboard PDF | 1d | 2022-09-01 | 2022-09-01 |  |
| 177 |  | Exportación de dashboard Excel | 1d | 2022-09-01 | 2022-09-01 |  |
| 178 |  | Paginación Dashboard | 1d | 2022-09-01 | 2022-09-01 |  |
| 179 |  | Busqueda Dash board | 1d | 2022-09-01 | 2022-09-01 |  |
| 180 |  | Ventanas emergentes de validación | 1d | 2022-09-01 | 2022-09-01 |  |
| 181 | 1.3.2.11 | **Administración de Territorio** | 1d | 2022-09-01 A | 2022-09-01 | 42% |
| 182 |  | Pantalla Principal | 1d | 2022-09-01 | 2022-09-01 |  |
| 183 |  | Plantilla Carga Masiva Territorio | 1d | 2022-09-01 A | 2022-09-01 A | 100% |
| 184 |  | Api Plantilla caga masiva Municipio - Territorio | 1d | 2022-09-01 A | 2022-09-01 A | 100% |
| 185 |  | Agregar | 1d | 2022-09-01 A | 2022-09-01 A | 100% |
| 186 |  | Editar | 1d | 2022-09-01 A | 2022-09-01 A | 100% |
| 187 |  | Eliminar | 1d | 2022-09-01 A | 2022-09-01 A | 100% |
| 188 |  | Configuración de Dashboard | 1d | 2022-09-01 | 2022-09-01 |  |
| 189 |  | Exportación de dashboard PDF | 1d | 2022-09-01 | 2022-09-01 |  |
| 190 |  | Exportación de dashboard Excel | 1d | 2022-09-01 | 2022-09-01 |  |
| 191 |  | Paginación Dashboard | 1d | 2022-09-01 | 2022-09-01 |  |
| 192 |  | Busqueda Dash board | 1d | 2022-09-01 | 2022-09-01 |  |
| 193 |  | Ventanas emergentes de validación | 1d | 2022-09-01 | 2022-09-01 |  |
| 194 | 1.3.2.12 | **Administración de pobreza** | 1d | 2022-09-01 A | 2022-09-01 | 42% |
| 195 |  | Pantalla Principal | 1d | 2022-09-01 | 2022-09-01 |  |
| 196 |  | Plantilla Carga Masiva Pobreza | 1d | 2022-09-01 A | 2022-09-01 A | 100% |
| 197 |  | Api Plantilla caga masiva Municipio - Pobreza | 1d | 2022-09-01 A | 2022-09-01 A | 100% |
| 198 |  | Agregar | 1d | 2022-09-01 A | 2022-09-01 A | 100% |
| 199 |  | Editar | 1d | 2022-09-01 A | 2022-09-01 A | 100% |
| 200 |  | Eliminar | 1d | 2022-09-01 A | 2022-09-01 A | 100% |
| 201 |  | Configuración de Dashboard | 1d | 2022-09-01 | 2022-09-01 |  |
| 202 |  | Exportación de dashboard PDF | 1d | 2022-09-01 | 2022-09-01 |  |
| 203 |  | Exportación de dashboard Excel | 1d | 2022-09-01 | 2022-09-01 |  |
| 204 |  | Paginación Dashboard | 1d | 2022-09-01 | 2022-09-01 |  |
| 205 |  | Busqueda Dash board | 1d | 2022-09-01 | 2022-09-01 |  |
| 206 |  | Ventanas emergentes de validación | 1d | 2022-09-01 | 2022-09-01 |  |
| 207 | 1.3.2.13 | **Administración de Pobreza Extrema** | 1d | 2022-09-01 A | 2022-09-01 A | 100% |
| 208 |  | Plantilla Carga Masiva Pobreza Extrema | 1d | 2022-09-01 A | 2022-09-01 A | 100% |
| 209 |  | Api Plantilla caga masiva Municipio - Pobreza Extrema | 1d | 2022-09-01 A | 2022-09-01 A | 100% |
| 210 | 1.3.2.14 | **Administración de Pobreza Moderada** | 1d | 2022-09-01 A | 2022-09-01 A | 100% |

| ID | WBS | Task | Duration | Start | Finish | Complete |
| --- | --- | --- | --- | --- | --- | --- |
| 211 |  | Plantilla Carga Masiva Pobreza Moderada | 1d | 2022-09-01 A | 2022-09-01 A | 100% |
| 212 |  | Api Plantilla caga masiva Municipio - Pobreza Moderada | 1d | 2022-09-01 A | 2022-09-01 A | 100% |
| 213 | 1.3.2.15 | **Administración de Proyección** | 1d | 2022-09-01 A | 2022-09-01 A | 100% |
| 214 |  | Agregar | 1d | 2022-09-01 A | 2022-09-01 A | 100% |
| 215 |  | Editar | 1d | 2022-09-01 A | 2022-09-01 A | 100% |
| 216 |  | Eliminar | 1d | 2022-09-01 A | 2022-09-01 A | 100% |
| 217 |  | Plantilla Carga Masiva Proyección | 1d | 2022-09-01 A | 2022-09-01 A | 100% |
| 218 |  | Api Plantilla caga masiva Municipio - Proyección | 1d | 2022-09-01 A | 2022-09-01 A | 100% |
| 219 | 1.3.2.16 | **Dashboard Articulo 14 Fracción I** | 1d | 2022-09-01 | 2022-09-01 |  |
| 220 |  | Pantalla Principal | 1d | 2022-09-01 | 2022-09-01 |  |
| 221 |  | Generar plantilla | 1d | 2022-09-01 | 2022-09-01 |  |
| 222 |  | Carga masiva - plantilla | 1d | 2022-09-01 | 2022-09-01 |  |
| 223 |  | Recálculo de coeficiente | 1d | 2022-09-01 | 2022-09-01 |  |
| 224 |  | Editar información | 1d | 2022-09-01 | 2022-09-01 |  |
| 225 |  | Dashboard predial | 1d | 2022-09-01 | 2022-09-01 |  |
| 226 |  | Dashboard población y territorio | 1d | 2022-09-01 | 2022-09-01 |  |
| 227 |  | Dashboard carencia social | 1d | 2022-09-01 | 2022-09-01 |  |
| 228 |  | Cálculo de coeficiente | 1d | 2022-09-01 | 2022-09-01 |  |
| 229 |  | Proceso Autorización | 1d | 2022-09-01 | 2022-09-01 |  |
| 230 |  | Ventanas emergentes de validación | 1d | 2022-09-01 | 2022-09-01 |  |
| 231 | 1.3.2.17 | **Dashboard Articulo 14 Fracción II** | 1d | 2022-09-01 | 2022-09-01 |  |
| 232 |  | Pantalla Principal | 1d | 2022-09-01 | 2022-09-01 |  |
| 233 |  | Dashboard población | 1d | 2022-09-01 | 2022-09-01 |  |
| 234 |  | generar plantilla | 1d | 2022-09-01 | 2022-09-01 |  |
| 235 |  | Carga masiva - plantilla | 1d | 2022-09-01 | 2022-09-01 |  |
| 236 |  | Recálculo de coeficiente | 1d | 2022-09-01 | 2022-09-01 |  |
| 237 |  | Editar información individual | 1d | 2022-09-01 | 2022-09-01 |  |
| 238 |  | Dashboard proyección población | 1d | 2022-09-01 | 2022-09-01 |  |
| 239 |  | Carga masiva - plantilla | 1d | 2022-09-01 | 2022-09-01 |  |
| 240 |  | Recálculo de coeficiente | 1d | 2022-09-01 | 2022-09-01 |  |
| 241 |  | Editar información individual | 1d | 2022-09-01 | 2022-09-01 |  |
| 242 |  | Cálculo de coeficiente | 1d | 2022-09-01 | 2022-09-01 |  |
| 243 |  | Proceso Autorización | 1d | 2022-09-01 | 2022-09-01 |  |
| 244 |  | Ventanas emergentes de validación | 1d | 2022-09-01 | 2022-09-01 |  |
| 245 | 1.3.2.18 | **Dashboard Articulo 14 Fracción III** | 1d | 2022-09-01 A | 2022-09-01 | 6% |
| 246 |  | Pantalla Principal | 1d | 2022-09-01 | 2022-09-01 |  |
| 247 |  | Dashboard eficiencia recaudatoria | 1d | 2022-09-01 | 2022-09-01 |  |
| 248 |  | generar plantilla | 1d | 2022-09-01 | 2022-09-01 |  |
| 249 |  | Carga masiva - plantilla | 1d | 2022-09-01 | 2022-09-01 |  |
| 250 |  | Recálculo de coeficiente | 1d | 2022-09-01 | 2022-09-01 |  |
| 251 |  | Editar información individual | 1d | 2022-09-01 | 2022-09-01 |  |
| 252 |  | Dashboard crecimiento recaudación | 1d | 2022-09-01 | 2022-09-01 |  |
| 253 |  | Carga masiva - plantilla | 1d | 2022-09-01 | 2022-09-01 |  |
| 254 |  | Recálculo de coeficiente | 1d | 2022-09-01 | 2022-09-01 |  |
| 255 |  | Editar información individual | 1d | 2022-09-01 | 2022-09-01 |  |
| 256 |  | Cálculo de coeficiente | 1d | 2022-09-01 | 2022-09-01 |  |
| 257 |  | Proceso Autorización | 1d | 2022-09-01 | 2022-09-01 |  |
| 258 |  | Ventanas emergentes de validación | 1d | 2022-09-01 | 2022-09-01 |  |
| 259 |  | Participaciones Federales | 1d | 2022-09-01 | 2022-09-01 |  |
| 260 |  | Dashboard Participaciones Federales | 1d | 2022-09-01 | 2022-09-01 |  |
| 261 |  | Proceso Envío general Participaciones Federales | 1d | 2022-09-01 | 2022-09-01 |  |
| 262 |  | Track general Participaciones Federales | 1d | 2022-09-01 A | 2022-09-01 A | 100% |
| 263 | 1.3.2.19 | **Dashboard FG** | 1d | 2022-09-01 | 2022-09-01 |  |
| 264 |  | Configuración inicial Fondo General (FG) | 1d | 2022-09-01 | 2022-09-01 |  |
| 265 |  | Carga inicial | 1d | 2022-09-01 | 2022-09-01 |  |
| 266 |  | Pantalla Principal | 1d | 2022-09-01 | 2022-09-01 |  |
| 267 |  | Proceso cálculo | 1d | 2022-09-01 | 2022-09-01 |  |
| 268 |  | Proceso autorización | 1d | 2022-09-01 | 2022-09-01 |  |
| 269 |  | Proceso envío | 1d | 2022-09-01 | 2022-09-01 |  |
| 270 |  | Avance programático Fondo General | 1d | 2022-09-01 | 2022-09-01 |  |
| 271 |  | Proceso Cancelación Fondo General | 1d | 2022-09-01 | 2022-09-01 |  |
| 272 |  | Ventanas emergentes de validación | 1d | 2022-09-01 | 2022-09-01 |  |
| 273 | 1.3.2.20 | **Dashboard FFM 70** | 1d | 2022-09-01 A | 2022-09-01 | 11% |
| 274 |  | Configuración inicial Fondo Fomento Municipal 70 % (FFM 70% ) | 1d | 2022-09-01 | 2022-09-01 |  |
| 275 |  | Carga inicial | 1d | 2022-09-01 | 2022-09-01 |  |
| 276 |  | Pantalla Principal | 1d | 2022-09-01 | 2022-09-01 |  |
| 277 |  | Proceso cálculo | 1d | 2022-09-01 | 2022-09-01 |  |
| 278 |  | Proceso autorización | 1d | 2022-09-01 | 2022-09-01 |  |
| 279 |  | Proceso envío | 1d | 2022-09-01 | 2022-09-01 |  |
| 280 |  | Track | 1d | 2022-09-01 A | 2022-09-01 A | 100% |

| ID | WBS | Task | Duration | Start | Finish | Complete |
| --- | --- | --- | --- | --- | --- | --- |
| 281 |  | Ventanas emergentes de validación | 1d | 2022-09-01 | 2022-09-01 |  |
| 282 |  | Configuración inicial Fondo Fomento Municipal 30 % (FFM 30% ) | 1d | 2022-09-01 | 2022-09-01 |  |
| 283 | 1.3.2.21 | **Dashboard FFM 30** | 1d | 2022-09-01 A | 2022-09-01 | 13% |
| 284 |  | Pantalla Principal | 1d | 2022-09-01 | 2022-09-01 |  |
| 285 |  | Carga Inicial | 1d | 2022-09-01 | 2022-09-01 |  |
| 286 |  | Proceso cálculo | 1d | 2022-09-01 | 2022-09-01 |  |
| 287 |  | Proceso autorización | 1d | 2022-09-01 | 2022-09-01 |  |
| 288 |  | Proceso envío | 1d | 2022-09-01 | 2022-09-01 |  |
| 289 |  | Track | 1d | 2022-09-01 A | 2022-09-01 A | 100% |
| 290 |  | Ventanas emergentes de validación | 1d | 2022-09-01 | 2022-09-01 |  |
| 291 |  | Configuración inicial Impuesto Especial sobre Producción y Servicios (IEPS) | 1d | 2022-09-01 | 2022-09-01 |  |
| 292 | 1.3.2.22 | **Dashboard IEPS** | 1d | 2022-09-01 A | 2022-09-01 | 13% |
| 293 |  | Carga inicial | 1d | 2022-09-01 | 2022-09-01 |  |
| 294 |  | Pantalla Principal | 1d | 2022-09-01 | 2022-09-01 |  |
| 295 |  | Proceso cálculo | 1d | 2022-09-01 | 2022-09-01 |  |
| 296 |  | Proceso autorización | 1d | 2022-09-01 | 2022-09-01 |  |
| 297 |  | Proceso envío | 1d | 2022-09-01 | 2022-09-01 |  |
| 298 |  | Track | 1d | 2022-09-01 A | 2022-09-01 A | 100% |
| 299 |  | Ventanas emergentes de validación | 1d | 2022-09-01 | 2022-09-01 |  |
| 300 |  | Configuración inicial Impuesto sobre la Venta Final de Gasolinas y Diesel (IEPS GyD) | 1d | 2022-09-01 | 2022-09-01 |  |
| 301 | 1.3.2.23 | **Dashboard IEPS GyD** | 1d | 2022-09-01 A | 2022-09-01 | 14% |
| 302 |  | Carga inicial | 1d | 2022-09-01 | 2022-09-01 |  |
| 303 |  | Pantalla Principal | 1d | 2022-09-01 | 2022-09-01 |  |
| 304 |  | Proceso cálculo | 1d | 2022-09-01 | 2022-09-01 |  |
| 305 |  | Proceso autorización | 1d | 2022-09-01 | 2022-09-01 |  |
| 306 |  | Proceso envío | 1d | 2022-09-01 | 2022-09-01 |  |
| 307 |  | Track | 1d | 2022-09-01 A | 2022-09-01 A | 100% |
| 308 |  | Ventanas emergentes de validación | 1d | 2022-09-01 | 2022-09-01 |  |
| 309 | 1.3.2.24 | **Dashboard ISR Bienes Inmuebles** | 1d | 2022-09-01 A | 2022-09-01 | 13% |
| 310 |  | Pantalla Principal | 1d | 2022-09-01 | 2022-09-01 |  |
| 311 |  | Carga inicial | 1d | 2022-09-01 | 2022-09-01 |  |
| 312 |  | Configuración inicial ISR Bienes Inmuebles | 1d | 2022-09-01 | 2022-09-01 |  |
| 313 |  | Proceso cálculo | 1d | 2022-09-01 | 2022-09-01 |  |
| 314 |  | Proceso autorización | 1d | 2022-09-01 | 2022-09-01 |  |
| 315 |  | Proceso envío | 1d | 2022-09-01 | 2022-09-01 |  |
| 316 |  | Track | 1d | 2022-09-01 A | 2022-09-01 A | 100% |
| 317 |  | Ventanas emergentes de validación | 1d | 2022-09-01 | 2022-09-01 |  |
| 318 | 1.3.2.25 | **Dashboard FOFIR** | 1d | 2022-09-01 A | 2022-09-01 | 13% |
| 319 |  | Pantalla Principal | 1d | 2022-09-01 | 2022-09-01 |  |
| 320 |  | Carga inicial | 1d | 2022-09-01 | 2022-09-01 |  |
| 321 |  | Configuración inicial Fondo de Fiscalización y Recaudación (FOFIR) | 1d | 2022-09-01 | 2022-09-01 |  |
| 322 |  | Proceso cálculo | 1d | 2022-09-01 | 2022-09-01 |  |
| 323 |  | Proceso autorización | 1d | 2022-09-01 | 2022-09-01 |  |
| 324 |  | Proceso envío | 1d | 2022-09-01 | 2022-09-01 |  |
| 325 |  | Track | 1d | 2022-09-01 A | 2022-09-01 A | 100% |
| 326 |  | Ventanas emergentes de validación | 1d | 2022-09-01 | 2022-09-01 |  |
| 327 | 1.3.2.26 | **Dashboard ISAN** | 1d | 2022-09-01 A | 2022-09-01 | 30% |
| 328 |  | Pantalla Principal | 1d | 2022-09-01 | 2022-09-01 |  |
| 329 |  | Plantilla Carga Masiva ISAN | 1d | 2022-09-01 A | 2022-09-01 A | 100% |
| 330 |  | Api Plantilla caga masiva Municipio - ISAN | 1d | 2022-09-01 A | 2022-09-01 A | 100% |
| 331 |  | Carga inicial | 1d | 2022-09-01 | 2022-09-01 |  |
| 332 |  | Configuración inicial Impuesto sobre Automóviles Nuevos (ISAN) | 1d | 2022-09-01 | 2022-09-01 |  |
| 333 |  | Proceso cálculo | 1d | 2022-09-01 | 2022-09-01 |  |
| 334 |  | Proceso autorización | 1d | 2022-09-01 | 2022-09-01 |  |
| 335 |  | Proceso envío | 1d | 2022-09-01 | 2022-09-01 |  |
| 336 |  | Track | 1d | 2022-09-01 A | 2022-09-01 A | 100% |
| 337 |  | Ventanas emergentes de validación | 1d | 2022-09-01 | 2022-09-01 |  |
| 338 | 1.3.2.27 | **Dashboard Comp. ISAN** | 1d | 2022-09-01 A | 2022-09-01 | 13% |
| 339 |  | Pantalla Principal | 1d | 2022-09-01 | 2022-09-01 |  |
| 340 |  | Carga inicial | 1d | 2022-09-01 | 2022-09-01 |  |
| 341 |  | Configuración inicial Compensación ISAN | 1d | 2022-09-01 | 2022-09-01 |  |
| 342 |  | Proceso cálculo | 1d | 2022-09-01 | 2022-09-01 |  |
| 343 |  | Proceso autorización | 1d | 2022-09-01 | 2022-09-01 |  |
| 344 |  | Proceso envío | 1d | 2022-09-01 | 2022-09-01 |  |
| 345 |  | Track | 1d | 2022-09-01 A | 2022-09-01 A | 100% |
| 346 |  | Ventanas emergentes de validación | 1d | 2022-09-01 | 2022-09-01 |  |
| 347 | 1.3.2.28 | **Dashboard ISN** | 1d | 2022-09-01 A | 2022-09-01 | 14% |
| 348 |  | Pantalla Principal | 1d | 2022-09-01 | 2022-09-01 |  |
| 349 |  | Carga configuración inicial fondo ISN | 1d | 2022-09-01 | 2022-09-01 |  |
| 350 |  | Proceso de cálculo | 1d | 2022-09-01 | 2022-09-01 |  |

| ID | WBS | Task | Duration | Start | Finish | Complete |
| --- | --- | --- | --- | --- | --- | --- |
| 351 |  | Proceso de Autorización | 1d | 2022-09-01 | 2022-09-01 |  |
| 352 |  | Proceso de Envío | 1d | 2022-09-01 | 2022-09-01 |  |
| 353 |  | Track | 1d | 2022-09-01 A | 2022-09-01 A | 100% |
| 354 |  | Ventanas emergentes de validación | 1d | 2022-09-01 | 2022-09-01 |  |
| 355 | 1.3.2.29 | **Dashboard ICV** | 1d | 2022-09-01 A | 2022-09-01 | 13% |
| 356 |  | Pantalla Principal | 1d | 2022-09-01 | 2022-09-01 |  |
| 357 |  | Carga Configuración inicial ICV | 1d | 2022-09-01 | 2022-09-01 |  |
| 358 |  | Carga masiva de ICV - (Plantilla) | 1d | 2022-09-01 | 2022-09-01 |  |
| 359 |  | Proceso de cálculo | 1d | 2022-09-01 | 2022-09-01 |  |
| 360 |  | Proceso de Autorización | 1d | 2022-09-01 | 2022-09-01 |  |
| 361 |  | Proceso de Envío | 1d | 2022-09-01 | 2022-09-01 |  |
| 362 |  | Track | 1d | 2022-09-01 A | 2022-09-01 A | 100% |
| 363 |  | Ventanas emergentes de validación | 1d | 2022-09-01 | 2022-09-01 |  |
| 364 | 1.3.2.30 | **Dashboard Fondo Ultracrecmiento** | 1d | 2022-09-01 A | 2022-09-01 | 11% |
| 365 |  | Pantalla Principal | 1d | 2022-09-01 | 2022-09-01 |  |
| 366 |  | Carga configuración inicial Fondo Ultracrecimiento | 1d | 2022-09-01 | 2022-09-01 |  |
| 367 |  | Proceso de Autorización | 1d | 2022-09-01 | 2022-09-01 |  |
| 368 |  | Proceso de Envío | 1d | 2022-09-01 | 2022-09-01 |  |
| 369 |  | Track | 1d | 2022-09-01 A | 2022-09-01 A | 100% |
| 370 |  | Ventanas emergentes de validación | 1d | 2022-09-01 | 2022-09-01 |  |
| 371 |  | Generación de reporte | 1d | 2022-09-01 | 2022-09-01 |  |
| 372 |  | <Tarea nueva> | 1d? | 2022-09-01 | 2022-09-01 |  |
| 373 |  | Pantalla Principal | 1d | 2022-09-01 | 2022-09-01 |  |
| 374 | 1.3.2.31 | **Dashboard Fondos Descentralizado** | 1d | 2022-09-01 A | 2022-09-01 | 20% |
| 375 |  | Proceso de cálculo | 1d | 2022-09-01 | 2022-09-01 |  |
| 376 |  | Proceso de Autorización | 1d | 2022-09-01 | 2022-09-01 |  |
| 377 |  | Proceso de Envío | 1d | 2022-09-01 | 2022-09-01 |  |
| 378 |  | Track | 1d | 2022-09-01 A | 2022-09-01 A | 100% |
| 379 |  | Ventanas emergentes de validación | 1d | 2022-09-01 | 2022-09-01 |  |
| 380 | 1.3.2.32 | **Dashboard Fondos Seguridad** | 1d | 2022-09-01 A | 2022-09-01 | 13% |
| 381 |  | Pantalla Principal | 1d | 2022-09-01 | 2022-09-01 |  |
| 382 |  | Carga configuración inicial Fondo Seguridad | 1d | 2022-09-01 | 2022-09-01 |  |
| 383 |  | Proceso de cálculo | 1d | 2022-09-01 | 2022-09-01 |  |
| 384 |  | Proceso de Autorización | 1d | 2022-09-01 | 2022-09-01 |  |
| 385 |  | Proceso de Envío | 1d | 2022-09-01 | 2022-09-01 |  |
| 386 |  | Track | 1d | 2022-09-01 A | 2022-09-01 A | 100% |
| 387 |  | Ventanas emergentes de validación | 1d | 2022-09-01 | 2022-09-01 |  |
| 388 |  | Generación de reporte | 1d | 2022-09-01 | 2022-09-01 |  |
| 389 | 1.3.2.33 | **Dashboard Fondos de Desarrollo Municipal** | 1d | 2022-09-01 A | 2022-09-01 | 13% |
| 390 |  | Pantalla Principal | 1d | 2022-09-01 | 2022-09-01 |  |
| 391 |  | Carga configuración inicial Fondo Desarrollo Municipal | 1d | 2022-09-01 | 2022-09-01 |  |
| 392 |  | Proceso de cálculo | 1d | 2022-09-01 | 2022-09-01 |  |
| 393 |  | Proceso de Autorización | 1d | 2022-09-01 | 2022-09-01 |  |
| 394 |  | Proceso de Envío | 1d | 2022-09-01 | 2022-09-01 |  |
| 395 |  | Track | 1d | 2022-09-01 A | 2022-09-01 A | 100% |
| 396 |  | Ventanas emergentes de validación | 1d | 2022-09-01 | 2022-09-01 |  |
| 397 |  | Generación de reporte | 1d | 2022-09-01 | 2022-09-01 |  |
| 398 | 1.3.2.34 | **Dashboard Fondos FORTAMUN** | 1d | 2022-09-01 A | 2022-09-01 | 13% |
| 399 |  | Pantalla Principal | 1d | 2022-09-01 | 2022-09-01 |  |
| 400 |  | Carga configuración inicial Fondo FORTAMUN | 1d | 2022-09-01 | 2022-09-01 |  |
| 401 |  | Proceso de cálculo | 1d | 2022-09-01 | 2022-09-01 |  |
| 402 |  | Proceso de Autorización | 1d | 2022-09-01 | 2022-09-01 |  |
| 403 |  | Proceso de Envío | 1d | 2022-09-01 | 2022-09-01 |  |
| 404 |  | Track | 1d | 2022-09-01 A | 2022-09-01 A | 100% |
| 405 |  | Ventanas emergentes de validación | 1d | 2022-09-01 | 2022-09-01 |  |
| 406 |  | Generación de reporte | 1d | 2022-09-01 | 2022-09-01 |  |
| 407 | 1.3.2.35 | **Dashboard Fondos FISM** | 1d | 2022-09-01 A | 2022-09-01 | 10% |
| 408 |  | Pantalla Principal | 1d | 2022-09-01 | 2022-09-01 |  |
| 409 |  | Carga configuración inicial Fondo FISM | 1d | 2022-09-01 | 2022-09-01 |  |
| 410 |  | Proceso de cálculo | 1d | 2022-09-01 | 2022-09-01 |  |
| 411 |  | Proceso de Autorización | 1d | 2022-09-01 | 2022-09-01 |  |
| 412 |  | Proceso de Envío | 1d | 2022-09-01 | 2022-09-01 |  |
| 413 |  | Track | 1d | 2022-09-01 A | 2022-09-01 A | 100% |
| 414 |  | Ventanas emergentes de validación | 1d | 2022-09-01 | 2022-09-01 |  |
| 415 |  | Generación de reporte | 1d | 2022-09-01 | 2022-09-01 |  |
| 416 |  | Generador de estadísticas | 1d | 2022-09-01 | 2022-09-01 |  |
| 417 |  | Generador de reportes | 1d | 2022-09-01 | 2022-09-01 |  |
| 418 | 1.3.3 | **Módulo DAMOP** | 52.75d | 2022-09-01 A | 2022-11-14 | 13% |
| 419 | 1.3.3.1 | **Base** | 1d | 2022-09-01 | 2022-09-01 |  |
| 420 |  | Pantalla Principal | 1d | 2022-09-01 | 2022-09-01 |  |

| ID | WBS | Task | Duration | Start | Finish | Complete |
| --- | --- | --- | --- | --- | --- | --- |
| 421 |  | Pop up Notificaciones | 1d | 2022-09-01 | 2022-09-01 |  |
| 422 |  | Contador de Notificaciones (Icono campanita) | 1d | 2022-09-01 | 2022-09-01 |  |
| 423 |  | Bandeja entrada de Notificaciones | 1d | 2022-09-01 | 2022-09-01 |  |
| 424 | 1.3.3.2 | **Administración de Municipios** | 1d | 2022-09-01 A | 2022-09-01 | 15% |
| 425 |  | Pantalla principal | 1d | 2022-09-01 | 2022-09-01 |  |
| 426 |  | Insertar | 1d | 2022-09-01 A | 2022-09-01 A | 100% |
| 427 |  | Contactar Municipio | 1d | 2022-09-01 | 2022-09-01 |  |
| 428 |  | Ver Detalles | 1d | 2022-09-01 | 2022-09-01 |  |
| 429 |  | Configuración de Dashboard | 1d | 2022-09-01 | 2022-09-01 |  |
| 430 |  | Exportación de dashboard PDF | 1d | 2022-09-01 | 2022-09-01 |  |
| 431 |  | Exportación de dashboard Excel | 1d | 2022-09-01 | 2022-09-01 |  |
| 432 |  | Paginación Dashboard | 1d | 2022-09-01 | 2022-09-01 |  |
| 433 |  | Busqueda Dash board | 1d | 2022-09-01 | 2022-09-01 |  |
| 434 |  | Ventanas emergentes de validación | 1d | 2022-09-01 | 2022-09-01 |  |
| 435 |  | Modificar | 1d | 2022-09-01 A | 2022-09-01 A | 100% |
| 436 |  | Subida de Archivos | 1d | 2022-09-01 | 2022-09-01 |  |
| 437 |  | Descarga de PDF | 1d | 2022-09-01 | 2022-09-01 |  |
| 438 | 1.3.3.3 | **Administración de Avisos** | 1d | 2022-09-01 A | 2022-09-01 | 30% |
| 439 |  | Pantalla principal | 1d | 2022-09-01 | 2022-09-01 |  |
| 440 |  | Agregar | 1d | 2022-09-01 A | 2022-09-01 A | 100% |
| 441 |  | Eliminar | 1d | 2022-09-01 A | 2022-09-01 A | 100% |
| 442 |  | Editar | 1d | 2022-09-01 A | 2022-09-01 A | 100% |
| 443 |  | Configuración de Dashboard | 1d | 2022-09-01 | 2022-09-01 |  |
| 444 |  | Exportación de dashboard PDF | 1d | 2022-09-01 | 2022-09-01 |  |
| 445 |  | Exportación de dashboard Excel | 1d | 2022-09-01 | 2022-09-01 |  |
| 446 |  | Paginación Dashboard | 1d | 2022-09-01 | 2022-09-01 |  |
| 447 |  | Busqueda Dash board | 1d | 2022-09-01 | 2022-09-01 |  |
| 448 |  | Ventanas emergentes de validación | 1d | 2022-09-01 | 2022-09-01 |  |
| 449 | 1.3.3.4 | **Administración de Eventos** | 1d | 2022-09-01 A | 2022-09-01 | 30% |
| 450 |  | Pantalla principal | 1d | 2022-09-01 | 2022-09-01 |  |
| 451 |  | Agregar | 1d | 2022-09-01 A | 2022-09-01 A | 100% |
| 452 |  | Eliminar | 1d | 2022-09-01 A | 2022-09-01 A | 100% |
| 453 |  | Editar | 1d | 2022-09-01 A | 2022-09-01 A | 100% |
| 454 |  | Configuración de Dashboard | 1d | 2022-09-01 | 2022-09-01 |  |
| 455 |  | Exportación de dashboard PDF | 1d | 2022-09-01 | 2022-09-01 |  |
| 456 |  | Exportación de dashboard Excel | 1d | 2022-09-01 | 2022-09-01 |  |
| 457 |  | Paginación Dashboard | 1d | 2022-09-01 | 2022-09-01 |  |
| 458 |  | Busqueda Dash board | 1d | 2022-09-01 | 2022-09-01 |  |
| 459 |  | Ventanas emergentes de validación | 1d | 2022-09-01 | 2022-09-01 |  |
| 460 | 1.3.3.5 | **Administración de Conceptos** | 1d | 2022-09-01 | 2022-09-01 |  |
| 461 |  | Pantalla principal | 1d | 2022-09-01 | 2022-09-01 |  |
| 462 |  | Agregar | 1d | 2022-09-01 | 2022-09-01 |  |
| 463 |  | Eliminar | 1d | 2022-09-01 | 2022-09-01 |  |
| 464 |  | Editar | 1d | 2022-09-01 | 2022-09-01 |  |
| 465 | 1.3.3.6 | **Administración tasa interés BANXICO** | 1d | 2022-09-01 A | 2022-09-01 | 50% |
| 466 |  | Pantalla principal | 1d | 2022-09-01 A | 2022-09-01 A | 100% |
| 467 |  | Insertar | 1d | 2022-09-01 A | 2022-09-01 |  |
| 468 |  | Modificar | 1d | 2022-09-01 A | 2022-09-01 |  |
| 469 |  | Eliminar | 1d | 2022-09-01 A | 2022-09-01 |  |
| 470 |  | Visualizar | 1d | 2022-09-01 A | 2022-09-01 A | 100% |
| 471 |  | Job de Ejecucion automatica | 1d | 2022-09-01 A | 2022-09-01 A | 100% |
| 472 | 1.3.3.7 | **Anticipo Participaciones** | 1d | 2022-09-01 A | 2022-09-01 | 7% |
| 473 |  | Pantalla principal | 1d | 2022-09-01 | 2022-09-01 |  |
| 474 |  | Agregar | 1d | 2022-09-01 | 2022-09-01 |  |
| 475 |  | Eliminar | 1d | 2022-09-01 | 2022-09-01 |  |
| 476 |  | Editar | 1d | 2022-09-01 | 2022-09-01 |  |
| 477 |  | Configuración de Dashboard | 1d | 2022-09-01 | 2022-09-01 |  |
| 478 |  | Exportación de dashboard PDF | 1d | 2022-09-01 | 2022-09-01 |  |
| 479 |  | Exportación de dashboard Excel | 1d | 2022-09-01 | 2022-09-01 |  |
| 480 |  | Paginación Dashboard | 1d | 2022-09-01 | 2022-09-01 |  |
| 481 |  | Busqueda Dash board | 1d | 2022-09-01 | 2022-09-01 |  |
| 482 |  | Ventanas emergentes de validación | 1d | 2022-09-01 | 2022-09-01 |  |
| 483 |  | Carga masiva | 1d | 2022-09-01 | 2022-09-01 |  |
| 484 |  | Copiar información del mes anterior | 1d | 2022-09-01 | 2022-09-01 |  |
| 485 |  | Proceso de Ajuste | 1d | 2022-09-01 | 2022-09-01 |  |
| 486 |  | Proceso de Enviar | 1d | 2022-09-01 | 2022-09-01 |  |
| 487 |  | Track | 1d | 2022-09-01 A | 2022-09-01 A | 100% |
| 488 | 1.3.3.8 | **Solicitud de Recursos** | 1d | 2022-09-01 A | 2022-09-01 | 9% |
| 489 |  | Configuración de Dashboard | 1d | 2022-09-01 | 2022-09-01 |  |
| 490 |  | Exportación de dashboard PDF | 1d | 2022-09-01 | 2022-09-01 |  |

| ID | WBS | Task | Duration | Start | Finish | Complete |
| --- | --- | --- | --- | --- | --- | --- |
| 491 |  | Exportación de dashboard Excel | 1d | 2022-09-01 | 2022-09-01 |  |
| 492 |  | Paginación Dashboard | 1d | 2022-09-01 | 2022-09-01 |  |
| 493 |  | Busqueda Dash board | 1d | 2022-09-01 | 2022-09-01 |  |
| 494 |  | Ventanas emergentes de validación | 1d | 2022-09-01 | 2022-09-01 |  |
| 495 |  | Carga de documento | 1d | 2022-09-01 | 2022-09-01 |  |
| 496 |  | Copiar información del mes anterior | 1d | 2022-09-01 | 2022-09-01 |  |
| 497 |  | Dashboard de Solicitud de Recursos sección Solicitudes Pendientes | 1d | 2022-09-01 | 2022-09-01 |  |
| 498 |  | Dashboard de Solicitud de Recursos sección Solicitudes en trámite | 1d | 2022-09-01 | 2022-09-01 |  |
| 499 |  | Track | 1d | 2022-09-01 A | 2022-09-01 A | 100% |
| 500 | 1.3.3.9 | **Dashboard Participaciones Federales** | 1d | 2022-09-01 A | 2022-09-01 | 11% |
| 501 |  | Pantalla principal | 1d | 2022-09-01 | 2022-09-01 |  |
| 502 |  | Busqueda de Mes | 1d | 2022-09-01 | 2022-09-01 |  |
| 503 |  | Busqueda de Año | 1d | 2022-09-01 | 2022-09-01 |  |
| 504 |  | Busqueda general | 1d | 2022-09-01 | 2022-09-01 |  |
| 505 |  | Editar | 1d | 2022-09-01 | 2022-09-01 |  |
| 506 |  | Proceso de Autorizar | 1d | 2022-09-01 | 2022-09-01 |  |
| 507 |  | Proceso de Enviar | 1d | 2022-09-01 | 2022-09-01 |  |
| 508 |  | Track | 1d | 2022-09-01 A | 2022-09-01 A | 100% |
| 509 |  | Ventanas emergentes de validación | 1d | 2022-09-01 | 2022-09-01 |  |
| 510 | 1.3.3.10 | **Dashboard ISN** | 1d | 2022-09-01 A | 2022-09-01 | 13% |
| 511 |  | Pantalla principal | 1d | 2022-09-01 | 2022-09-01 |  |
| 512 |  | Busqueda de Mes | 1d | 2022-09-01 | 2022-09-01 |  |
| 513 |  | Busqueda de Año | 1d | 2022-09-01 | 2022-09-01 |  |
| 514 |  | Busqueda | 1d | 2022-09-01 | 2022-09-01 |  |
| 515 |  | Proceso de Autorización | 1d | 2022-09-01 | 2022-09-01 |  |
| 516 |  | Proceso de Envío | 1d | 2022-09-01 | 2022-09-01 |  |
| 517 |  | Track | 1d | 2022-09-01 A | 2022-09-01 A | 100% |
| 518 |  | Ventanas emergentes de validación | 1d | 2022-09-01 | 2022-09-01 |  |
| 519 | 1.3.3.11 | **Dashboard ICV** | 1d | 2022-09-01 A | 2022-09-01 | 13% |
| 520 |  | Pantalla principal | 1d | 2022-09-01 | 2022-09-01 |  |
| 521 |  | Busqueda de Mes | 1d | 2022-09-01 | 2022-09-01 |  |
| 522 |  | Busqueda de Año | 1d | 2022-09-01 | 2022-09-01 |  |
| 523 |  | Busqueda | 1d | 2022-09-01 | 2022-09-01 |  |
| 524 |  | Proceso de Autorización | 1d | 2022-09-01 | 2022-09-01 |  |
| 525 |  | Proceso de Envío | 1d | 2022-09-01 | 2022-09-01 |  |
| 526 |  | Track | 1d | 2022-09-01 A | 2022-09-01 A | 100% |
| 527 |  | Ventanas emergentes de validación | 1d | 2022-09-01 | 2022-09-01 |  |
| 528 | 1.3.3.12 | **Dashboard Fondos FORTAMUN** | 1d | 2022-09-01 A | 2022-09-01 | 13% |
| 529 |  | Pantalla principal | 1d | 2022-09-01 | 2022-09-01 |  |
| 530 |  | Busqueda de Mes | 1d | 2022-09-01 | 2022-09-01 |  |
| 531 |  | Busqueda de Año | 1d | 2022-09-01 | 2022-09-01 |  |
| 532 |  | Busqueda | 1d | 2022-09-01 | 2022-09-01 |  |
| 533 |  | Proceso de Autorización | 1d | 2022-09-01 | 2022-09-01 |  |
| 534 |  | Proceso de Envío | 1d | 2022-09-01 | 2022-09-01 |  |
| 535 |  | Track | 1d | 2022-09-01 A | 2022-09-01 A | 100% |
| 536 |  | Ventanas emergentes de validación | 1d | 2022-09-01 | 2022-09-01 |  |
| 537 | 1.3.3.13 | **Dashboard Fondos FISM** | 1d | 2022-09-01 A | 2022-09-01 | 13% |
| 538 |  | Pantalla principal | 1d | 2022-09-01 | 2022-09-01 |  |
| 539 |  | Busqueda de Mes | 1d | 2022-09-01 | 2022-09-01 |  |
| 540 |  | Busqueda de Año | 1d | 2022-09-01 | 2022-09-01 |  |
| 541 |  | Busqueda | 1d | 2022-09-01 | 2022-09-01 |  |
| 542 |  | Proceso de Autorización | 1d | 2022-09-01 | 2022-09-01 |  |
| 543 |  | Proceso de Envío | 1d | 2022-09-01 | 2022-09-01 |  |
| 544 |  | Track | 1d | 2022-09-01 A | 2022-09-01 A | 100% |
| 545 |  | Ventanas emergentes de validación | 1d | 2022-09-01 | 2022-09-01 |  |
| 546 | 1.3.3.14 | **Administración de Fondo ultra crecimiento Zona metropolitana y no Metropolitana** | 1d | 2022-09-01 A | 2022-09-01 | 6% |
| 547 |  | Pantalla principal | 1d | 2022-09-01 | 2022-09-01 |  |
| 548 |  | Filtro mes | 1d | 2022-09-01 | 2022-09-01 |  |
| 549 |  | Filtro año | 1d | 2022-09-01 | 2022-09-01 |  |
| 550 |  | Filtro busqueda | 1d | 2022-09-01 | 2022-09-01 |  |
| 551 |  | Configuración de Dashboard | 1d | 2022-09-01 | 2022-09-01 |  |
| 552 |  | Exportación de dashboard PDF | 1d | 2022-09-01 | 2022-09-01 |  |
| 553 |  | Exportación de dashboard Excel | 1d | 2022-09-01 | 2022-09-01 |  |
| 554 |  | Paginación Dashboard | 1d | 2022-09-01 | 2022-09-01 |  |
| 555 |  | Busqueda Dash board | 1d | 2022-09-01 | 2022-09-01 |  |
| 556 |  | Ventanas emergentes de Autorizar por municipio | 1d | 2022-09-01 | 2022-09-01 |  |
| 557 |  | Ventanas emergentes de Track por municipio | 1d | 2022-09-01 A | 2022-09-01 A | 100% |
| 558 |  | Ventanas emergentes de detalles por municipio | 1d | 2022-09-01 | 2022-09-01 |  |
| 559 |  | Ventanas emergentes de Adjuntar oficio por municipio | 1d | 2022-09-01 | 2022-09-01 |  |
| 560 |  | Ventana repositorio de oficios por municipio | 1d | 2022-09-01 | 2022-09-01 |  |

| ID | WBS | Task | Duration | Start | Finish | Complete |
| --- | --- | --- | --- | --- | --- | --- |
| 561 |  | boton borrar oficio | 1d | 2022-09-01 | 2022-09-01 |  |
| 562 |  | boton configurar oficio | 1d | 2022-09-01 | 2022-09-01 |  |
| 563 | 1.3.3.15 | **Administración de Fondo descentralizado Zona Metropolitana y no Metropolitana** | 1d | 2022-09-01 A | 2022-09-01 | 6% |
| 564 |  | Pantalla principal | 1d | 2022-09-01 | 2022-09-01 |  |
| 565 |  | Filtro mes | 1d | 2022-09-01 | 2022-09-01 |  |
| 566 |  | Filtro año | 1d | 2022-09-01 | 2022-09-01 |  |
| 567 |  | Filtro busqueda | 1d | 2022-09-01 | 2022-09-01 |  |
| 568 |  | Configuración de Dashboard | 1d | 2022-09-01 | 2022-09-01 |  |
| 569 |  | Exportación de dashboard PDF | 1d | 2022-09-01 | 2022-09-01 |  |
| 570 |  | Exportación de dashboard Excel | 1d | 2022-09-01 | 2022-09-01 |  |
| 571 |  | Paginación Dashboard | 1d | 2022-09-01 | 2022-09-01 |  |
| 572 |  | Busqueda Dash board | 1d | 2022-09-01 | 2022-09-01 |  |
| 573 |  | Ventanas emergentes de Autorizar por municipio | 1d | 2022-09-01 | 2022-09-01 |  |
| 574 |  | Ventanas emergentes de Track por municipio | 1d | 2022-09-01 A | 2022-09-01 A | 100% |
| 575 |  | Ventanas emergentes de detalles por municipio | 1d | 2022-09-01 | 2022-09-01 |  |
| 576 |  | Ventanas emergentes de Adjuntar oficio por municipio | 1d | 2022-09-01 | 2022-09-01 |  |
| 577 |  | Ventana repositorio de oficios por municipio | 1d | 2022-09-01 | 2022-09-01 |  |
| 578 |  | boton borrar oficio | 1d | 2022-09-01 | 2022-09-01 |  |
| 579 |  | boton configurar oficio | 1d | 2022-09-01 | 2022-09-01 |  |
| 580 | 1.3.3.16 | **Administración de Fondo de seguridad para municipios Metropolitanos y no Metropolitanos** | 1d | 2022-09-01 A | 2022-09-01 | 8% |
| 581 |  | Pantalla principal | 1d | 2022-09-01 | 2022-09-01 |  |
| 582 |  | Filtro mes | 1d | 2022-09-01 | 2022-09-01 |  |
| 583 |  | Filtro año | 1d | 2022-09-01 | 2022-09-01 |  |
| 584 |  | Filtro busqueda | 1d | 2022-09-01 | 2022-09-01 |  |
| 585 |  | Configuración de Dashboard | 1d | 2022-09-01 | 2022-09-01 |  |
| 586 |  | Exportación de dashboard PDF | 1d | 2022-09-01 | 2022-09-01 |  |
| 587 |  | Exportación de dashboard Excel | 1d | 2022-09-01 | 2022-09-01 |  |
| 588 |  | Paginación Dashboard | 1d | 2022-09-01 | 2022-09-01 |  |
| 589 |  | Busqueda Dash board | 1d | 2022-09-01 | 2022-09-01 |  |
| 590 |  | Ventanas emergentes de Autorizar | 1d | 2022-09-01 | 2022-09-01 |  |
| 591 |  | Ventanas emergentes de Enviar | 1d | 2022-09-01 | 2022-09-01 |  |
| 592 |  | Ventanas emergentes de Track | 1d | 2022-09-01 A | 2022-09-01 A | 100% |
| 593 | 1.3.3.17 | **Administración de Fondo de desarrollo municipal Metropolitanos y no Metropolitanos** | 1d | 2022-09-01 A | 2022-09-01 | 6% |
| 594 |  | Pantalla principal | 1d | 2022-09-01 | 2022-09-01 |  |
| 595 |  | Filtro mes | 1d | 2022-09-01 | 2022-09-01 |  |
| 596 |  | Filtro año | 1d | 2022-09-01 | 2022-09-01 |  |
| 597 |  | Filtro busqueda | 1d | 2022-09-01 | 2022-09-01 |  |
| 598 |  | Configuración de Dashboard | 1d | 2022-09-01 | 2022-09-01 |  |
| 599 |  | Exportación de dashboard PDF | 1d | 2022-09-01 | 2022-09-01 |  |
| 600 |  | Exportación de dashboard Excel | 1d | 2022-09-01 | 2022-09-01 |  |
| 601 |  | Paginación Dashboard | 1d | 2022-09-01 | 2022-09-01 |  |
| 602 |  | Busqueda Dash board | 1d | 2022-09-01 | 2022-09-01 |  |
| 603 |  | Ventanas emergentes de Autorizar | 1d | 2022-09-01 | 2022-09-01 |  |
| 604 |  | Ventanas emergentes de Enviar | 1d | 2022-09-01 | 2022-09-01 |  |
| 605 |  | Ventanas emergentes de Track | 1d | 2022-09-01 A | 2022-09-01 A | 100% |
| 606 |  | Módulo contacto con municipios | 1d | 2022-09-01 | 2022-09-01 |  |
| 607 |  | Generador de reportes | 1d | 2022-09-01 | 2022-09-01 |  |
| 608 |  | Generador de Estadísticas | 1d | 2022-09-01 | 2022-09-01 |  |
| 609 |  | Dashboard Calendario | 1d | 2022-09-01 | 2022-09-01 |  |
| 610 | 1.3.4 | **Módulo DAF** | 52.75d | 2022-09-01 | 2022-11-14 |  |
| 611 | 1.3.4.1 | **Dashboard Perfil DAF** | 1d | 2022-09-01 | 2022-09-01 |  |
| 612 |  | Pantalla Perfil | 1d | 2022-09-01 | 2022-09-01 |  |
| 613 |  | Pop up Notificaciones | 1d | 2022-09-01 | 2022-09-01 |  |
| 614 |  | Contador de Notificaciones (Icono campanita) | 1d | 2022-09-01 | 2022-09-01 |  |
| 615 |  | Bandeja entrada de Notificaciones | 1d | 2022-09-01 | 2022-09-01 |  |
| 616 |  | Carga de Speis | 1d | 2022-09-01 | 2022-09-01 |  |
| 617 |  | Generación de Estadísticas | 1d | 2022-09-01 | 2022-09-01 |  |
| 618 |  | Generacion de graficas | 1d | 2022-09-01 | 2022-09-01 |  |
| 619 | 1.3.5 | **Módulo DCCP** | 52.75d | 2022-09-01 | 2022-11-14 |  |
| 620 | 1.3.5.1 | **Dashboard Perfil DCCP** | 1d | 2022-09-01 | 2022-09-01 |  |
| 621 |  | Bloqueo de Sesión | 1d | 2022-09-01 | 2022-09-01 |  |
| 622 |  | Perfil | 1d | 2022-09-01 | 2022-09-01 |  |
| 623 |  | Pop up Notificaciones | 1d | 2022-09-01 | 2022-09-01 |  |
| 624 |  | Contador de Notificaciones (Icono campanita) | 1d | 2022-09-01 | 2022-09-01 |  |
| 625 |  | Bandeja entrada de Notificaciones | 1d | 2022-09-01 | 2022-09-01 |  |
| 626 |  | Configuración de Consulta | 1d | 2022-09-01 | 2022-09-01 |  |
| 627 | 1.3.6 | **Módulo DPCP** | 52.75d | 2022-09-01 | 2022-11-14 |  |
| 628 | 1.3.6.1 | **Dashboard Perfil DPCP** | 1d | 2022-09-01 | 2022-09-01 |  |
| 629 |  | Pantalla Perfil | 1d | 2022-09-01 | 2022-09-01 |  |
| 630 |  | Pop up Notificaciones | 1d | 2022-09-01 | 2022-09-01 |  |

| ID | WBS | Task | Duration | Start | Finish | Complete |
| --- | --- | --- | --- | --- | --- | --- |
| 631 |  | Contador de Notificaciones (Icono campanita) | 1d | 2022-09-01 | 2022-09-01 |  |
| 632 |  | Bandeja entrada de Notificaciones | 1d | 2022-09-01 | 2022-09-01 |  |
| 633 |  | Asignación de Presupuesto | 1d | 2022-09-01 | 2022-09-01 |  |
| 634 |  | Generación de Estadísticas | 1d | 2022-09-01 | 2022-09-01 |  |
| 635 |  | Generación de graficas | 1d | 2022-09-01 | 2022-09-01 |  |
| 636 | 1.3.7 | **Módulo Municipios** | 52.75d | 2022-09-01 A | 2022-11-14 | 3% |
| 637 | 1.3.7.1 | **Base** | 1d | 2022-09-01 A | 2022-09-01 | 40% |
| 638 |  | Buzon | 1d | 2022-09-01 | 2022-09-01 |  |
| 639 |  | Login | 1d | 2022-09-01 A | 2022-09-01 A | 100% |
| 640 |  | Logout | 1d | 2022-09-01 A | 2022-09-01 A | 100% |
| 641 |  | Bloqueo de Sesión | 1d | 2022-09-01 | 2022-09-01 |  |
| 642 |  | Perfil | 1d | 2022-09-01 | 2022-09-01 |  |
| 643 | 1.3.7.2 | **Dashboard Inicio** | 1d | 2022-09-01 | 2022-09-01 |  |
| 644 |  | Pantalla Principal | 1d | 2022-09-01 | 2022-09-01 |  |
| 645 |  | Configuración de Dashboard | 1d | 2022-09-01 | 2022-09-01 |  |
| 646 |  | Ventanas emergentes de validación | 1d | 2022-09-01 | 2022-09-01 |  |
| 647 |  | Ruleta imágenes | 1d | 2022-09-01 | 2022-09-01 |  |
| 648 |  | Mensaje de Bienvenida | 1d | 2022-09-01 | 2022-09-01 |  |
| 649 | 1.3.7.3 | **Mis Cuentas** | 1d | 2022-09-01 | 2022-09-01 |  |
| 650 |  | Pantalla Principal | 1d | 2022-09-01 | 2022-09-01 |  |
| 651 |  | Agregar | 1d | 2022-09-01 | 2022-09-01 |  |
| 652 |  | Editar | 1d | 2022-09-01 | 2022-09-01 |  |
| 653 |  | Eliminar | 1d | 2022-09-01 | 2022-09-01 |  |
| 654 |  | Configuración de Dashboard | 1d | 2022-09-01 | 2022-09-01 |  |
| 655 |  | Exportación de dashboard PDF | 1d | 2022-09-01 | 2022-09-01 |  |
| 656 |  | Exportación de dashboard Excel | 1d | 2022-09-01 | 2022-09-01 |  |
| 657 |  | Paginación Dashboard | 1d | 2022-09-01 | 2022-09-01 |  |
| 658 |  | Busqueda Dash board | 1d | 2022-09-01 | 2022-09-01 |  |
| 659 |  | Ventanas emergentes de validación | 1d | 2022-09-01 | 2022-09-01 |  |
| 660 | 1.3.7.4 | **Solicitud de Recursos** | 1d | 2022-09-01 | 2022-09-01 |  |
| 661 |  | Pantalla Principal | 1d | 2022-09-01 | 2022-09-01 |  |
| 662 |  | Agregar | 1d | 2022-09-01 | 2022-09-01 |  |
| 663 |  | Editar | 1d | 2022-09-01 | 2022-09-01 |  |
| 664 |  | Eliminar | 1d | 2022-09-01 | 2022-09-01 |  |
| 665 |  | Configuración de Dashboard | 1d | 2022-09-01 | 2022-09-01 |  |
| 666 |  | Exportación de dashboard PDF | 1d | 2022-09-01 | 2022-09-01 |  |
| 667 |  | Exportación de dashboard Excel | 1d | 2022-09-01 | 2022-09-01 |  |
| 668 |  | Paginación Dashboard | 1d | 2022-09-01 | 2022-09-01 |  |
| 669 |  | Busqueda Dash board | 1d | 2022-09-01 | 2022-09-01 |  |
| 670 |  | Ventanas emergentes de validación | 1d | 2022-09-01 | 2022-09-01 |  |
| 671 |  | Boton Detalles | 1d | 2022-09-01 | 2022-09-01 |  |
| 672 | 1.3.7.5 | **Dashboard Ayuda** | 1d | 2022-09-01 | 2022-09-01 |  |
| 673 |  | Pantalla principal | 1d | 2022-09-01 | 2022-09-01 |  |
| 674 |  | Configuracion de Enlaces | 1d | 2022-09-01 | 2022-09-01 |  |
| 675 | 1.3.7.6 | **Recepcion de Recursos Participaciones Federales** | 1d | 2022-09-01 | 2022-09-01 |  |
| 676 |  | Pantalla Principal | 1d | 2022-09-01 | 2022-09-01 |  |
| 677 |  | Agregar | 1d | 2022-09-01 | 2022-09-01 |  |
| 678 |  | Editar | 1d | 2022-09-01 | 2022-09-01 |  |
| 679 |  | Eliminar | 1d | 2022-09-01 | 2022-09-01 |  |
| 680 |  | Configuración de Dashboard | 1d | 2022-09-01 | 2022-09-01 |  |
| 681 |  | Exportación de dashboard PDF | 1d | 2022-09-01 | 2022-09-01 |  |
| 682 |  | Exportación de dashboard Excel | 1d | 2022-09-01 | 2022-09-01 |  |
| 683 |  | Paginación Dashboard | 1d | 2022-09-01 | 2022-09-01 |  |
| 684 |  | Busqueda Dash board | 1d | 2022-09-01 | 2022-09-01 |  |
| 685 |  | Ventanas emergentes de validación | 1d | 2022-09-01 | 2022-09-01 |  |
| 686 | 1.3.7.7 | **Recepcion de Recursos Participaciones Estatales** | 1d | 2022-09-01 | 2022-09-01 |  |
| 687 |  | Pantalla Principal | 1d | 2022-09-01 | 2022-09-01 |  |
| 688 |  | Agregar | 1d | 2022-09-01 | 2022-09-01 |  |
| 689 |  | Editar | 1d | 2022-09-01 | 2022-09-01 |  |
| 690 |  | Eliminar | 1d | 2022-09-01 | 2022-09-01 |  |
| 691 |  | Configuración de Dashboard | 1d | 2022-09-01 | 2022-09-01 |  |
| 692 |  | Exportación de dashboard PDF | 1d | 2022-09-01 | 2022-09-01 |  |
| 693 |  | Exportación de dashboard Excel | 1d | 2022-09-01 | 2022-09-01 |  |
| 694 |  | Paginación Dashboard | 1d | 2022-09-01 | 2022-09-01 |  |
| 695 |  | Busqueda Dash board | 1d | 2022-09-01 | 2022-09-01 |  |
| 696 |  | Ventanas emergentes de validación | 1d | 2022-09-01 | 2022-09-01 |  |
| 697 | 1.3.7.8 | **Recepcion de Recursos Aportaciones Federales** | 1d | 2022-09-01 | 2022-09-01 |  |
| 698 |  | Pantalla Principal | 1d | 2022-09-01 | 2022-09-01 |  |
| 699 |  | Agregar | 1d | 2022-09-01 | 2022-09-01 |  |
| 700 |  | Editar | 1d | 2022-09-01 | 2022-09-01 |  |

| ID | WBS | Task | Duration | Start | Finish |
| --- | --- | --- | --- | --- | --- |
| 701 |  | Eliminar | 1d | 2022-09-01 | 2022-09-01 |
| 702 |  | Configuración de Dashboard | 1d | 2022-09-01 | 2022-09-01 |
| 703 |  | Exportación de dashboard PDF | 1d | 2022-09-01 | 2022-09-01 |
| 704 |  | Exportación de dashboard Excel | 1d | 2022-09-01 | 2022-09-01 |
| 705 |  | Paginación Dashboard | 1d | 2022-09-01 | 2022-09-01 |
| 706 |  | Busqueda Dash board | 1d | 2022-09-01 | 2022-09-01 |
| 707 |  | Ventanas emergentes de validación | 1d | 2022-09-01 | 2022-09-01 |
| 708 | 1.3.7.9 | **Recepcion de Recursos Aportaciones Estatales** | 1d | 2022-09-01 | 2022-09-01 |
| 709 |  | Pantalla Principal | 1d | 2022-09-01 | 2022-09-01 |
| 710 |  | Agregar | 1d | 2022-09-01 | 2022-09-01 |
| 711 |  | Editar | 1d | 2022-09-01 | 2022-09-01 |
| 712 |  | Eliminar | 1d | 2022-09-01 | 2022-09-01 |
| 713 |  | Configuración de Dashboard | 1d | 2022-09-01 | 2022-09-01 |
| 714 |  | Exportación de dashboard PDF | 1d | 2022-09-01 | 2022-09-01 |
| 715 |  | Exportación de dashboard Excel | 1d | 2022-09-01 | 2022-09-01 |
| 716 |  | Paginación Dashboard | 1d | 2022-09-01 | 2022-09-01 |
| 717 |  | Busqueda Dash board | 1d | 2022-09-01 | 2022-09-01 |
| 718 |  | Ventanas emergentes de validación | 1d | 2022-09-01 | 2022-09-01 |
| 719 | 1.3.8 | **Módulo OPD** | 52.75d | 2022-09-01 | 2022-11-14 |
| 720 | 1.3.8.1 | **Base** | 1d | 2022-09-01 | 2022-09-01 |
| 721 |  | Perfil | 1d | 2022-09-01 | 2022-09-01 |
| 722 |  | Pop up Notificaciones | 1d | 2022-09-01 | 2022-09-01 |
| 723 |  | Contador de Notificaciones (Icono campanita) | 1d | 2022-09-01 | 2022-09-01 |
| 724 |  | Bandeja entrada de Notificaciones | 1d | 2022-09-01 | 2022-09-01 |
| 725 | 1.3.8.2 | **Dashboard mis cuentas** | 1d | 2022-09-01 | 2022-09-01 |
| 726 |  | Pantalla Principal | 1d | 2022-09-01 | 2022-09-01 |
| 727 |  | Configuración de Dashboard | 1d | 2022-09-01 | 2022-09-01 |
| 728 |  | Exportación de dashboard PDF | 1d | 2022-09-01 | 2022-09-01 |
| 729 |  | Exportación de dashboard Excel | 1d | 2022-09-01 | 2022-09-01 |
| 730 |  | Paginación Dashboard | 1d | 2022-09-01 | 2022-09-01 |
| 731 |  | Busqueda Dashboard | 1d | 2022-09-01 | 2022-09-01 |
| 732 |  | Agregar | 1d | 2022-09-01 | 2022-09-01 |
| 733 |  | Editar | 1d | 2022-09-01 | 2022-09-01 |
| 734 |  | Eliminar | 1d | 2022-09-01 | 2022-09-01 |
| 735 |  | Ventanas emergentes de validación | 1d | 2022-09-01 | 2022-09-01 |
| 736 | 1.3.8.3 | **Dashboard Facturación** | 1d | 2022-09-01 | 2022-09-01 |
| 737 |  | Pantalla Principal | 1d | 2022-09-01 | 2022-09-01 |
| 738 |  | Configuración de Dashboard | 1d | 2022-09-01 | 2022-09-01 |
| 739 |  | Exportación de dashboard PDF | 1d | 2022-09-01 | 2022-09-01 |
| 740 |  | Exportación de dashboard Excel | 1d | 2022-09-01 | 2022-09-01 |
| 741 |  | Paginación Dashboard | 1d | 2022-09-01 | 2022-09-01 |
| 742 |  | Busqueda Dashboard | 1d | 2022-09-01 | 2022-09-01 |
| 743 |  | Ventanas de visualización de detalle | 1d | 2022-09-01 | 2022-09-01 |
| 744 |  | Busqueda por Año | 1d | 2022-09-01 | 2022-09-01 |
| 745 | 1.3.8.4 | **Dashboard Solicitud de recursos** | 1d | 2022-09-01 | 2022-09-01 |
| 746 |  | Pantalla Principal | 1d | 2022-09-01 | 2022-09-01 |
| 747 |  | Configuración de Dashboard | 1d | 2022-09-01 | 2022-09-01 |
| 748 |  | Exportación de dashboard PDF | 1d | 2022-09-01 | 2022-09-01 |
| 749 |  | Exportación de dashboard Excel | 1d | 2022-09-01 | 2022-09-01 |
| 750 |  | Paginación Dashboard | 1d | 2022-09-01 | 2022-09-01 |
| 751 | 1.3.8.5 | **Busqueda Dashboard** | 1d | 2022-09-01 | 2022-09-01 |
| 752 |  | Pantalla Principal | 1d | 2022-09-01 | 2022-09-01 |
| 753 |  | Agregar | 1d | 2022-09-01 | 2022-09-01 |
| 754 |  | Editar | 1d | 2022-09-01 | 2022-09-01 |
| 755 |  | Eliminar | 1d | 2022-09-01 | 2022-09-01 |
| 756 |  | Ventanas emergentes de validación | 1d | 2022-09-01 | 2022-09-01 |
| 757 |  | Busqueda por Año | 1d | 2022-09-01 | 2022-09-01 |
| 758 |  | Carga de documentos | 1d | 2022-09-01 | 2022-09-01 |
| 759 |  | PDF generado por la solicitud de recursos | 1d | 2022-09-01 | 2022-09-01 |
| 760 | 1.3.8.6 | **Dashboard menu preguntas frecuentes** | 1d | 2022-09-01 | 2022-09-01 |
| 761 |  | Pantalla Principal | 1d | 2022-09-01 | 2022-09-01 |
| 762 |  | Configuracion de dashboard | 1d | 2022-09-01 | 2022-09-01 |
| 763 | 1.3.8.7 | **Dashboard Recepción de recursos** | 1d | 2022-09-01 | 2022-09-01 |
| 764 |  | Pantalla Principal | 1d | 2022-09-01 | 2022-09-01 |
| 765 |  | Configuracion de dashboard | 1d | 2022-09-01 | 2022-09-01 |
| 766 |  | Exportación de dashboard PDF | 1d | 2022-09-01 | 2022-09-01 |
| 767 |  | Exportación de dashboard Excel | 1d | 2022-09-01 | 2022-09-01 |
| 768 |  | Paginación Dashboard | 1d | 2022-09-01 | 2022-09-01 |
| 769 |  | Busqueda Dashboard | 1d | 2022-09-01 | 2022-09-01 |
| 770 |  | Subida de Archivo | 1d | 2022-09-01 | 2022-09-01 |

| ID | WBS | Task | Duration | Start | Finish | Complete |
| --- | --- | --- | --- | --- | --- | --- |
| 771 | 1.3.8.8 | **Dashboard Recepción de recursos sección participaciones estatales** | 1d | 2022-09-01 | 2022-09-01 |  |
| 772 |  | Pantalla Principal | 1d | 2022-09-01 | 2022-09-01 |  |
| 773 |  | Configuracion de dashboard | 1d | 2022-09-01 | 2022-09-01 |  |
| 774 |  | Exportación de dashboard PDF | 1d | 2022-09-01 | 2022-09-01 |  |
| 775 |  | Exportación de dashboard Excel | 1d | 2022-09-01 | 2022-09-01 |  |
| 776 |  | Paginación Dashboard | 1d | 2022-09-01 | 2022-09-01 |  |
| 777 |  | Busqueda Dashboard | 1d | 2022-09-01 | 2022-09-01 |  |
| 778 |  | Subida de Archivo | 1d | 2022-09-01 | 2022-09-01 |  |
| 779 | 1.3.8.9 | **Dashboard Recepción de recursos sección aportaciones federales** | 1d | 2022-09-01 | 2022-09-01 |  |
| 780 |  | Pantalla Principal | 1d | 2022-09-01 | 2022-09-01 |  |
| 781 |  | Configuracion de dashboard | 1d | 2022-09-01 | 2022-09-01 |  |
| 782 |  | Exportación de dashboard PDF | 1d | 2022-09-01 | 2022-09-01 |  |
| 783 |  | Exportación de dashboard Excel | 1d | 2022-09-01 | 2022-09-01 |  |
| 784 |  | Paginación Dashboard | 1d | 2022-09-01 | 2022-09-01 |  |
| 785 |  | Busqueda Dashboard | 1d | 2022-09-01 | 2022-09-01 |  |
| 786 |  | Subida de Archivo | 1d | 2022-09-01 | 2022-09-01 |  |
| 787 | 1.3.8.10 | **Dashboard Recepción de recursos sección aportaciones estatales** | 1d | 2022-09-01 | 2022-09-01 |  |
| 788 |  | Pantalla Principal | 1d | 2022-09-01 | 2022-09-01 |  |
| 789 |  | Configuracion de dashboard | 1d | 2022-09-01 | 2022-09-01 |  |
| 790 |  | Exportación de dashboard PDF | 1d | 2022-09-01 | 2022-09-01 |  |
| 791 |  | Exportación de dashboard Excel | 1d | 2022-09-01 | 2022-09-01 |  |
| 792 |  | Paginación Dashboard | 1d | 2022-09-01 | 2022-09-01 |  |
| 793 |  | Busqueda Dashboard | 1d | 2022-09-01 | 2022-09-01 |  |
| 794 |  | Subida de Archivo | 1d | 2022-09-01 | 2022-09-01 |  |
| 795 | 1.4 | **Diseño y Desarrollo FRONT** | 88d | 2022-07-15 | 2022-11-15 | 14% |
| 796 | 1.4.1 | **Módulo de Administración** | 52.75d | 2022-09-01 A | 2022-11-14 | 46% |
| 797 | 1.4.1.1 | **Base** | 52.75d | 2022-09-01 A | 2022-11-14 | 50% |
| 798 |  | Login | 52.75d | 2022-09-01 A | 2022-11-14 A | 100% |
| 799 |  | Logout | 52.75d | 2022-09-01 A | 2022-11-14 A | 100% |
| 800 |  | Bloqueo de Sesión | 52.75d | 2022-09-01 | 2022-11-14 |  |
| 801 |  | Perfil | 52.75d | 2022-09-01 | 2022-11-14 |  |
| 802 | 1.4.1.2 | **Administración de Usuarios** | 1d | 2022-09-01 | 2022-09-01 |  |
| 803 |  | Agregar | 1d | 2022-09-01 | 2022-09-01 |  |
| 804 |  | Pantalla Principal | 1d | 2022-09-01 | 2022-09-01 |  |
| 805 |  | Editar | 1d | 2022-09-01 | 2022-09-01 |  |
| 806 |  | Eliminar | 1d | 2022-09-01 | 2022-09-01 |  |
| 807 |  | Configuración de Dashboard | 1d | 2022-09-01 | 2022-09-01 |  |
| 808 |  | Exportación de dashboard PDF | 1d | 2022-09-01 | 2022-09-01 |  |
| 809 |  | Exportación de dashboard Excel | 1d | 2022-09-01 | 2022-09-01 |  |
| 810 |  | Paginación Dashboard | 1d | 2022-09-01 | 2022-09-01 |  |
| 811 |  | Busqueda Dash board | 1d | 2022-09-01 | 2022-09-01 |  |
| 812 |  | Ventanas emergentes de validación | 1d | 2022-09-01 | 2022-09-01 |  |
| 813 | 1.4.1.3 | **Administración de Roles y Permisos** | 1d | 2022-09-01 | 2022-09-01 |  |
| 814 |  | Pantalla Principal | 1d | 2022-09-01 | 2022-09-01 |  |
| 815 |  | Agregar | 1d | 2022-09-01 | 2022-09-01 |  |
| 816 |  | Editar | 1d | 2022-09-01 | 2022-09-01 |  |
| 817 |  | Eliminar | 1d | 2022-09-01 | 2022-09-01 |  |
| 818 |  | Configuración de Dashboard | 1d | 2022-09-01 | 2022-09-01 |  |
| 819 |  | Exportación de dashboard PDF | 1d | 2022-09-01 | 2022-09-01 |  |
| 820 |  | Exportación de dashboard Excel | 1d | 2022-09-01 | 2022-09-01 |  |
| 821 |  | Paginación Dashboard | 1d | 2022-09-01 | 2022-09-01 |  |
| 822 |  | Busqueda Dash board | 1d | 2022-09-01 | 2022-09-01 |  |
| 823 |  | Ventanas emergentes de validación | 1d | 2022-09-01 | 2022-09-01 |  |
| 824 | 1.4.2 | **Módulo CPH** | 52.75d | 2022-09-01 A | 2022-11-14 | 6% |
| 825 | 1.4.2.1 | **Base** | 1d | 2022-09-01 | 2022-09-01 |  |
| 826 |  | Perfil | 1d | 2022-09-01 | 2022-09-01 |  |
| 827 |  | Pop up Notificaciones | 1d | 2022-09-01 | 2022-09-01 |  |
| 828 |  | Contador de Notificaciones (Icono campanita) | 1d | 2022-09-01 | 2022-09-01 |  |
| 829 |  | Bandeja entrada de Notificaciones | 1d | 2022-09-01 | 2022-09-01 |  |
| 830 | 1.4.2.2 | **Administración de Municipios** | 1d | 2022-09-01 | 2022-09-01 |  |
| 831 |  | Pantalla Principal | 1d | 2022-09-01 | 2022-09-01 |  |
| 832 |  | Agregar | 1d | 2022-09-01 | 2022-09-01 |  |
| 833 |  | Editar | 1d | 2022-09-01 | 2022-09-01 |  |
| 834 |  | Eliminar | 1d | 2022-09-01 | 2022-09-01 |  |
| 835 |  | Configuración de Dashboard | 1d | 2022-09-01 | 2022-09-01 |  |
| 836 |  | Exportación de dashboard PDF | 1d | 2022-09-01 | 2022-09-01 |  |
| 837 |  | Exportación de dashboard Excel | 1d | 2022-09-01 | 2022-09-01 |  |
| 838 |  | Paginación Dashboard | 1d | 2022-09-01 | 2022-09-01 |  |
| 839 |  | Busqueda Dash board | 1d | 2022-09-01 | 2022-09-01 |  |
| 840 |  | Ventanas emergentes de validación | 1d | 2022-09-01 | 2022-09-01 |  |

| ID | WBS | Task | Duration | Start | Finish | Complete |
| --- | --- | --- | --- | --- | --- | --- |
| 841 | 1.4.2.3 | **Administración de Fondos** | 1d | 2022-09-01 | 2022-09-01 |  |
| 842 |  | Pantalla Principal | 1d | 2022-09-01 | 2022-09-01 |  |
| 843 |  | Agregar | 1d | 2022-09-01 | 2022-09-01 |  |
| 844 |  | Editar | 1d | 2022-09-01 | 2022-09-01 |  |
| 845 |  | Eliminar | 1d | 2022-09-01 | 2022-09-01 |  |
| 846 |  | Configuración de Dashboard | 1d | 2022-09-01 | 2022-09-01 |  |
| 847 |  | Exportación de dashboard PDF | 1d | 2022-09-01 | 2022-09-01 |  |
| 848 |  | Exportación de dashboard Excel | 1d | 2022-09-01 | 2022-09-01 |  |
| 849 |  | Paginación Dashboard | 1d | 2022-09-01 | 2022-09-01 |  |
| 850 |  | Busqueda Dash board | 1d | 2022-09-01 | 2022-09-01 |  |
| 851 |  | Ventanas emergentes de validación | 1d | 2022-09-01 | 2022-09-01 |  |
| 852 | 1.4.2.4 | **Administración de Presupuesto** | 1d | 2022-09-01 | 2022-09-01 |  |
| 853 |  | Pantalla Principal | 1d | 2022-09-01 | 2022-09-01 |  |
| 854 |  | Agregar | 1d | 2022-09-01 | 2022-09-01 |  |
| 855 |  | Editar | 1d | 2022-09-01 | 2022-09-01 |  |
| 856 |  | Eliminar | 1d | 2022-09-01 | 2022-09-01 |  |
| 857 |  | Configuración de Dashboard | 1d | 2022-09-01 | 2022-09-01 |  |
| 858 |  | Exportación de dashboard PDF | 1d | 2022-09-01 | 2022-09-01 |  |
| 859 |  | Exportación de dashboard Excel | 1d | 2022-09-01 | 2022-09-01 |  |
| 860 |  | Paginación Dashboard | 1d | 2022-09-01 | 2022-09-01 |  |
| 861 |  | Busqueda Dash board | 1d | 2022-09-01 | 2022-09-01 |  |
| 862 |  | Ventanas emergentes de validación | 1d | 2022-09-01 | 2022-09-01 |  |
| 863 | 1.4.2.5 | **Administración de UMA** | 1d | 2022-09-01 | 2022-09-01 |  |
| 864 |  | Pantalla Principal | 1d | 2022-09-01 | 2022-09-01 |  |
| 865 |  | Agregar | 1d | 2022-09-01 | 2022-09-01 |  |
| 866 |  | Editar | 1d | 2022-09-01 | 2022-09-01 |  |
| 867 |  | Eliminar | 1d | 2022-09-01 | 2022-09-01 |  |
| 868 |  | Configuración de Dashboard | 1d | 2022-09-01 | 2022-09-01 |  |
| 869 |  | Exportación de dashboard PDF | 1d | 2022-09-01 | 2022-09-01 |  |
| 870 |  | Exportación de dashboard Excel | 1d | 2022-09-01 | 2022-09-01 |  |
| 871 |  | Paginación Dashboard | 1d | 2022-09-01 | 2022-09-01 |  |
| 872 |  | Busqueda Dashboard | 1d | 2022-09-01 | 2022-09-01 |  |
| 873 |  | Ventanas emergentes de validación | 1d | 2022-09-01 | 2022-09-01 |  |
| 874 | 1.4.2.6 | **Administración de Inflación** | 1d | 2022-09-01 A | 2022-09-01 | 17% |
| 875 |  | Pantalla Principal | 1d | 2022-09-01 | 2022-09-01 |  |
| 876 |  | Plantilla Carga Masiva Inflación | 1d | 2022-09-01 A | 2022-09-01 A | 100% |
| 877 |  | Api Plantilla caga masiva Municipio - Inflación | 1d | 2022-09-01 A | 2022-09-01 A | 100% |
| 878 |  | Agregar | 1d | 2022-09-01 | 2022-09-01 |  |
| 879 |  | Editar | 1d | 2022-09-01 | 2022-09-01 |  |
| 880 |  | Eliminar | 1d | 2022-09-01 | 2022-09-01 |  |
| 881 |  | Configuración de Dashboard | 1d | 2022-09-01 | 2022-09-01 |  |
| 882 |  | Exportación de dashboard PDF | 1d | 2022-09-01 | 2022-09-01 |  |
| 883 |  | Exportación de dashboard Excel | 1d | 2022-09-01 | 2022-09-01 |  |
| 884 |  | Paginación Dashboard | 1d | 2022-09-01 | 2022-09-01 |  |
| 885 |  | Busqueda Dash board | 1d | 2022-09-01 | 2022-09-01 |  |
| 886 |  | Ventanas emergentes de validación | 1d | 2022-09-01 | 2022-09-01 |  |
| 887 | 1.4.2.7 | **Administración de Crecimiento** | 1d | 2022-09-01 A | 2022-09-01 | 17% |
| 888 |  | Pantalla Principal | 1d | 2022-09-01 | 2022-09-01 |  |
| 889 |  | Plantilla Carga Masiva Crecimiento | 1d | 2022-09-01 A | 2022-09-01 A | 100% |
| 890 |  | Api Plantilla caga masiva Municipio - Crecimiento | 1d | 2022-09-01 A | 2022-09-01 A | 100% |
| 891 |  | Agregar | 1d | 2022-09-01 | 2022-09-01 |  |
| 892 |  | Editar | 1d | 2022-09-01 | 2022-09-01 |  |
| 893 |  | Eliminar | 1d | 2022-09-01 | 2022-09-01 |  |
| 894 |  | Configuración de Dashboard | 1d | 2022-09-01 | 2022-09-01 |  |
| 895 |  | Exportación de dashboard PDF | 1d | 2022-09-01 | 2022-09-01 |  |
| 896 |  | Exportación de dashboard Excel | 1d | 2022-09-01 | 2022-09-01 |  |
| 897 |  | Paginación Dashboard | 1d | 2022-09-01 | 2022-09-01 |  |
| 898 |  | Busqueda Dash board | 1d | 2022-09-01 | 2022-09-01 |  |
| 899 |  | Ventanas emergentes de validación | 1d | 2022-09-01 | 2022-09-01 |  |
| 900 | 1.4.2.8 | **Administración de Facturación** | 1d | 2022-09-01 | 2022-09-01 |  |
| 901 |  | Pantalla Principal | 1d | 2022-09-01 | 2022-09-01 |  |
| 902 |  | Agregar | 1d | 2022-09-01 | 2022-09-01 |  |
| 903 |  | Editar | 1d | 2022-09-01 | 2022-09-01 |  |
| 904 |  | Eliminar | 1d | 2022-09-01 | 2022-09-01 |  |
| 905 |  | Configuración de Dashboard | 1d | 2022-09-01 | 2022-09-01 |  |
| 906 |  | Exportación de dashboard PDF | 1d | 2022-09-01 | 2022-09-01 |  |
| 907 |  | Exportación de dashboard Excel | 1d | 2022-09-01 | 2022-09-01 |  |
| 908 |  | Paginación Dashboard | 1d | 2022-09-01 | 2022-09-01 |  |
| 909 |  | Busqueda Dash board | 1d | 2022-09-01 | 2022-09-01 |  |
| 910 |  | Ventanas emergentes de validación | 1d | 2022-09-01 | 2022-09-01 |  |

| ID | WBS | Task | Duration | Start | Finish | Complete |
| --- | --- | --- | --- | --- | --- | --- |
| 911 | 1.4.2.9 | **Administración de Recaudación** | 1d | 2022-09-01 A | 2022-09-01 | 17% |
| 912 |  | Pantalla Principal | 1d | 2022-09-01 | 2022-09-01 |  |
| 913 |  | Plantilla Carga Masiva Recaudación | 1d | 2022-09-01 A | 2022-09-01 A | 100% |
| 914 |  | Api Plantilla caga masiva Municipio - Recaudación | 1d | 2022-09-01 A | 2022-09-01 A | 100% |
| 915 |  | Agregar | 1d | 2022-09-01 | 2022-09-01 |  |
| 916 |  | Editar | 1d | 2022-09-01 | 2022-09-01 |  |
| 917 |  | Eliminar | 1d | 2022-09-01 | 2022-09-01 |  |
| 918 |  | Configuración de Dashboard | 1d | 2022-09-01 | 2022-09-01 |  |
| 919 |  | Exportación de dashboard PDF | 1d | 2022-09-01 | 2022-09-01 |  |
| 920 |  | Exportación de dashboard Excel | 1d | 2022-09-01 | 2022-09-01 |  |
| 921 |  | Paginación Dashboard | 1d | 2022-09-01 | 2022-09-01 |  |
| 922 |  | Busqueda Dash board | 1d | 2022-09-01 | 2022-09-01 |  |
| 923 |  | Ventanas emergentes de validación | 1d | 2022-09-01 | 2022-09-01 |  |
| 924 | 1.4.2.10 | **Administración de Población** | 1d | 2022-09-01 | 2022-09-01 |  |
| 925 |  | Pantalla Principal | 1d | 2022-09-01 | 2022-09-01 |  |
| 926 |  | Agregar | 1d | 2022-09-01 | 2022-09-01 |  |
| 927 |  | Editar | 1d | 2022-09-01 | 2022-09-01 |  |
| 928 |  | Eliminar | 1d | 2022-09-01 | 2022-09-01 |  |
| 929 |  | Configuración de Dashboard | 1d | 2022-09-01 | 2022-09-01 |  |
| 930 |  | Exportación de dashboard PDF | 1d | 2022-09-01 | 2022-09-01 |  |
| 931 |  | Exportación de dashboard Excel | 1d | 2022-09-01 | 2022-09-01 |  |
| 932 |  | Paginación Dashboard | 1d | 2022-09-01 | 2022-09-01 |  |
| 933 |  | Busqueda Dash board | 1d | 2022-09-01 | 2022-09-01 |  |
| 934 |  | Ventanas emergentes de validación | 1d | 2022-09-01 | 2022-09-01 |  |
| 935 | 1.4.2.11 | **Administración de Territorio** | 1d | 2022-09-01 A | 2022-09-01 | 17% |
| 936 |  | Pantalla Principal | 1d | 2022-09-01 | 2022-09-01 |  |
| 937 |  | Plantilla Carga Masiva Territorio | 1d | 2022-09-01 A | 2022-09-01 A | 100% |
| 938 |  | Api Plantilla caga masiva Municipio - Territorio | 1d | 2022-09-01 A | 2022-09-01 A | 100% |
| 939 |  | Agregar | 1d | 2022-09-01 | 2022-09-01 |  |
| 940 |  | Editar | 1d | 2022-09-01 | 2022-09-01 |  |
| 941 |  | Eliminar | 1d | 2022-09-01 | 2022-09-01 |  |
| 942 |  | Configuración de Dashboard | 1d | 2022-09-01 | 2022-09-01 |  |
| 943 |  | Exportación de dashboard PDF | 1d | 2022-09-01 | 2022-09-01 |  |
| 944 |  | Exportación de dashboard Excel | 1d | 2022-09-01 | 2022-09-01 |  |
| 945 |  | Paginación Dashboard | 1d | 2022-09-01 | 2022-09-01 |  |
| 946 |  | Busqueda Dash board | 1d | 2022-09-01 | 2022-09-01 |  |
| 947 |  | Ventanas emergentes de validación | 1d | 2022-09-01 | 2022-09-01 |  |
| 948 | 1.4.2.12 | **Administración de pobreza** | 1d | 2022-09-01 A | 2022-09-01 | 17% |
| 949 |  | Pantalla Principal | 1d | 2022-09-01 | 2022-09-01 |  |
| 950 |  | Plantilla Carga Masiva Pobreza | 1d | 2022-09-01 A | 2022-09-01 A | 100% |
| 951 |  | Api Plantilla caga masiva Municipio - Pobreza | 1d | 2022-09-01 A | 2022-09-01 A | 100% |
| 952 |  | Agregar | 1d | 2022-09-01 | 2022-09-01 |  |
| 953 |  | Editar | 1d | 2022-09-01 | 2022-09-01 |  |
| 954 |  | Eliminar | 1d | 2022-09-01 | 2022-09-01 |  |
| 955 |  | Configuración de Dashboard | 1d | 2022-09-01 | 2022-09-01 |  |
| 956 |  | Exportación de dashboard PDF | 1d | 2022-09-01 | 2022-09-01 |  |
| 957 |  | Exportación de dashboard Excel | 1d | 2022-09-01 | 2022-09-01 |  |
| 958 |  | Paginación Dashboard | 1d | 2022-09-01 | 2022-09-01 |  |
| 959 |  | Busqueda Dash board | 1d | 2022-09-01 | 2022-09-01 |  |
| 960 |  | Ventanas emergentes de validación | 1d | 2022-09-01 | 2022-09-01 |  |
| 961 | 1.4.2.13 | **Administración de Pobreza Extrema** | 1d | 2022-09-01 A | 2022-09-01 A | 100% |
| 962 |  | Plantilla Carga Masiva Pobreza Extrema | 1d | 2022-09-01 A | 2022-09-01 A | 100% |
| 963 |  | Api Plantilla caga masiva Municipio - Pobreza Extrema | 1d | 2022-09-01 A | 2022-09-01 A | 100% |
| 964 | 1.4.2.14 | **Administración de Pobreza Moderada** | 1d | 2022-09-01 A | 2022-09-01 A | 100% |
| 965 |  | Plantilla Carga Masiva Pobreza Moderada | 1d | 2022-09-01 A | 2022-09-01 A | 100% |
| 966 |  | Api Plantilla caga masiva Municipio - Pobreza Moderada | 1d | 2022-09-01 A | 2022-09-01 A | 100% |
| 967 | 1.4.2.15 | **Administración de Proyección** | 1d | 2022-09-01 A | 2022-09-01 | 40% |
| 968 |  | Agregar | 1d | 2022-09-01 | 2022-09-01 |  |
| 969 |  | Editar | 1d | 2022-09-01 | 2022-09-01 |  |
| 970 |  | Eliminar | 1d | 2022-09-01 | 2022-09-01 |  |
| 971 |  | Plantilla Carga Masiva Proyección | 1d | 2022-09-01 A | 2022-09-01 A | 100% |
| 972 |  | Api Plantilla caga masiva Municipio - Proyección | 1d | 2022-09-01 A | 2022-09-01 A | 100% |
| 973 | 1.4.2.16 | **Dashboard Articulo 14 Fracción I** | 1d | 2022-09-01 | 2022-09-01 |  |
| 974 |  | Pantalla Principal | 1d | 2022-09-01 | 2022-09-01 |  |
| 975 |  | Generar plantilla | 1d | 2022-09-01 | 2022-09-01 |  |
| 976 |  | Carga masiva - plantilla | 1d | 2022-09-01 | 2022-09-01 |  |
| 977 |  | Recálculo de coeficiente | 1d | 2022-09-01 | 2022-09-01 |  |
| 978 |  | Editar información | 1d | 2022-09-01 | 2022-09-01 |  |
| 979 |  | Dashboard predial | 1d | 2022-09-01 | 2022-09-01 |  |
| 980 |  | Dashboard población y territorio | 1d | 2022-09-01 | 2022-09-01 |  |

| ID | WBS | Task | Duration | Start | Finish |
| --- | --- | --- | --- | --- | --- |
| 981 |  | Dashboard carencia social | 1d | 2022-09-01 | 2022-09-01 |
| 982 |  | Cálculo de coeficiente | 1d | 2022-09-01 | 2022-09-01 |
| 983 |  | Proceso Autorización | 1d | 2022-09-01 | 2022-09-01 |
| 984 |  | Ventanas emergentes de validación | 1d | 2022-09-01 | 2022-09-01 |
| 985 | 1.4.2.17 | **Dashboard Articulo 14 Fracción II** | 1d | 2022-09-01 | 2022-09-01 |
| 986 |  | Pantalla Principal | 1d | 2022-09-01 | 2022-09-01 |
| 987 |  | Dashboard población | 1d | 2022-09-01 | 2022-09-01 |
| 988 |  | generar plantilla | 1d | 2022-09-01 | 2022-09-01 |
| 989 |  | Carga masiva - plantilla | 1d | 2022-09-01 | 2022-09-01 |
| 990 |  | Recálculo de coeficiente | 1d | 2022-09-01 | 2022-09-01 |
| 991 |  | Editar información individual | 1d | 2022-09-01 | 2022-09-01 |
| 992 |  | Dashboard proyección población | 1d | 2022-09-01 | 2022-09-01 |
| 993 |  | Carga masiva - plantilla | 1d | 2022-09-01 | 2022-09-01 |
| 994 |  | Recálculo de coeficiente | 1d | 2022-09-01 | 2022-09-01 |
| 995 |  | Editar información individual | 1d | 2022-09-01 | 2022-09-01 |
| 996 |  | Cálculo de coeficiente | 1d | 2022-09-01 | 2022-09-01 |
| 997 |  | Proceso Autorización | 1d | 2022-09-01 | 2022-09-01 |
| 998 |  | Ventanas emergentes de validación | 1d | 2022-09-01 | 2022-09-01 |
| 999 | 1.4.2.18 | **Dashboard Articulo 14 Fracción III** | 1d | 2022-09-01 | 2022-09-01 |
| 1000 |  | Pantalla Principal | 1d | 2022-09-01 | 2022-09-01 |
| 1001 |  | Dashboard eficiencia recaudatoria | 1d | 2022-09-01 | 2022-09-01 |
| 1002 |  | generar plantilla | 1d | 2022-09-01 | 2022-09-01 |
| 1003 |  | Carga masiva - plantilla | 1d | 2022-09-01 | 2022-09-01 |
| 1004 |  | Recálculo de coeficiente | 1d | 2022-09-01 | 2022-09-01 |
| 1005 |  | Editar información individual | 1d | 2022-09-01 | 2022-09-01 |
| 1006 |  | Dashboard crecimiento recaudación | 1d | 2022-09-01 | 2022-09-01 |
| 1007 |  | Carga masiva - plantilla | 1d | 2022-09-01 | 2022-09-01 |
| 1008 |  | Recálculo de coeficiente | 1d | 2022-09-01 | 2022-09-01 |
| 1009 |  | Editar información individual | 1d | 2022-09-01 | 2022-09-01 |
| 1010 |  | Cálculo de coeficiente | 1d | 2022-09-01 | 2022-09-01 |
| 1011 |  | Proceso Autorización | 1d | 2022-09-01 | 2022-09-01 |
| 1012 |  | Ventanas emergentes de validación | 1d | 2022-09-01 | 2022-09-01 |
| 1013 |  | Participaciones Federales | 1d | 2022-09-01 | 2022-09-01 |
| 1014 |  | Dashboard Participaciones Federales | 1d | 2022-09-01 | 2022-09-01 |
| 1015 |  | Proceso Envío general Participaciones Federales | 1d | 2022-09-01 | 2022-09-01 |
| 1016 |  | Track general Participaciones Federales | 1d | 2022-09-01 | 2022-09-01 |
| 1017 | 1.4.2.19 | **Dashboard FG** | 1d | 2022-09-01 | 2022-09-01 |
| 1018 |  | Configuración inicial Fondo General (FG) | 1d | 2022-09-01 | 2022-09-01 |
| 1019 |  | Carga inicial | 1d | 2022-09-01 | 2022-09-01 |
| 1020 |  | Pantalla Principal | 1d | 2022-09-01 | 2022-09-01 |
| 1021 |  | Proceso cálculo | 1d | 2022-09-01 | 2022-09-01 |
| 1022 |  | Proceso autorización | 1d | 2022-09-01 | 2022-09-01 |
| 1023 |  | Proceso envío | 1d | 2022-09-01 | 2022-09-01 |
| 1024 |  | Avance programático Fondo General | 1d | 2022-09-01 | 2022-09-01 |
| 1025 |  | Proceso Cancelación Fondo General | 1d | 2022-09-01 | 2022-09-01 |
| 1026 |  | Ventanas emergentes de validación | 1d | 2022-09-01 | 2022-09-01 |
| 1027 | 1.4.2.20 | **Dashboard FFM 70** | 1d | 2022-09-01 | 2022-09-01 |
| 1028 |  | Configuración inicial Fondo Fomento Municipal 70 % (FFM 70% ) | 1d | 2022-09-01 | 2022-09-01 |
| 1029 |  | Carga inicial | 1d | 2022-09-01 | 2022-09-01 |
| 1030 |  | Pantalla Principal | 1d | 2022-09-01 | 2022-09-01 |
| 1031 |  | Proceso cálculo | 1d | 2022-09-01 | 2022-09-01 |
| 1032 |  | Proceso autorización | 1d | 2022-09-01 | 2022-09-01 |
| 1033 |  | Proceso envío | 1d | 2022-09-01 | 2022-09-01 |
| 1034 |  | Track | 1d | 2022-09-01 | 2022-09-01 |
| 1035 |  | Ventanas emergentes de validación | 1d | 2022-09-01 | 2022-09-01 |
| 1036 |  | Configuración inicial Fondo Fomento Municipal 30 % (FFM 30% ) | 1d | 2022-09-01 | 2022-09-01 |
| 1037 | 1.4.2.21 | **Dashboard FFM 30** | 1d | 2022-09-01 | 2022-09-01 |
| 1038 |  | Pantalla Principal | 1d | 2022-09-01 | 2022-09-01 |
| 1039 |  | Carga Inicial | 1d | 2022-09-01 | 2022-09-01 |
| 1040 |  | Proceso cálculo | 1d | 2022-09-01 | 2022-09-01 |
| 1041 |  | Proceso autorización | 1d | 2022-09-01 | 2022-09-01 |
| 1042 |  | Proceso envío | 1d | 2022-09-01 | 2022-09-01 |
| 1043 |  | Track | 1d | 2022-09-01 | 2022-09-01 |
| 1044 |  | Ventanas emergentes de validación | 1d | 2022-09-01 | 2022-09-01 |
| 1045 |  | Configuración inicial Impuesto Especial sobre Producción y Servicios (IEPS) | 1d | 2022-09-01 | 2022-09-01 |
| 1046 | 1.4.2.22 | **Dashboard IEPS** | 1d | 2022-09-01 | 2022-09-01 |
| 1047 |  | Carga inicial | 1d | 2022-09-01 | 2022-09-01 |
| 1048 |  | Pantalla Principal | 1d | 2022-09-01 | 2022-09-01 |
| 1049 |  | Proceso cálculo | 1d | 2022-09-01 | 2022-09-01 |
| 1050 |  | Proceso autorización | 1d | 2022-09-01 | 2022-09-01 |

| ID | WBS | Task | Duration | Start | Finish | Complete |
| --- | --- | --- | --- | --- | --- | --- |
| 1051 |  | Proceso envío | 1d | 2022-09-01 | 2022-09-01 |  |
| 1052 |  | Track | 1d | 2022-09-01 | 2022-09-01 |  |
| 1053 |  | Ventanas emergentes de validación | 1d | 2022-09-01 | 2022-09-01 |  |
| 1054 |  | Configuración inicial Impuesto sobre la Venta Final de Gasolinas y Diesel (IEPS GyD) | 1d | 2022-09-01 | 2022-09-01 |  |
| 1055 | 1.4.2.23 | **Dashboard IEPS GyD** | 1d | 2022-09-01 | 2022-09-01 |  |
| 1056 |  | Carga inicial | 1d | 2022-09-01 | 2022-09-01 |  |
| 1057 |  | Pantalla Principal | 1d | 2022-09-01 | 2022-09-01 |  |
| 1058 |  | Proceso cálculo | 1d | 2022-09-01 | 2022-09-01 |  |
| 1059 |  | Proceso autorización | 1d | 2022-09-01 | 2022-09-01 |  |
| 1060 |  | Proceso envío | 1d | 2022-09-01 | 2022-09-01 |  |
| 1061 |  | Track | 1d | 2022-09-01 | 2022-09-01 |  |
| 1062 |  | Ventanas emergentes de validación | 1d | 2022-09-01 | 2022-09-01 |  |
| 1063 | 1.4.2.24 | **Dashboard ISR Bienes Inmuebles** | 1d | 2022-09-01 | 2022-09-01 |  |
| 1064 |  | Pantalla Principal | 1d | 2022-09-01 | 2022-09-01 |  |
| 1065 |  | Carga inicial | 1d | 2022-09-01 | 2022-09-01 |  |
| 1066 |  | Configuración inicial ISR Bienes Inmuebles | 1d | 2022-09-01 | 2022-09-01 |  |
| 1067 |  | Proceso cálculo | 1d | 2022-09-01 | 2022-09-01 |  |
| 1068 |  | Proceso autorización | 1d | 2022-09-01 | 2022-09-01 |  |
| 1069 |  | Proceso envío | 1d | 2022-09-01 | 2022-09-01 |  |
| 1070 |  | Track | 1d | 2022-09-01 | 2022-09-01 |  |
| 1071 |  | Ventanas emergentes de validación | 1d | 2022-09-01 | 2022-09-01 |  |
| 1072 | 1.4.2.25 | **Dashboard FOFIR** | 1d | 2022-09-01 | 2022-09-01 |  |
| 1073 |  | Pantalla Principal | 1d | 2022-09-01 | 2022-09-01 |  |
| 1074 |  | Carga inicial | 1d | 2022-09-01 | 2022-09-01 |  |
| 1075 |  | Configuración inicial Fondo de Fiscalización y Recaudación (FOFIR) | 1d | 2022-09-01 | 2022-09-01 |  |
| 1076 |  | Proceso cálculo | 1d | 2022-09-01 | 2022-09-01 |  |
| 1077 |  | Proceso autorización | 1d | 2022-09-01 | 2022-09-01 |  |
| 1078 |  | Proceso envío | 1d | 2022-09-01 | 2022-09-01 |  |
| 1079 |  | Track | 1d | 2022-09-01 | 2022-09-01 |  |
| 1080 |  | Ventanas emergentes de validación | 1d | 2022-09-01 | 2022-09-01 |  |
| 1081 | 1.4.2.26 | **Dashboard ISAN** | 1d | 2022-09-01 A | 2022-09-01 | 20% |
| 1082 |  | Pantalla Principal | 1d | 2022-09-01 | 2022-09-01 |  |
| 1083 |  | Plantilla Carga Masiva ISAN | 1d | 2022-09-01 A | 2022-09-01 A | 100% |
| 1084 |  | Api Plantilla caga masiva Municipio - ISAN | 1d | 2022-09-01 A | 2022-09-01 A | 100% |
| 1085 |  | Carga inicial | 1d | 2022-09-01 | 2022-09-01 |  |
| 1086 |  | Configuración inicial Impuesto sobre Automóviles Nuevos (ISAN) | 1d | 2022-09-01 | 2022-09-01 |  |
| 1087 |  | Proceso cálculo | 1d | 2022-09-01 | 2022-09-01 |  |
| 1088 |  | Proceso autorización | 1d | 2022-09-01 | 2022-09-01 |  |
| 1089 |  | Proceso envío | 1d | 2022-09-01 | 2022-09-01 |  |
| 1090 |  | Track | 1d | 2022-09-01 | 2022-09-01 |  |
| 1091 |  | Ventanas emergentes de validación | 1d | 2022-09-01 | 2022-09-01 |  |
| 1092 | 1.4.2.27 | **Dashboard Comp. ISAN** | 1d | 2022-09-01 | 2022-09-01 |  |
| 1093 |  | Pantalla Principal | 1d | 2022-09-01 | 2022-09-01 |  |
| 1094 |  | Carga inicial | 1d | 2022-09-01 | 2022-09-01 |  |
| 1095 |  | Configuración inicial Compensación ISAN | 1d | 2022-09-01 | 2022-09-01 |  |
| 1096 |  | Proceso cálculo | 1d | 2022-09-01 | 2022-09-01 |  |
| 1097 |  | Proceso autorización | 1d | 2022-09-01 | 2022-09-01 |  |
| 1098 |  | Proceso envío | 1d | 2022-09-01 | 2022-09-01 |  |
| 1099 |  | Track | 1d | 2022-09-01 | 2022-09-01 |  |
| 1100 |  | Ventanas emergentes de validación | 1d | 2022-09-01 | 2022-09-01 |  |
| 1101 | 1.4.2.28 | **Dashboard ISN** | 1d | 2022-09-01 | 2022-09-01 |  |
| 1102 |  | Pantalla Principal | 1d | 2022-09-01 | 2022-09-01 |  |
| 1103 |  | Carga configuración inicial fondo ISN | 1d | 2022-09-01 | 2022-09-01 |  |
| 1104 |  | Proceso de cálculo | 1d | 2022-09-01 | 2022-09-01 |  |
| 1105 |  | Proceso de Autorización | 1d | 2022-09-01 | 2022-09-01 |  |
| 1106 |  | Proceso de Envío | 1d | 2022-09-01 | 2022-09-01 |  |
| 1107 |  | Track | 1d | 2022-09-01 | 2022-09-01 |  |
| 1108 |  | Ventanas emergentes de validación | 1d | 2022-09-01 | 2022-09-01 |  |
| 1109 | 1.4.2.29 | **Dashboard ICV** | 1d | 2022-09-01 | 2022-09-01 |  |
| 1110 |  | Pantalla Principal | 1d | 2022-09-01 | 2022-09-01 |  |
| 1111 |  | Carga Configuración inicial ICV | 1d | 2022-09-01 | 2022-09-01 |  |
| 1112 |  | Carga masiva de ICV - (Plantilla) | 1d | 2022-09-01 | 2022-09-01 |  |
| 1113 |  | Proceso de cálculo | 1d | 2022-09-01 | 2022-09-01 |  |
| 1114 |  | Proceso de Autorización | 1d | 2022-09-01 | 2022-09-01 |  |
| 1115 |  | Proceso de Envío | 1d | 2022-09-01 | 2022-09-01 |  |
| 1116 |  | Track | 1d | 2022-09-01 | 2022-09-01 |  |
| 1117 |  | Ventanas emergentes de validación | 1d | 2022-09-01 | 2022-09-01 |  |
| 1118 | 1.4.2.30 | **Dashboard Fondo Ultracrecmiento** | 1d | 2022-09-01 | 2022-09-01 |  |
| 1119 |  | Pantalla Principal | 1d | 2022-09-01 | 2022-09-01 |  |
| 1120 |  | Carga configuración inicial Fondo Ultracrecimiento | 1d | 2022-09-01 | 2022-09-01 |  |

| ID | WBS | Task | Duration | Start | Finish |
| --- | --- | --- | --- | --- | --- |
| 1121 |  | Proceso de Autorización | 1d | 2022-09-01 | 2022-09-01 |
| 1122 |  | Proceso de Envío | 1d | 2022-09-01 | 2022-09-01 |
| 1123 |  | Track | 1d | 2022-09-01 | 2022-09-01 |
| 1124 |  | Ventanas emergentes de validación | 1d | 2022-09-01 | 2022-09-01 |
| 1125 |  | Generación de reporte | 1d | 2022-09-01 | 2022-09-01 |
| 1126 |  | <Tarea nueva> | 1d | 2022-09-01 | 2022-09-01 |
| 1127 |  | Pantalla Principal | 1d | 2022-09-01 | 2022-09-01 |
| 1128 | 1.4.2.31 | **Dashboard Fondos Descentralizado** | 1d | 2022-09-01 | 2022-09-01 |
| 1129 |  | Proceso de cálculo | 1d | 2022-09-01 | 2022-09-01 |
| 1130 |  | Proceso de Autorización | 1d | 2022-09-01 | 2022-09-01 |
| 1131 |  | Proceso de Envío | 1d | 2022-09-01 | 2022-09-01 |
| 1132 |  | Track | 1d | 2022-09-01 | 2022-09-01 |
| 1133 |  | Ventanas emergentes de validación | 1d | 2022-09-01 | 2022-09-01 |
| 1134 | 1.4.2.32 | **Dashboard Fondos Seguridad** | 1d | 2022-09-01 | 2022-09-01 |
| 1135 |  | Pantalla Principal | 1d | 2022-09-01 | 2022-09-01 |
| 1136 |  | Carga configuración inicial Fondo Seguridad | 1d | 2022-09-01 | 2022-09-01 |
| 1137 |  | Proceso de cálculo | 1d | 2022-09-01 | 2022-09-01 |
| 1138 |  | Proceso de Autorización | 1d | 2022-09-01 | 2022-09-01 |
| 1139 |  | Proceso de Envío | 1d | 2022-09-01 | 2022-09-01 |
| 1140 |  | Track | 1d | 2022-09-01 | 2022-09-01 |
| 1141 |  | Ventanas emergentes de validación | 1d | 2022-09-01 | 2022-09-01 |
| 1142 |  | Generación de reporte | 1d | 2022-09-01 | 2022-09-01 |
| 1143 | 1.4.2.33 | **Dashboard Fondos de Desarrollo Municipal** | 1d | 2022-09-01 | 2022-09-01 |
| 1144 |  | Pantalla Principal | 1d | 2022-09-01 | 2022-09-01 |
| 1145 |  | Carga configuración inicial Fondo Desarrollo Municipal | 1d | 2022-09-01 | 2022-09-01 |
| 1146 |  | Proceso de cálculo | 1d | 2022-09-01 | 2022-09-01 |
| 1147 |  | Proceso de Autorización | 1d | 2022-09-01 | 2022-09-01 |
| 1148 |  | Proceso de Envío | 1d | 2022-09-01 | 2022-09-01 |
| 1149 |  | Track | 1d | 2022-09-01 | 2022-09-01 |
| 1150 |  | Ventanas emergentes de validación | 1d | 2022-09-01 | 2022-09-01 |
| 1151 |  | Generación de reporte | 1d | 2022-09-01 | 2022-09-01 |
| 1152 | 1.4.2.34 | **Dashboard Fondos FORTAMUN** | 1d | 2022-09-01 | 2022-09-01 |
| 1153 |  | Pantalla Principal | 1d | 2022-09-01 | 2022-09-01 |
| 1154 |  | Carga configuración inicial Fondo FORTAMUN | 1d | 2022-09-01 | 2022-09-01 |
| 1155 |  | Proceso de cálculo | 1d | 2022-09-01 | 2022-09-01 |
| 1156 |  | Proceso de Autorización | 1d | 2022-09-01 | 2022-09-01 |
| 1157 |  | Proceso de Envío | 1d | 2022-09-01 | 2022-09-01 |
| 1158 |  | Track | 1d | 2022-09-01 | 2022-09-01 |
| 1159 |  | Ventanas emergentes de validación | 1d | 2022-09-01 | 2022-09-01 |
| 1160 |  | Generación de reporte | 1d | 2022-09-01 | 2022-09-01 |
| 1161 | 1.4.2.35 | **Dashboard Fondos FISM** | 1d | 2022-09-01 | 2022-09-01 |
| 1162 |  | Pantalla Principal | 1d | 2022-09-01 | 2022-09-01 |
| 1163 |  | Carga configuración inicial Fondo FISM | 1d | 2022-09-01 | 2022-09-01 |
| 1164 |  | Proceso de cálculo | 1d | 2022-09-01 | 2022-09-01 |
| 1165 |  | Proceso de Autorización | 1d | 2022-09-01 | 2022-09-01 |
| 1166 |  | Proceso de Envío | 1d | 2022-09-01 | 2022-09-01 |
| 1167 |  | Track | 1d | 2022-09-01 | 2022-09-01 |
| 1168 |  | Ventanas emergentes de validación | 1d | 2022-09-01 | 2022-09-01 |
| 1169 |  | Generación de reporte | 1d | 2022-09-01 | 2022-09-01 |
| 1170 |  | Generador de estadísticas | 1d | 2022-09-01 | 2022-09-01 |
| 1171 |  | Generador de reportes | 1d | 2022-09-01 | 2022-09-01 |
| 1172 | 1.4.3 | **Módulo DAMOP** | 52.75d | 2022-09-01 | 2022-11-14 |
| 1173 | 1.4.3.1 | **Base** | 1d | 2022-09-01 | 2022-09-01 |
| 1174 |  | Pantalla Principal | 1d | 2022-09-01 | 2022-09-01 |
| 1175 |  | Pop up Notificaciones | 1d | 2022-09-01 | 2022-09-01 |
| 1176 |  | Contador de Notificaciones (Icono campanita) | 1d | 2022-09-01 | 2022-09-01 |
| 1177 |  | Bandeja entrada de Notificaciones | 1d | 2022-09-01 | 2022-09-01 |
| 1178 | 1.4.3.2 | **Administración de Municipios** | 1d | 2022-09-01 | 2022-09-01 |
| 1179 |  | Pantalla principal | 1d | 2022-09-01 | 2022-09-01 |
| 1180 |  | Insertar | 1d | 2022-09-01 | 2022-09-01 |
| 1181 |  | Contactar Municipio | 1d | 2022-09-01 | 2022-09-01 |
| 1182 |  | Ver Detalles | 1d | 2022-09-01 | 2022-09-01 |
| 1183 |  | Configuración de Dashboard | 1d | 2022-09-01 | 2022-09-01 |
| 1184 |  | Exportación de dashboard PDF | 1d | 2022-09-01 | 2022-09-01 |
| 1185 |  | Exportación de dashboard Excel | 1d | 2022-09-01 | 2022-09-01 |
| 1186 |  | Paginación Dashboard | 1d | 2022-09-01 | 2022-09-01 |
| 1187 |  | Busqueda Dash board | 1d | 2022-09-01 | 2022-09-01 |
| 1188 |  | Ventanas emergentes de validación | 1d | 2022-09-01 | 2022-09-01 |
| 1189 |  | Modificar | 1d | 2022-09-01 | 2022-09-01 |
| 1190 |  | Subida de Archivos | 1d | 2022-09-01 | 2022-09-01 |

| ID | WBS | Task | Duration | Start | Finish |
| --- | --- | --- | --- | --- | --- |
| 1191 |  | Descarga de PDF | 1d | 2022-09-01 | 2022-09-01 |
| 1192 | 1.4.3.3 | **Administración de Avisos** | 1d | 2022-09-01 | 2022-09-01 |
| 1193 |  | Pantalla principal | 1d | 2022-09-01 | 2022-09-01 |
| 1194 |  | Agregar | 1d | 2022-09-01 | 2022-09-01 |
| 1195 |  | Eliminar | 1d | 2022-09-01 | 2022-09-01 |
| 1196 |  | Editar | 1d | 2022-09-01 | 2022-09-01 |
| 1197 |  | Configuración de Dashboard | 1d | 2022-09-01 | 2022-09-01 |
| 1198 |  | Exportación de dashboard PDF | 1d | 2022-09-01 | 2022-09-01 |
| 1199 |  | Exportación de dashboard Excel | 1d | 2022-09-01 | 2022-09-01 |
| 1200 |  | Paginación Dashboard | 1d | 2022-09-01 | 2022-09-01 |
| 1201 |  | Busqueda Dash board | 1d | 2022-09-01 | 2022-09-01 |
| 1202 |  | Ventanas emergentes de validación | 1d | 2022-09-01 | 2022-09-01 |
| 1203 | 1.4.3.4 | **Administración de Eventos** | 1d | 2022-09-01 | 2022-09-01 |
| 1204 |  | Pantalla principal | 1d | 2022-09-01 | 2022-09-01 |
| 1205 |  | Agregar | 1d | 2022-09-01 | 2022-09-01 |
| 1206 |  | Eliminar | 1d | 2022-09-01 | 2022-09-01 |
| 1207 |  | Editar | 1d | 2022-09-01 | 2022-09-01 |
| 1208 |  | Configuración de Dashboard | 1d | 2022-09-01 | 2022-09-01 |
| 1209 |  | Exportación de dashboard PDF | 1d | 2022-09-01 | 2022-09-01 |
| 1210 |  | Exportación de dashboard Excel | 1d | 2022-09-01 | 2022-09-01 |
| 1211 |  | Paginación Dashboard | 1d | 2022-09-01 | 2022-09-01 |
| 1212 |  | Busqueda Dash board | 1d | 2022-09-01 | 2022-09-01 |
| 1213 |  | Ventanas emergentes de validación | 1d | 2022-09-01 | 2022-09-01 |
| 1214 | 1.4.3.5 | **Administración de Conceptos** | 1d | 2022-09-01 | 2022-09-01 |
| 1215 |  | Pantalla principal | 1d | 2022-09-01 | 2022-09-01 |
| 1216 |  | Agregar | 1d | 2022-09-01 | 2022-09-01 |
| 1217 |  | Eliminar | 1d | 2022-09-01 | 2022-09-01 |
| 1218 |  | Editar | 1d | 2022-09-01 | 2022-09-01 |
| 1219 | 1.4.3.6 | **Administración tasa interés BANXICO** | 1d | 2022-09-01 | 2022-09-01 |
| 1220 |  | Pantalla principal | 1d | 2022-09-01 | 2022-09-01 |
| 1221 |  | Insertar | 1d | 2022-09-01 | 2022-09-01 |
| 1222 |  | Modificar | 1d | 2022-09-01 | 2022-09-01 |
| 1223 |  | Eliminar | 1d | 2022-09-01 | 2022-09-01 |
| 1224 |  | Visualizar | 1d | 2022-09-01 | 2022-09-01 |
| 1225 |  | Job de Ejecucion automatica | 1d | 2022-09-01 | 2022-09-01 |
| 1226 | 1.4.3.7 | **Anticipo Participaciones** | 1d | 2022-09-01 | 2022-09-01 |
| 1227 |  | Pantalla principal | 1d | 2022-09-01 | 2022-09-01 |
| 1228 |  | Agregar | 1d | 2022-09-01 | 2022-09-01 |
| 1229 |  | Eliminar | 1d | 2022-09-01 | 2022-09-01 |
| 1230 |  | Editar | 1d | 2022-09-01 | 2022-09-01 |
| 1231 |  | Configuración de Dashboard | 1d | 2022-09-01 | 2022-09-01 |
| 1232 |  | Exportación de dashboard PDF | 1d | 2022-09-01 | 2022-09-01 |
| 1233 |  | Exportación de dashboard Excel | 1d | 2022-09-01 | 2022-09-01 |
| 1234 |  | Paginación Dashboard | 1d | 2022-09-01 | 2022-09-01 |
| 1235 |  | Busqueda Dash board | 1d | 2022-09-01 | 2022-09-01 |
| 1236 |  | Ventanas emergentes de validación | 1d | 2022-09-01 | 2022-09-01 |
| 1237 |  | Carga masiva | 1d | 2022-09-01 | 2022-09-01 |
| 1238 |  | Copiar información del mes anterior | 1d | 2022-09-01 | 2022-09-01 |
| 1239 |  | Proceso de Ajuste | 1d | 2022-09-01 | 2022-09-01 |
| 1240 |  | Proceso de Enviar | 1d | 2022-09-01 | 2022-09-01 |
| 1241 |  | Track | 1d | 2022-09-01 | 2022-09-01 |
| 1242 | 1.4.3.8 | **Solicitud de Recursos** | 1d | 2022-09-01 | 2022-09-01 |
| 1243 |  | Configuración de Dashboard | 1d | 2022-09-01 | 2022-09-01 |
| 1244 |  | Exportación de dashboard PDF | 1d | 2022-09-01 | 2022-09-01 |
| 1245 |  | Exportación de dashboard Excel | 1d | 2022-09-01 | 2022-09-01 |
| 1246 |  | Paginación Dashboard | 1d | 2022-09-01 | 2022-09-01 |
| 1247 |  | Busqueda Dash board | 1d | 2022-09-01 | 2022-09-01 |
| 1248 |  | Ventanas emergentes de validación | 1d | 2022-09-01 | 2022-09-01 |
| 1249 |  | Carga de documento | 1d | 2022-09-01 | 2022-09-01 |
| 1250 |  | Copiar información del mes anterior | 1d | 2022-09-01 | 2022-09-01 |
| 1251 |  | Dashboard de Solicitud de Recursos sección Solicitudes Pendientes | 1d | 2022-09-01 | 2022-09-01 |
| 1252 |  | Dashboard de Solicitud de Recursos sección Solicitudes en trámite | 1d | 2022-09-01 | 2022-09-01 |
| 1253 |  | Track | 1d | 2022-09-01 | 2022-09-01 |
| 1254 | 1.4.3.9 | **Dashboard Participaciones Federales** | 1d | 2022-09-01 | 2022-09-01 |
| 1255 |  | Pantalla principal | 1d | 2022-09-01 | 2022-09-01 |
| 1256 |  | Busqueda de Mes | 1d | 2022-09-01 | 2022-09-01 |
| 1257 |  | Busqueda de Año | 1d | 2022-09-01 | 2022-09-01 |
| 1258 |  | Busqueda general | 1d | 2022-09-01 | 2022-09-01 |
| 1259 |  | Editar | 1d | 2022-09-01 | 2022-09-01 |
| 1260 |  | Proceso de Autorizar | 1d | 2022-09-01 | 2022-09-01 |

| ID | WBS | Task | Duration | Start | Finish |
| --- | --- | --- | --- | --- | --- |
| 1261 |  | Proceso de Enviar | 1d | 2022-09-01 | 2022-09-01 |
| 1262 |  | Track | 1d | 2022-09-01 | 2022-09-01 |
| 1263 |  | Ventanas emergentes de validación | 1d | 2022-09-01 | 2022-09-01 |
| 1264 | 1.4.3.10 | **Dashboard ISN** | 1d | 2022-09-01 | 2022-09-01 |
| 1265 |  | Pantalla principal | 1d | 2022-09-01 | 2022-09-01 |
| 1266 |  | Busqueda de Mes | 1d | 2022-09-01 | 2022-09-01 |
| 1267 |  | Busqueda de Año | 1d | 2022-09-01 | 2022-09-01 |
| 1268 |  | Busqueda | 1d | 2022-09-01 | 2022-09-01 |
| 1269 |  | Proceso de Autorización | 1d | 2022-09-01 | 2022-09-01 |
| 1270 |  | Proceso de Envío | 1d | 2022-09-01 | 2022-09-01 |
| 1271 |  | Track | 1d | 2022-09-01 | 2022-09-01 |
| 1272 |  | Ventanas emergentes de validación | 1d | 2022-09-01 | 2022-09-01 |
| 1273 | 1.4.3.11 | **Dashboard ICV** | 1d | 2022-09-01 | 2022-09-01 |
| 1274 |  | Pantalla principal | 1d | 2022-09-01 | 2022-09-01 |
| 1275 |  | Busqueda de Mes | 1d | 2022-09-01 | 2022-09-01 |
| 1276 |  | Busqueda de Año | 1d | 2022-09-01 | 2022-09-01 |
| 1277 |  | Busqueda | 1d | 2022-09-01 | 2022-09-01 |
| 1278 |  | Proceso de Autorización | 1d | 2022-09-01 | 2022-09-01 |
| 1279 |  | Proceso de Envío | 1d | 2022-09-01 | 2022-09-01 |
| 1280 |  | Track | 1d | 2022-09-01 | 2022-09-01 |
| 1281 |  | Ventanas emergentes de validación | 1d | 2022-09-01 | 2022-09-01 |
| 1282 | 1.4.3.12 | **Dashboard Fondos FORTAMUN** | 1d | 2022-09-01 | 2022-09-01 |
| 1283 |  | Pantalla principal | 1d | 2022-09-01 | 2022-09-01 |
| 1284 |  | Busqueda de Mes | 1d | 2022-09-01 | 2022-09-01 |
| 1285 |  | Busqueda de Año | 1d | 2022-09-01 | 2022-09-01 |
| 1286 |  | Busqueda | 1d | 2022-09-01 | 2022-09-01 |
| 1287 |  | Proceso de Autorización | 1d | 2022-09-01 | 2022-09-01 |
| 1288 |  | Proceso de Envío | 1d | 2022-09-01 | 2022-09-01 |
| 1289 |  | Track | 1d | 2022-09-01 | 2022-09-01 |
| 1290 |  | Ventanas emergentes de validación | 1d | 2022-09-01 | 2022-09-01 |
| 1291 | 1.4.3.13 | **Dashboard Fondos FISM** | 1d | 2022-09-01 | 2022-09-01 |
| 1292 |  | Pantalla principal | 1d | 2022-09-01 | 2022-09-01 |
| 1293 |  | Busqueda de Mes | 1d | 2022-09-01 | 2022-09-01 |
| 1294 |  | Busqueda de Año | 1d | 2022-09-01 | 2022-09-01 |
| 1295 |  | Busqueda | 1d | 2022-09-01 | 2022-09-01 |
| 1296 |  | Proceso de Autorización | 1d | 2022-09-01 | 2022-09-01 |
| 1297 |  | Proceso de Envío | 1d | 2022-09-01 | 2022-09-01 |
| 1298 |  | Track | 1d | 2022-09-01 | 2022-09-01 |
| 1299 |  | Ventanas emergentes de validación | 1d | 2022-09-01 | 2022-09-01 |
| 1300 | 1.4.3.14 | **Administración de Fondo ultra crecimiento Zona metropolitana y no Metropolitana** | 1d | 2022-09-01 | 2022-09-01 |
| 1301 |  | Pantalla principal | 1d | 2022-09-01 | 2022-09-01 |
| 1302 |  | Filtro mes | 1d | 2022-09-01 | 2022-09-01 |
| 1303 |  | Filtro año | 1d | 2022-09-01 | 2022-09-01 |
| 1304 |  | Filtro busqueda | 1d | 2022-09-01 | 2022-09-01 |
| 1305 |  | Configuración de Dashboard | 1d | 2022-09-01 | 2022-09-01 |
| 1306 |  | Exportación de dashboard PDF | 1d | 2022-09-01 | 2022-09-01 |
| 1307 |  | Exportación de dashboard Excel | 1d | 2022-09-01 | 2022-09-01 |
| 1308 |  | Paginación Dashboard | 1d | 2022-09-01 | 2022-09-01 |
| 1309 |  | Busqueda Dash board | 1d | 2022-09-01 | 2022-09-01 |
| 1310 |  | Ventanas emergentes de Autorizar por municipio | 1d | 2022-09-01 | 2022-09-01 |
| 1311 |  | Ventanas emergentes de Track por municipio | 1d | 2022-09-01 | 2022-09-01 |
| 1312 |  | Ventanas emergentes de detalles por municipio | 1d | 2022-09-01 | 2022-09-01 |
| 1313 |  | Ventanas emergentes de Adjuntar oficio por municipio | 1d | 2022-09-01 | 2022-09-01 |
| 1314 |  | Ventana repositorio de oficios por municipio | 1d | 2022-09-01 | 2022-09-01 |
| 1315 |  | boton borrar oficio | 1d | 2022-09-01 | 2022-09-01 |
| 1316 |  | boton configurar oficio | 1d | 2022-09-01 | 2022-09-01 |
| 1317 | 1.4.3.15 | **Administración de Fondo descentralizado Zona Metropolitana y no Metropolitana** | 1d | 2022-09-01 | 2022-09-01 |
| 1318 |  | Pantalla principal | 1d | 2022-09-01 | 2022-09-01 |
| 1319 |  | Filtro mes | 1d | 2022-09-01 | 2022-09-01 |
| 1320 |  | Filtro año | 1d | 2022-09-01 | 2022-09-01 |
| 1321 |  | Filtro busqueda | 1d | 2022-09-01 | 2022-09-01 |
| 1322 |  | Configuración de Dashboard | 1d | 2022-09-01 | 2022-09-01 |
| 1323 |  | Exportación de dashboard PDF | 1d | 2022-09-01 | 2022-09-01 |
| 1324 |  | Exportación de dashboard Excel | 1d | 2022-09-01 | 2022-09-01 |
| 1325 |  | Paginación Dashboard | 1d | 2022-09-01 | 2022-09-01 |
| 1326 |  | Busqueda Dash board | 1d | 2022-09-01 | 2022-09-01 |
| 1327 |  | Ventanas emergentes de Autorizar por municipio | 1d | 2022-09-01 | 2022-09-01 |
| 1328 |  | Ventanas emergentes de Track por municipio | 1d | 2022-09-01 | 2022-09-01 |
| 1329 |  | Ventanas emergentes de detalles por municipio | 1d | 2022-09-01 | 2022-09-01 |
| 1330 |  | Ventanas emergentes de Adjuntar oficio por municipio | 1d | 2022-09-01 | 2022-09-01 |

| ID | WBS | Task | Duration | Start | Finish | Complete |
| --- | --- | --- | --- | --- | --- | --- |
| 1331 |  | Ventana repositorio de oficios por municipio | 1d | 2022-09-01 | 2022-09-01 |  |
| 1332 |  | boton borrar oficio | 1d | 2022-09-01 | 2022-09-01 |  |
| 1333 |  | boton configurar oficio | 1d | 2022-09-01 | 2022-09-01 |  |
| 1334 | 1.4.3.16 | **Administración de Fondo de seguridad para municipios Metropolitanos y no Metropolitanos** | 1d | 2022-09-01 | 2022-09-01 |  |
| 1335 |  | Pantalla principal | 1d | 2022-09-01 | 2022-09-01 |  |
| 1336 |  | Filtro mes | 1d | 2022-09-01 | 2022-09-01 |  |
| 1337 |  | Filtro año | 1d | 2022-09-01 | 2022-09-01 |  |
| 1338 |  | Filtro busqueda | 1d | 2022-09-01 | 2022-09-01 |  |
| 1339 |  | Configuración de Dashboard | 1d | 2022-09-01 | 2022-09-01 |  |
| 1340 |  | Exportación de dashboard PDF | 1d | 2022-09-01 | 2022-09-01 |  |
| 1341 |  | Exportación de dashboard Excel | 1d | 2022-09-01 | 2022-09-01 |  |
| 1342 |  | Paginación Dashboard | 1d | 2022-09-01 | 2022-09-01 |  |
| 1343 |  | Busqueda Dash board | 1d | 2022-09-01 | 2022-09-01 |  |
| 1344 |  | Ventanas emergentes de Autorizar | 1d | 2022-09-01 | 2022-09-01 |  |
| 1345 |  | Ventanas emergentes de Enviar | 1d | 2022-09-01 | 2022-09-01 |  |
| 1346 |  | Ventanas emergentes de Track | 1d | 2022-09-01 | 2022-09-01 |  |
| 1347 | 1.4.3.17 | **Administración de Fondo de desarrollo municipal Metropolitanos y no Metropolitanos** | 1d | 2022-09-01 | 2022-09-01 |  |
| 1348 |  | Pantalla principal | 1d | 2022-09-01 | 2022-09-01 |  |
| 1349 |  | Filtro mes | 1d | 2022-09-01 | 2022-09-01 |  |
| 1350 |  | Filtro año | 1d | 2022-09-01 | 2022-09-01 |  |
| 1351 |  | Filtro busqueda | 1d | 2022-09-01 | 2022-09-01 |  |
| 1352 |  | Configuración de Dashboard | 1d | 2022-09-01 | 2022-09-01 |  |
| 1353 |  | Exportación de dashboard PDF | 1d | 2022-09-01 | 2022-09-01 |  |
| 1354 |  | Exportación de dashboard Excel | 1d | 2022-09-01 | 2022-09-01 |  |
| 1355 |  | Paginación Dashboard | 1d | 2022-09-01 | 2022-09-01 |  |
| 1356 |  | Busqueda Dash board | 1d | 2022-09-01 | 2022-09-01 |  |
| 1357 |  | Ventanas emergentes de Autorizar | 1d | 2022-09-01 | 2022-09-01 |  |
| 1358 |  | Ventanas emergentes de Enviar | 1d | 2022-09-01 | 2022-09-01 |  |
| 1359 |  | Ventanas emergentes de Track | 1d | 2022-09-01 | 2022-09-01 |  |
| 1360 |  | Módulo contacto con municipios | 1d | 2022-09-01 | 2022-09-01 |  |
| 1361 |  | Generador de reportes | 1d | 2022-09-01 | 2022-09-01 |  |
| 1362 |  | Generador de Estadísticas | 1d | 2022-09-01 | 2022-09-01 |  |
| 1363 |  | Dashboard Calendario | 1d | 2022-09-01 | 2022-09-01 |  |
| 1364 | 1.4.4 | **Módulo DAF** | 52.75d | 2022-09-01 | 2022-11-14 |  |
| 1365 | 1.4.4.1 | **Dashboard Perfil DAF** | 1d | 2022-09-01 | 2022-09-01 |  |
| 1366 |  | Pantalla Perfil | 1d | 2022-09-01 | 2022-09-01 |  |
| 1367 |  | Pop up Notificaciones | 1d | 2022-09-01 | 2022-09-01 |  |
| 1368 |  | Contador de Notificaciones (Icono campanita) | 1d | 2022-09-01 | 2022-09-01 |  |
| 1369 |  | Bandeja entrada de Notificaciones | 1d | 2022-09-01 | 2022-09-01 |  |
| 1370 |  | Carga de Speis | 1d | 2022-09-01 | 2022-09-01 |  |
| 1371 |  | Generación de Estadísticas | 1d | 2022-09-01 | 2022-09-01 |  |
| 1372 |  | Generacion de graficas | 1d | 2022-09-01 | 2022-09-01 |  |
| 1373 | 1.4.5 | **Módulo DCCP** | 52.75d | 2022-09-01 | 2022-11-14 |  |
| 1374 | 1.4.5.1 | **Dashboard Perfil DCCP** | 1d | 2022-09-01 | 2022-09-01 |  |
| 1375 |  | Bloqueo de Sesión | 1d | 2022-09-01 | 2022-09-01 |  |
| 1376 |  | Perfil | 1d | 2022-09-01 | 2022-09-01 |  |
| 1377 |  | Pop up Notificaciones | 1d | 2022-09-01 | 2022-09-01 |  |
| 1378 |  | Contador de Notificaciones (Icono campanita) | 1d | 2022-09-01 | 2022-09-01 |  |
| 1379 |  | Bandeja entrada de Notificaciones | 1d | 2022-09-01 | 2022-09-01 |  |
| 1380 |  | Configuración de Consulta | 1d | 2022-09-01 | 2022-09-01 |  |
| 1381 | 1.4.6 | **Módulo DPCP** | 52.75d | 2022-09-01 | 2022-11-14 |  |
| 1382 | 1.4.6.1 | **Dashboard Perfil DPCP** | 1d | 2022-09-01 | 2022-09-01 |  |
| 1383 |  | Pantalla Perfil | 1d | 2022-09-01 | 2022-09-01 |  |
| 1384 |  | Pop up Notificaciones | 1d | 2022-09-01 | 2022-09-01 |  |
| 1385 |  | Contador de Notificaciones (Icono campanita) | 1d | 2022-09-01 | 2022-09-01 |  |
| 1386 |  | Bandeja entrada de Notificaciones | 1d | 2022-09-01 | 2022-09-01 |  |
| 1387 |  | Asignación de Presupuesto | 1d | 2022-09-01 | 2022-09-01 |  |
| 1388 |  | Generación de Estadísticas | 1d | 2022-09-01 | 2022-09-01 |  |
| 1389 |  | Generación de graficas | 1d | 2022-09-01 | 2022-09-01 |  |
| 1390 | 1.4.7 | **Módulo Municipios** | 52.75d | 2022-09-01 A | 2022-11-14 | 3% |
| 1391 | 1.4.7.1 | **Base** | 1d | 2022-09-01 A | 2022-09-01 | 40% |
| 1392 |  | Buzon | 1d | 2022-09-01 | 2022-09-01 |  |
| 1393 |  | Login | 1d | 2022-09-01 A | 2022-09-01 A | 100% |
| 1394 |  | Logout | 1d | 2022-09-01 A | 2022-09-01 A | 100% |
| 1395 |  | Bloqueo de Sesión | 1d | 2022-09-01 | 2022-09-01 |  |
| 1396 |  | Perfil | 1d | 2022-09-01 | 2022-09-01 |  |
| 1397 | 1.4.7.2 | **Dashboard Inicio** | 1d | 2022-09-01 | 2022-09-01 |  |
| 1398 |  | Pantalla Principal | 1d | 2022-09-01 | 2022-09-01 |  |
| 1399 |  | Configuración de Dashboard | 1d | 2022-09-01 | 2022-09-01 |  |
| 1400 |  | Ventanas emergentes de validación | 1d | 2022-09-01 | 2022-09-01 |  |

| ID | WBS | Task | Duration | Start | Finish |
| --- | --- | --- | --- | --- | --- |
| 1401 |  | Ruleta imágenes | 1d | 2022-09-01 | 2022-09-01 |
| 1402 |  | Mensaje de Bienvenida | 1d | 2022-09-01 | 2022-09-01 |
| 1403 | 1.4.7.3 | **Mis Cuentas** | 1d | 2022-09-01 | 2022-09-01 |
| 1404 |  | Pantalla Principal | 1d | 2022-09-01 | 2022-09-01 |
| 1405 |  | Agregar | 1d | 2022-09-01 | 2022-09-01 |
| 1406 |  | Editar | 1d | 2022-09-01 | 2022-09-01 |
| 1407 |  | Eliminar | 1d | 2022-09-01 | 2022-09-01 |
| 1408 |  | Configuración de Dashboard | 1d | 2022-09-01 | 2022-09-01 |
| 1409 |  | Exportación de dashboard PDF | 1d | 2022-09-01 | 2022-09-01 |
| 1410 |  | Exportación de dashboard Excel | 1d | 2022-09-01 | 2022-09-01 |
| 1411 |  | Paginación Dashboard | 1d | 2022-09-01 | 2022-09-01 |
| 1412 |  | Busqueda Dash board | 1d | 2022-09-01 | 2022-09-01 |
| 1413 |  | Ventanas emergentes de validación | 1d | 2022-09-01 | 2022-09-01 |
| 1414 | 1.4.7.4 | **Solicitud de Recursos** | 1d | 2022-09-01 | 2022-09-01 |
| 1415 |  | Pantalla Principal | 1d | 2022-09-01 | 2022-09-01 |
| 1416 |  | Agregar | 1d | 2022-09-01 | 2022-09-01 |
| 1417 |  | Editar | 1d | 2022-09-01 | 2022-09-01 |
| 1418 |  | Eliminar | 1d | 2022-09-01 | 2022-09-01 |
| 1419 |  | Configuración de Dashboard | 1d | 2022-09-01 | 2022-09-01 |
| 1420 |  | Exportación de dashboard PDF | 1d | 2022-09-01 | 2022-09-01 |
| 1421 |  | Exportación de dashboard Excel | 1d | 2022-09-01 | 2022-09-01 |
| 1422 |  | Paginación Dashboard | 1d | 2022-09-01 | 2022-09-01 |
| 1423 |  | Busqueda Dash board | 1d | 2022-09-01 | 2022-09-01 |
| 1424 |  | Ventanas emergentes de validación | 1d | 2022-09-01 | 2022-09-01 |
| 1425 |  | Boton Detalles | 1d | 2022-09-01 | 2022-09-01 |
| 1426 | 1.4.7.5 | **Dashboard Ayuda** | 1d | 2022-09-01 | 2022-09-01 |
| 1427 |  | Pantalla principal | 1d | 2022-09-01 | 2022-09-01 |
| 1428 |  | Configuracion de Enlaces | 1d | 2022-09-01 | 2022-09-01 |
| 1429 | 1.4.7.6 | **Recepcion de Recursos Participaciones Federales** | 1d | 2022-09-01 | 2022-09-01 |
| 1430 |  | Pantalla Principal | 1d | 2022-09-01 | 2022-09-01 |
| 1431 |  | Agregar | 1d | 2022-09-01 | 2022-09-01 |
| 1432 |  | Editar | 1d | 2022-09-01 | 2022-09-01 |
| 1433 |  | Eliminar | 1d | 2022-09-01 | 2022-09-01 |
| 1434 |  | Configuración de Dashboard | 1d | 2022-09-01 | 2022-09-01 |
| 1435 |  | Exportación de dashboard PDF | 1d | 2022-09-01 | 2022-09-01 |
| 1436 |  | Exportación de dashboard Excel | 1d | 2022-09-01 | 2022-09-01 |
| 1437 |  | Paginación Dashboard | 1d | 2022-09-01 | 2022-09-01 |
| 1438 |  | Busqueda Dash board | 1d | 2022-09-01 | 2022-09-01 |
| 1439 |  | Ventanas emergentes de validación | 1d | 2022-09-01 | 2022-09-01 |
| 1440 | 1.4.7.7 | **Recepcion de Recursos Participaciones Estatales** | 1d | 2022-09-01 | 2022-09-01 |
| 1441 |  | Pantalla Principal | 1d | 2022-09-01 | 2022-09-01 |
| 1442 |  | Agregar | 1d | 2022-09-01 | 2022-09-01 |
| 1443 |  | Editar | 1d | 2022-09-01 | 2022-09-01 |
| 1444 |  | Eliminar | 1d | 2022-09-01 | 2022-09-01 |
| 1445 |  | Configuración de Dashboard | 1d | 2022-09-01 | 2022-09-01 |
| 1446 |  | Exportación de dashboard PDF | 1d | 2022-09-01 | 2022-09-01 |
| 1447 |  | Exportación de dashboard Excel | 1d | 2022-09-01 | 2022-09-01 |
| 1448 |  | Paginación Dashboard | 1d | 2022-09-01 | 2022-09-01 |
| 1449 |  | Busqueda Dash board | 1d | 2022-09-01 | 2022-09-01 |
| 1450 |  | Ventanas emergentes de validación | 1d | 2022-09-01 | 2022-09-01 |
| 1451 | 1.4.7.8 | **Recepcion de Recursos Aportaciones Federales** | 1d | 2022-09-01 | 2022-09-01 |
| 1452 |  | Pantalla Principal | 1d | 2022-09-01 | 2022-09-01 |
| 1453 |  | Agregar | 1d | 2022-09-01 | 2022-09-01 |
| 1454 |  | Editar | 1d | 2022-09-01 | 2022-09-01 |
| 1455 |  | Eliminar | 1d | 2022-09-01 | 2022-09-01 |
| 1456 |  | Configuración de Dashboard | 1d | 2022-09-01 | 2022-09-01 |
| 1457 |  | Exportación de dashboard PDF | 1d | 2022-09-01 | 2022-09-01 |
| 1458 |  | Exportación de dashboard Excel | 1d | 2022-09-01 | 2022-09-01 |
| 1459 |  | Paginación Dashboard | 1d | 2022-09-01 | 2022-09-01 |
| 1460 |  | Busqueda Dash board | 1d | 2022-09-01 | 2022-09-01 |
| 1461 |  | Ventanas emergentes de validación | 1d | 2022-09-01 | 2022-09-01 |
| 1462 | 1.4.7.9 | **Recepcion de Recursos Aportaciones Estatales** | 1d | 2022-09-01 | 2022-09-01 |
| 1463 |  | Pantalla Principal | 1d | 2022-09-01 | 2022-09-01 |
| 1464 |  | Agregar | 1d | 2022-09-01 | 2022-09-01 |
| 1465 |  | Editar | 1d | 2022-09-01 | 2022-09-01 |
| 1466 |  | Eliminar | 1d | 2022-09-01 | 2022-09-01 |
| 1467 |  | Configuración de Dashboard | 1d | 2022-09-01 | 2022-09-01 |
| 1468 |  | Exportación de dashboard PDF | 1d | 2022-09-01 | 2022-09-01 |
| 1469 |  | Exportación de dashboard Excel | 1d | 2022-09-01 | 2022-09-01 |
| 1470 |  | Paginación Dashboard | 1d | 2022-09-01 | 2022-09-01 |

| ID | WBS | Task | Duration | Start | Finish |
| --- | --- | --- | --- | --- | --- |
| 1471 |  | Busqueda Dash board | 1d | 2022-09-01 | 2022-09-01 |
| 1472 |  | Ventanas emergentes de validación | 1d | 2022-09-01 | 2022-09-01 |
| 1473 | 1.4.8 | **Módulo OPD** | 52.75d | 2022-09-01 | 2022-11-14 |
| 1474 | 1.4.8.1 | **Base** | 1d | 2022-09-01 | 2022-09-01 |
| 1475 |  | Perfil | 1d | 2022-09-01 | 2022-09-01 |
| 1476 |  | Pop up Notificaciones | 1d | 2022-09-01 | 2022-09-01 |
| 1477 |  | Contador de Notificaciones (Icono campanita) | 1d | 2022-09-01 | 2022-09-01 |
| 1478 |  | Bandeja entrada de Notificaciones | 1d | 2022-09-01 | 2022-09-01 |
| 1479 | 1.4.8.2 | **Dashboard mis cuentas** | 1d | 2022-09-01 | 2022-09-01 |
| 1480 |  | Pantalla Principal | 1d | 2022-09-01 | 2022-09-01 |
| 1481 |  | Configuración de Dashboard | 1d | 2022-09-01 | 2022-09-01 |
| 1482 |  | Exportación de dashboard PDF | 1d | 2022-09-01 | 2022-09-01 |
| 1483 |  | Exportación de dashboard Excel | 1d | 2022-09-01 | 2022-09-01 |
| 1484 |  | Paginación Dashboard | 1d | 2022-09-01 | 2022-09-01 |
| 1485 |  | Busqueda Dashboard | 1d | 2022-09-01 | 2022-09-01 |
| 1486 |  | Agregar | 1d | 2022-09-01 | 2022-09-01 |
| 1487 |  | Editar | 1d | 2022-09-01 | 2022-09-01 |
| 1488 |  | Eliminar | 1d | 2022-09-01 | 2022-09-01 |
| 1489 |  | Ventanas emergentes de validación | 1d | 2022-09-01 | 2022-09-01 |
| 1490 | 1.4.8.3 | **Dashboard Facturación** | 1d | 2022-09-01 | 2022-09-01 |
| 1491 |  | Pantalla Principal | 1d | 2022-09-01 | 2022-09-01 |
| 1492 |  | Configuración de Dashboard | 1d | 2022-09-01 | 2022-09-01 |
| 1493 |  | Exportación de dashboard PDF | 1d | 2022-09-01 | 2022-09-01 |
| 1494 |  | Exportación de dashboard Excel | 1d | 2022-09-01 | 2022-09-01 |
| 1495 |  | Paginación Dashboard | 1d | 2022-09-01 | 2022-09-01 |
| 1496 |  | Busqueda Dashboard | 1d | 2022-09-01 | 2022-09-01 |
| 1497 |  | Ventanas de visualización de detalle | 1d | 2022-09-01 | 2022-09-01 |
| 1498 |  | Busqueda por Año | 1d | 2022-09-01 | 2022-09-01 |
| 1499 | 1.4.8.4 | **Dashboard Solicitud de recursos** | 1d | 2022-09-01 | 2022-09-01 |
| 1500 |  | Pantalla Principal | 1d | 2022-09-01 | 2022-09-01 |
| 1501 |  | Configuración de Dashboard | 1d | 2022-09-01 | 2022-09-01 |
| 1502 |  | Exportación de dashboard PDF | 1d | 2022-09-01 | 2022-09-01 |
| 1503 |  | Exportación de dashboard Excel | 1d | 2022-09-01 | 2022-09-01 |
| 1504 |  | Paginación Dashboard | 1d | 2022-09-01 | 2022-09-01 |
| 1505 | 1.4.8.5 | **Busqueda Dashboard** | 1d | 2022-09-01 | 2022-09-01 |
| 1506 |  | Pantalla Principal | 1d | 2022-09-01 | 2022-09-01 |
| 1507 |  | Agregar | 1d | 2022-09-01 | 2022-09-01 |
| 1508 |  | Editar | 1d | 2022-09-01 | 2022-09-01 |
| 1509 |  | Eliminar | 1d | 2022-09-01 | 2022-09-01 |
| 1510 |  | Ventanas emergentes de validación | 1d | 2022-09-01 | 2022-09-01 |
| 1511 |  | Busqueda por Año | 1d | 2022-09-01 | 2022-09-01 |
| 1512 |  | Carga de documentos | 1d | 2022-09-01 | 2022-09-01 |
| 1513 |  | PDF generado por la solicitud de recursos | 1d | 2022-09-01 | 2022-09-01 |
| 1514 | 1.4.8.6 | **Dashboard menu preguntas frecuentes** | 1d | 2022-09-01 | 2022-09-01 |
| 1515 |  | Pantalla Principal | 1d | 2022-09-01 | 2022-09-01 |
| 1516 |  | Configuracion de dashboard | 1d | 2022-09-01 | 2022-09-01 |
| 1517 | 1.4.8.7 | **Dashboard Recepción de recursos** | 1d | 2022-09-01 | 2022-09-01 |
| 1518 |  | Pantalla Principal | 1d | 2022-09-01 | 2022-09-01 |
| 1519 |  | Configuracion de dashboard | 1d | 2022-09-01 | 2022-09-01 |
| 1520 |  | Exportación de dashboard PDF | 1d | 2022-09-01 | 2022-09-01 |
| 1521 |  | Exportación de dashboard Excel | 1d | 2022-09-01 | 2022-09-01 |
| 1522 |  | Paginación Dashboard | 1d | 2022-09-01 | 2022-09-01 |
| 1523 |  | Busqueda Dashboard | 1d | 2022-09-01 | 2022-09-01 |
| 1524 |  | Subida de Archivo | 1d | 2022-09-01 | 2022-09-01 |
| 1525 | 1.4.8.8 | **Dashboard Recepción de recursos sección participaciones estatales** | 1d | 2022-09-01 | 2022-09-01 |
| 1526 |  | Pantalla Principal | 1d | 2022-09-01 | 2022-09-01 |
| 1527 |  | Configuracion de dashboard | 1d | 2022-09-01 | 2022-09-01 |
| 1528 |  | Exportación de dashboard PDF | 1d | 2022-09-01 | 2022-09-01 |
| 1529 |  | Exportación de dashboard Excel | 1d | 2022-09-01 | 2022-09-01 |
| 1530 |  | Paginación Dashboard | 1d | 2022-09-01 | 2022-09-01 |
| 1531 |  | Busqueda Dashboard | 1d | 2022-09-01 | 2022-09-01 |
| 1532 |  | Subida de Archivo | 1d | 2022-09-01 | 2022-09-01 |
| 1533 | 1.4.8.9 | **Dashboard Recepción de recursos sección aportaciones federales** | 1d | 2022-09-01 | 2022-09-01 |
| 1534 |  | Pantalla Principal | 1d | 2022-09-01 | 2022-09-01 |
| 1535 |  | Configuracion de dashboard | 1d | 2022-09-01 | 2022-09-01 |
| 1536 |  | Exportación de dashboard PDF | 1d | 2022-09-01 | 2022-09-01 |
| 1537 |  | Exportación de dashboard Excel | 1d | 2022-09-01 | 2022-09-01 |
| 1538 |  | Paginación Dashboard | 1d | 2022-09-01 | 2022-09-01 |
| 1539 |  | Busqueda Dashboard | 1d | 2022-09-01 | 2022-09-01 |
| 1540 |  | Subida de Archivo | 1d | 2022-09-01 | 2022-09-01 |

| ID | WBS | Task | Duration | Start | Finish |
| --- | --- | --- | --- | --- | --- |
| 1541 | 1.4.8.10 | **Dashboard Recepción de recursos sección aportaciones estatales** | 1d | 2022-09-01 | 2022-09-01 |
| 1542 |  | Pantalla Principal | 1d | 2022-09-01 | 2022-09-01 |
| 1543 |  | Configuracion de dashboard | 1d | 2022-09-01 | 2022-09-01 |
| 1544 |  | Exportación de dashboard PDF | 1d | 2022-09-01 | 2022-09-01 |
| 1545 |  | Exportación de dashboard Excel | 1d | 2022-09-01 | 2022-09-01 |
| 1546 |  | Paginación Dashboard | 1d | 2022-09-01 | 2022-09-01 |
| 1547 |  | Busqueda Dashboard | 1d | 2022-09-01 | 2022-09-01 |
| 1548 |  | Subida de Archivo | 1d | 2022-09-01 | 2022-09-01 |
| 1549 |  | Fin | 0d | 2022-11-16 | 2022-11-16 |

## Version 2 (saved 2022-09-20, file PROJECT PDRMyE.mpp)

Note of the change: Create PROJECT PDRMyE.mpp

Last finish 2022-11-16 → 2023-03-31 (+135d). Complete tasks 148 → 171.

Added:

| ID | Task | Duration | Start | Finish | Predecessors | Constraint |
| --- | --- | --- | --- | --- | --- | --- |
| 5 | **sprint 1** | 24d | 2022-06-15 A | 2022-07-18 A |  |  |
| 19 | **sprint 2** | 11d | 2022-06-20 A | 2022-07-04 A |  |  |
| 20 | Estructura de trabajo y organigrama | 1d | 2022-06-20 A | 2022-06-20 A |  |  |
| 21 | Muestra de avances | 1d | 2022-06-21 A | 2022-06-21 A |  |  |
| 26 | Retroalimentacion DAMOP | 1d | 2022-06-28 A | 2022-06-28 A |  |  |
| 27 | Retroalimentacion DAF | 1d | 2022-06-29 A | 2022-06-29 A |  |  |
| 28 | Retroalimentacion DCCP | 1d | 2022-06-30 A | 2022-06-30 A |  |  |
| 29 | Retroalimentacion DPCP | 1d | 2022-07-01 A | 2022-07-01 A |  |  |
| 31 | **sprint 3** | 32d | 2022-07-05 A | 2022-08-17 A |  |  |
| 41 | Propuesta de arquitectura de micro sitios | 1d | 2022-07-18 A | 2022-07-18 A |  |  |
| 46 | Revisioin de avances de maquetas CPH y DAMOP | 1d | 2022-07-25 A | 2022-07-25 A |  |  |
| 49 | Retroalimentacion de maquetado con DAMOP | 1d | 2022-07-28 A | 2022-07-28 A |  |  |
| 50 | Retroalimentacion de maquetado con DAMOP | 1d | 2022-07-29 A | 2022-07-29 A |  |  |
| 54 | Avance de Maqueta Exportacion de Dashboard en PDF | 1d | 2022-08-04 A | 2022-08-04 A |  |  |
| 55 | Avance de Maqueta Exportacion de Dashboard en Excel | 1d | 2022-08-05 A | 2022-08-05 A |  |  |
| 56 | Avance de Maqueta Paginacion de Dashboard | 1d | 2022-08-08 A | 2022-08-08 A |  |  |
| 57 | Levantamiento de Generalidades Técnicas MUNICIPIOS | 1d | 2022-08-09 A | 2022-08-09 A |  |  |
| 58 | Levantamiento de Generalidades Técnicas OPDs | 1d | 2022-08-10 A | 2022-08-10 A |  |  |
| 59 | Avance de Maqueta | 1d | 2022-08-11 A | 2022-08-11 A |  |  |
| 60 | Configuración de Maqueta Municipios | 1d | 2022-08-12 A | 2022-08-12 A |  |  |
| 61 | Reunion_AVANCES_Semanal | 1d | 2022-08-15 A | 2022-08-15 A |  |  |
| 62 | Levantamiento de Generalidades Técnicas OPDs | 1d | 2022-08-16 A | 2022-08-16 A |  |  |
| 63 | Levantamiento de Generalidades Técnicas OPDs | 1d | 2022-08-17 A | 2022-08-17 A |  |  |
| 64 | **Fase 2 Diseño y Desarrollo** | 160d | 2022-07-15 A | 2023-02-23 | 3 |  |
| 66 | **sprint 4** | 104d | 2022-07-15 A | 2022-12-07 |  |  |
| 95 | **sprint 5** | 88d | 2022-08-18 | 2022-12-19 |  |  |
| 97 | **Coeficientes** | 88d | 2022-07-15 | 2022-11-15 |  |  |
| 98 | Pantalla principal | 88d | 2022-07-15 | 2022-11-15 |  |  |
| 99 | Agregar | 88d | 2022-07-15 | 2022-11-15 |  |  |
| 100 | Eliminar | 88d | 2022-07-15 | 2022-11-15 |  |  |
| 101 | Editar | 88d | 2022-07-15 | 2022-11-15 |  |  |
| 102 | Configuración de Dashboard | 88d | 2022-07-15 | 2022-11-15 |  |  |
| 103 | Exportación de dashboard PDF | 88d | 2022-07-15 | 2022-11-15 |  |  |
| 104 | Exportación de dashboard Excel | 88d | 2022-07-15 | 2022-11-15 |  |  |
| 105 | Paginación Dashboard | 88d | 2022-07-15 | 2022-11-15 |  |  |
| 106 | Busqueda Dash board | 88d | 2022-07-15 | 2022-11-15 |  |  |
| 107 | Ventanas emergentes de validación | 88d | 2022-07-15 | 2022-11-15 |  |  |
| 108 | **Bienvenida** | 88d | 2022-07-15 | 2022-11-15 |  |  |
| 109 | Configuracion de bienvenida | 88d | 2022-07-15 | 2022-11-15 |  |  |
| 413 | Carga configuración inicial Fondo Descentralizado | 88d | 2022-07-15 | 2022-11-15 |  | start no earlier than 2022-07-15 |
| 457 | **sprint 6** | 112d | 2022-08-18 | 2023-01-20 |  |  |
| 529 | Pantalla principal | 88d | 2022-08-18 | 2022-12-19 |  | start no earlier than 2022-07-15 |
| 530 | Agregar | 88d | 2022-08-18 | 2022-12-19 |  | start no earlier than 2022-07-15 |
| 531 | Eliminar | 88d | 2022-08-18 | 2022-12-19 |  | start no earlier than 2022-07-15 |
| 532 | Editar | 88d | 2022-08-18 | 2022-12-19 |  | start no earlier than 2022-07-15 |
| 654 | **sprint 7** | 23d | 2022-08-18 | 2022-09-19 |  |  |
| 663 | **sprint 8** | 23d | 2022-08-18 | 2022-09-19 |  |  |
| 673 | **sprint 9** | 23d | 2022-08-18 | 2022-09-19 |  |  |
| 683 | **sprint 10** | 23d | 2022-08-18 | 2022-09-19 |  |  |
| 767 | **sprint 11** | 23d | 2022-11-15 A | 2022-12-15 |  |  |
| 845 | **sprint 4** | 88d | 2022-08-18 | 2022-12-19 |  |  |
| 847 | **Coeficientes** | 88d | 2022-07-15 | 2022-11-15 |  |  |
| 848 | Pantalla principal | 87d | 2022-07-15 | 2022-11-14 |  |  |
| 849 | Agregar | 87d | 2022-07-15 | 2022-11-14 |  |  |
| 850 | Eliminar | 87d | 2022-07-15 | 2022-11-14 |  |  |
| 851 | Editar | 87d | 2022-07-15 | 2022-11-14 |  |  |
| 852 | Configuración de Dashboard | 87d | 2022-07-15 | 2022-11-14 |  |  |
| 853 | Exportación de dashboard PDF | 88d | 2022-07-15 | 2022-11-15 |  |  |
| 854 | Exportación de dashboard Excel | 88d | 2022-07-15 | 2022-11-15 |  |  |
| 855 | Paginación Dashboard | 88d | 2022-07-15 | 2022-11-15 |  |  |
| 856 | Busqueda Dash board | 88d | 2022-07-15 | 2022-11-15 |  |  |
| 857 | Ventanas emergentes de validación | 88d | 2022-07-15 | 2022-11-15 |  |  |
| 858 | **Bienvenida** | 88d | 2022-07-15 | 2022-11-15 |  |  |
| 859 | Configuracion de bienvenida | 88d | 2022-07-15 | 2022-11-15 |  |  |
| 887 | **sprint 5** | 112d | 2022-08-18 | 2023-01-20 |  |  |
| 1192 | Carga configuración inicial Fondo Ultracrecimiento | 88d | 2022-08-18 | 2022-12-19 |  | start no earlier than 2022-07-15 |
| 1236 | **sprint 6** | 112d | 2022-08-18 | 2023-01-20 |  |  |
| 1308 | Pantalla principal | 88d | 2022-08-18 | 2022-12-19 |  | start no earlier than 2022-07-15 |
| 1309 | Agregar | 88d | 2022-08-18 | 2022-12-19 |  | start no earlier than 2022-07-15 |
| 1310 | Eliminar | 88d | 2022-08-18 | 2022-12-19 |  | start no earlier than 2022-07-15 |
| 1311 | Editar | 88d | 2022-08-18 | 2022-12-19 |  | start no earlier than 2022-07-15 |
| 1433 | **sprint 7** | 23d | 2022-08-18 | 2022-09-19 |  |  |
| 1442 | **sprint 8** | 23d | 2022-08-18 | 2022-09-19 |  |  |
| 1452 | **sprint 9** | 23d | 2022-08-18 | 2022-09-19 |  |  |
| 1462 | **sprint 10** | 23d | 2022-08-18 | 2022-09-19 |  |  |
| 1546 | **sprint 11** | 23d | 2022-08-18 | 2022-09-19 |  |  |
| 1623 | **Fase 3 Pruebas Unitarias e Integrales** | 29d | 2022-11-15 | 2022-12-23 |  |  |
| 1624 | **Pruebas Unitarias** | 29d | 2022-11-15 | 2022-12-23 |  |  |
| 1625 | Métodos | 29d | 2022-11-15 | 2022-12-23 |  |  |
| 1626 | Funciones y Calculos individuales de las clases | 29d | 2022-11-15 | 2022-12-23 |  |  |
| 1627 | **Pruebas de Integrales** | 29d | 2022-11-15 | 2022-12-23 |  |  |
| 1628 | Consultas a la base de datos | 29d | 2022-11-15 | 2022-12-23 |  |  |
| 1629 | Microservicios | 29d | 2022-11-15 | 2022-12-23 |  |  |
| 1630 | **Pruebas de Funcionales** | 29d | 2022-11-15 | 2022-12-23 |  |  |
| 1631 | Interacción con la base de datos | 29d | 2022-11-15 | 2022-12-23 |  |  |
| 1632 | **Integraciones y Web Services** | 29d | 2022-11-15 | 2022-12-23 |  |  |
| 1633 | Implementation | 29d | 2022-11-15 | 2022-12-23 |  |  |
| 1634 | Pruebas | 29d | 2022-11-15 | 2022-12-23 |  |  |
| 1635 | Ajustes | 29d | 2022-11-15 | 2022-12-23 |  |  |
| 1636 | **Fase 4 Públicación y Puesta a Punto** | 162d | 2022-08-18 | 2023-03-31 |  |  |
| 1637 | Manuales de Usuario | 13d | 2023-03-15 | 2023-03-31 |  | start no earlier than 2023-03-15 |
| 1638 | Informe de cumplimiento de capacitación | 13d | 2023-03-15 | 2023-03-31 |  | start no earlier than 2023-03-15 |
| 1639 | Evidencia de Procesos de Inicialización | 13d | 2023-03-15 | 2023-03-31 |  | start no earlier than 2023-03-15 |
| 1640 | Evidencia de Ejecución de Procesos | 13d | 2023-03-15 | 2023-03-31 |  | start no earlier than 2023-03-15 |
| 1641 | Carta de Aceptación de Procesos Implementados | 13d | 2023-03-15 | 2023-03-31 |  | start no earlier than 2023-03-15 |
| 1642 | Plan de soporte Post-productivo | 13d | 2023-03-15 | 2023-03-31 |  | start no earlier than 2023-03-15 |

Removed: 372 <Tarea nueva>; 1126 <Tarea nueva>

Changed:

| ID | Task | Start | Finish | Duration | Complete | Total float | Predecessors | Other |
| --- | --- | --- | --- | --- | --- | --- | --- | --- |
| 1 | **Proyecto PDRMyE** | 2022-05-11 A → 2022-08-18 (+99d) | 2022-11-16 → 2022-08-18 (-90d) | 136d → 0d | 20% → 0% | none → 162d |  | was named Proyecto de PDRMyE |
| 2 | Inicio | 2022-05-11 → 2022-08-18 (+99d) | 2022-05-11 → 2022-08-18 (+99d) |  |  | none → 190d |  |  |
| 3 | **Fase 1 Inicio y Planificación** | 2022-05-11 A → 2022-06-15 A (+35d) | 2022-08-30 → 2022-08-17 A (-13d) | 80d → 46d |  |  |  | was named Inicio y Planificación |
| 4 | **Levantamiento de Generalidades Técnicas** | 2022-05-11 → 2022-06-15 A (+35d) | 2022-07-15 → 2022-07-18 A (+3d) | 48d → 24d |  |  |  |  |
| 6 | Reunion CPH | 2022-06-14 A → 2022-06-15 A (+1d) |  |  |  |  |  |  |
| 7 | Reunion DAMOP | 2022-06-15 A → 2022-06-16 A (+1d) |  |  |  |  | none → 6 |  |
| 8 | Reunion CPH | 2022-06-16 A → 2022-06-17 A (+1d) |  |  |  |  | none → 7 |  |
| 9 | Reunion CPH | 2022-06-17 A → 2022-06-20 A (+3d) |  |  |  |  | none → 8 |  |
| 10 | Reunion CPH | 2022-06-20 A → 2022-06-21 A (+1d) |  |  |  |  | none → 9 |  |
| 11 | Reunion DAMOP | 2022-06-21 A → 2022-06-22 A (+1d) |  |  |  |  | none → 10 |  |
| 12 | Reunion DAMOP | 2022-06-23 A → 2022-06-24 A (+1d) |  |  |  |  | none → 11 |  |
| 13 | Reunion DAMOP | 2022-06-29 A → 2022-06-27 A (-2d) | 2022-06-30 A → 2022-06-27 A (-3d) |  |  |  | none → 12 |  |
| 14 | Reunion DAMOP | 2022-07-12 A → 2022-07-13 A (+1d) |  |  |  |  | none → 13 |  |
| 15 | Reunion DAF | 2022-07-12 A → 2022-07-14 A (+2d) | 2022-07-13 A → 2022-07-14 A (+1d) |  |  |  | none → 14 |  |
| 16 | Reunion DCCP | 2022-07-13 A → 2022-07-15 A (+2d) | 2022-07-14 A → 2022-07-15 A (+1d) |  |  |  | none → 15 |  |
| 17 | Reunion DPCP | 2022-07-13 A → 2022-07-18 A (+5d) | 2022-07-14 A → 2022-07-18 A (+4d) |  |  |  | none → 16 |  |
| 18 | **Objeto y Proyección del Alcance** | 2022-07-15 → 2022-06-20 A (-25d) | 2022-08-29 → 2022-08-17 A (-12d) | 32d → 43d |  |  |  |  |
| 22 | Avance de Maqueta para Plataforma de Distribuciones | 2022-05-11 A → 2022-06-22 A (+42d) | 2022-05-11 A → 2022-06-22 A (+42d) |  |  |  |  |  |
| 23 | Revision de cambios a maqueta | 2022-05-11 A → 2022-06-23 A (+43d) | 2022-05-11 A → 2022-06-23 A (+43d) |  |  |  |  |  |
| 24 | Reunion_AVANCES_Semanal | 2022-05-11 A → 2022-06-24 A (+44d) | 2022-05-11 A → 2022-06-24 A (+44d) |  |  |  |  |  |
| 25 | Reunión sobre Seguridad de la Plataforma | 2022-05-11 A → 2022-06-27 A (+47d) | 2022-05-11 A → 2022-06-27 A (+47d) |  |  |  |  |  |
| 30 | Reunion_AVANCES_Semanal | 2022-05-11 A → 2022-07-04 A (+54d) | 2022-05-11 A → 2022-07-04 A (+54d) |  |  |  |  |  |
| 32 | Edicion de maquetas CPH, DPCP, DAMOP, DCCP, DAF, Municipios | 2022-05-11 A → 2022-07-05 A (+55d) | 2022-05-11 A → 2022-07-05 A (+55d) |  |  |  |  |  |
| 33 | Reunion_AVANCES_Semanal | 2022-05-11 A → 2022-07-06 A (+56d) | 2022-05-11 A → 2022-07-06 A (+56d) |  |  |  |  |  |
| 34 | Definir la arquitectura que se utilizara | 2022-05-11 A → 2022-07-07 A (+57d) | 2022-05-11 A → 2022-07-07 A (+57d) |  |  |  |  |  |
| 35 | Presentacion de Propuesta Arquitectura de Micro sitios | 2022-05-11 A → 2022-07-08 A (+58d) | 2022-05-11 A → 2022-07-08 A (+58d) |  |  |  |  |  |
| 36 | Aprobacion de Propuesta de Arquitectura de Micro sitios | 2022-05-11 A → 2022-07-11 A (+61d) | 2022-05-11 A → 2022-07-11 A (+61d) |  |  |  |  |  |
| 37 | Presentación de Maqueta PDRMyE | 2022-05-11 A → 2022-07-12 A (+62d) | 2022-05-11 A → 2022-07-12 A (+62d) |  |  |  |  |  |
| 38 | Gerente de Proyecto Reviso maqueta de CPH | 2022-05-11 A → 2022-07-13 A (+63d) | 2022-05-11 A → 2022-07-13 A (+63d) |  |  |  |  |  |
| 39 | Reunion_AVANCES_Semanal | 2022-05-11 A → 2022-07-14 A (+64d) | 2022-05-11 A → 2022-07-14 A (+64d) |  |  |  |  |  |
| 40 | Retroalimentacion de maquetado con CPH | 2022-05-11 A → 2022-07-15 A (+65d) | 2022-05-11 A → 2022-07-15 A (+65d) |  |  |  |  |  |
| 42 | Retroalimentacion de maquetado con DAMOP | 2022-05-11 A → 2022-07-19 A (+69d) | 2022-05-11 A → 2022-07-19 A (+69d) |  |  |  |  |  |
| 43 | Retroalimentacion de maquetado con DCCP | 2022-05-11 A → 2022-07-20 A (+70d) | 2022-05-11 A → 2022-07-20 A (+70d) |  |  |  |  |  |
| 44 | Reunion_AVANCES_Semanal | 2022-05-11 A → 2022-07-21 A (+71d) | 2022-05-11 A → 2022-07-21 A (+71d) |  |  |  |  |  |
| 45 | Revisioin de avances de maquetas | 2022-05-11 A → 2022-07-22 A (+72d) | 2022-05-11 A → 2022-07-22 A (+72d) |  |  |  |  |  |
| 47 | Reunion_AVANCES_Semanal | 2022-05-11 A → 2022-07-26 A (+76d) | 2022-05-11 A → 2022-07-26 A (+76d) |  |  |  |  |  |
| 48 | Aclaracion dudas con la maqueta de firma electronica | 2022-05-11 A → 2022-07-27 A (+77d) | 2022-05-11 A → 2022-07-27 A (+77d) |  |  |  |  |  |
| 51 | Revision de maqueta de firma electronica | 2022-05-11 A → 2022-08-01 A (+82d) | 2022-05-11 A → 2022-08-01 A (+82d) |  |  |  |  |  |
| 52 | Reunion_AVANCES_Semanal | 2022-05-11 A → 2022-08-02 A (+83d) | 2022-05-11 A → 2022-08-02 A (+83d) |  |  |  |  |  |
| 53 | reunión demostración plataforma Ing. Marisol | 2022-05-11 A → 2022-08-03 A (+84d) | 2022-05-11 A → 2022-08-03 A (+84d) |  |  |  |  |  |
| 65 | **Diseño y Desarrollo BACK** | 2022-07-15 A | 2022-11-15 → 2023-01-20 (+66d) | 88d → 136d | 22% → 16% | none → 50d |  |  |
| 67 | **Módulo de Administración** | 2022-09-01 A → 2022-08-19 (-13d) | 2022-11-15 → 2022-12-07 (+22d) | 53.75d → 79d | 46% → 32% |  |  |  |
| 68 | **Base** | 2022-09-01 A → 2022-08-19 A (-13d) | 2022-11-15 → 2022-09-12 (-64d) | 53.75d → 17d | 50% → 65% | none → 144d |  |  |
| 69 | Login | 2022-09-01 A → 2022-08-19 A (-13d) | 2022-11-15 A → 2022-09-01 A (-75d) | 53.75d → 10d |  |  |  |  |
| 70 | Logout | 2022-09-01 A → 2022-09-02 A (+1d) | 2022-11-15 A → 2022-09-02 A (-74d) | 53.75d → 1d |  |  |  |  |
| 71 | Bloqueo de Sesión | 2022-09-01 → 2022-09-05 A (+4d) | 2022-11-15 → 2022-09-05 (-71d) | 53.75d? → 1d |  | none → 149d |  |  |
| 72 | Perfil | 2022-09-01 → 2022-09-06 A (+5d) | 2022-11-15 → 2022-09-12 (-64d) | 53.75d? → 5d |  | none → 144d |  |  |
| 73 | **Administración de Usuarios** | 2022-09-01 → 2022-09-14 A (+13d) | 2022-09-01 → 2022-09-27 (+26d) | 1d → 10d | 0% → 10% | none → 133d |  |  |
| 74 | Agregar | 2022-09-01 → 2022-09-14 A (+13d) | 2022-09-01 → 2022-09-14 (+13d) | 1d? → 1d |  | none → 142d |  |  |
| 75 | Pantalla Principal | 2022-09-01 → 2022-09-15 A (+14d) | 2022-09-01 → 2022-09-15 (+14d) | 1d? → 1d |  | none → 141d |  |  |
| 76 | Editar | 2022-09-01 → 2022-09-16 A (+15d) | 2022-09-01 → 2022-09-16 (+15d) | 1d? → 1d |  | none → 140d |  |  |
| 77 | Eliminar | 2022-09-01 → 2022-09-19 A (+18d) | 2022-09-01 → 2022-09-19 (+18d) | 1d? → 1d |  | none → 139d |  |  |
| 78 | Configuración de Dashboard | 2022-09-01 → 2022-09-20 A (+19d) | 2022-09-01 → 2022-09-20 (+19d) | 1d? → 1d |  | none → 138d |  |  |
| 79 | Exportación de dashboard PDF | 2022-09-01 → 2022-09-21 A (+20d) | 2022-09-01 → 2022-09-21 (+20d) |  |  | none → 137d |  |  |
| 80 | Exportación de dashboard Excel | 2022-09-01 → 2022-09-22 A (+21d) | 2022-09-01 → 2022-09-22 (+21d) |  |  | none → 136d |  |  |
| 81 | Paginación Dashboard | 2022-09-01 → 2022-09-23 A (+22d) | 2022-09-01 → 2022-09-23 A (+22d) |  | 0% → 100% |  |  |  |
| 82 | Busqueda Dash board | 2022-09-01 → 2022-09-26 A (+25d) | 2022-09-01 → 2022-09-26 (+25d) |  |  | none → 134d |  |  |
| 83 | Ventanas emergentes de validación | 2022-09-01 → 2022-09-27 A (+26d) | 2022-09-01 → 2022-09-27 (+26d) |  |  | none → 133d |  |  |
| 84 | **Administración de Roles y Permisos** | 2022-09-01 → 2022-09-28 (+27d) | 2022-09-01 → 2022-11-02 (+62d) | 1d → 26d |  |  |  |  |
| 85 | Pantalla Principal | 2022-09-01 → 2022-07-15 A (-48d) | 2022-09-01 → 2022-09-28 (+27d) |  |  | none → 132d |  |  |
| 86 | Agregar | 2022-09-01 → 2022-07-15 A (-48d) | 2022-09-01 → 2022-09-28 (+27d) |  |  | none → 132d |  |  |
| 87 | Editar | 2022-09-01 → 2022-07-15 A (-48d) | 2022-09-01 → 2022-09-28 (+27d) |  |  | none → 132d |  |  |
| 88 | Eliminar | 2022-09-01 → 2022-07-15 A (-48d) | 2022-09-01 → 2022-09-28 (+27d) |  |  | none → 132d |  |  |
| 89 | Configuración de Dashboard | 2022-09-01 → 2022-07-15 A (-48d) | 2022-09-01 → 2022-09-28 (+27d) |  |  | none → 132d |  |  |
| 90 | Exportación de dashboard PDF | 2022-09-01 → 2022-07-15 A (-48d) | 2022-09-01 → 2022-09-28 (+27d) |  |  | none → 132d |  |  |
| 91 | Exportación de dashboard Excel | 2022-09-01 → 2022-07-15 A (-48d) | 2022-09-01 → 2022-09-28 (+27d) |  |  | none → 132d |  |  |
| 92 | Paginación Dashboard | 2022-09-01 → 2022-07-15 A (-48d) | 2022-09-01 → 2022-09-28 (+27d) |  |  | none → 132d |  |  |
| 93 | Busqueda Dash board | 2022-09-01 → 2022-07-15 A (-48d) | 2022-09-01 → 2022-09-28 (+27d) |  |  | none → 132d |  |  |
| 94 | Ventanas emergentes de validación | 2022-09-01 → 2022-07-15 A (-48d) | 2022-09-01 → 2022-09-28 (+27d) |  |  | none → 132d |  |  |
| 96 | **Módulo CPH** | 2022-09-01 A → 2022-07-15 A (-48d) | 2022-11-14 → 2022-11-15 (+1d) | 53d → 88d | 21% → 19% |  |  |  |

| ID | Task | Start | Finish | Duration | Total float |
| --- | --- | --- | --- | --- | --- |
| 110 | **Base** | 2022-09-01 → 2022-07-15 A (-48d) | 2022-09-01 → 2022-11-15 (+75d) | 1d → 88d | none → 98d |
| 111 | Perfil | 2022-09-01 → 2022-07-15 A (-48d) | 2022-09-01 → 2022-11-15 (+75d) | 1d → 88d | none → 98d |
| 112 | Pop up Notificaciones | 2022-09-01 → 2022-07-15 A (-48d) | 2022-09-01 → 2022-11-15 (+75d) | 1d → 88d | none → 98d |
| 113 | Contador de Notificaciones (Icono campanita) | 2022-09-01 → 2022-07-15 A (-48d) | 2022-09-01 → 2022-11-15 (+75d) | 1d → 88d | none → 98d |
| 114 | Bandeja entrada de Notificaciones | 2022-09-01 → 2022-07-15 A (-48d) | 2022-09-01 → 2022-11-15 (+75d) | 1d → 88d | none → 98d |
| 115 | **Administración de Municipios** | 2022-09-01 A → 2022-07-15 A (-48d) | 2022-09-01 → 2022-11-15 (+75d) | 1d → 88d | none → 98d |
| 116 | Pantalla Principal | 2022-09-01 → 2022-07-15 A (-48d) | 2022-09-01 → 2022-11-15 (+75d) | 1d → 88d | none → 98d |
| 117 | Agregar | 2022-09-01 A → 2022-07-15 A (-48d) | 2022-09-01 A → 2022-11-15 A (+75d) | 1d → 88d |  |
| 118 | Editar | 2022-09-01 A → 2022-07-15 A (-48d) | 2022-09-01 A → 2022-11-15 A (+75d) | 1d → 88d |  |
| 119 | Eliminar | 2022-09-01 A → 2022-07-15 A (-48d) | 2022-09-01 A → 2022-11-15 A (+75d) | 1d → 88d |  |
| 120 | Configuración de Dashboard | 2022-09-01 → 2022-07-15 A (-48d) | 2022-09-01 → 2022-11-15 (+75d) | 1d → 88d | none → 98d |
| 121 | Exportación de dashboard PDF | 2022-09-01 → 2022-07-15 A (-48d) | 2022-09-01 → 2022-11-15 (+75d) | 1d → 88d | none → 98d |
| 122 | Exportación de dashboard Excel | 2022-09-01 → 2022-07-15 A (-48d) | 2022-09-01 → 2022-11-15 (+75d) | 1d → 88d | none → 98d |
| 123 | Paginación Dashboard | 2022-09-01 → 2022-07-15 A (-48d) | 2022-09-01 → 2022-11-15 (+75d) | 1d → 88d | none → 98d |
| 124 | Busqueda Dash board | 2022-09-01 → 2022-07-15 A (-48d) | 2022-09-01 → 2022-11-15 (+75d) | 1d → 88d | none → 98d |
| 125 | Ventanas emergentes de validación | 2022-09-01 → 2022-07-15 A (-48d) | 2022-09-01 → 2022-11-15 (+75d) | 1d → 88d | none → 98d |
| 126 | **Administración de Fondos** | 2022-09-01 → 2022-07-15 A (-48d) | 2022-09-01 → 2022-11-15 (+75d) | 1d → 88d | none → 98d |
| 127 | Pantalla Principal | 2022-09-01 → 2022-07-15 A (-48d) | 2022-09-01 → 2022-11-15 (+75d) | 1d → 88d | none → 98d |
| 128 | Agregar | 2022-09-01 → 2022-07-15 A (-48d) | 2022-09-01 → 2022-11-15 (+75d) | 1d → 88d | none → 98d |
| 129 | Editar | 2022-09-01 → 2022-07-15 A (-48d) | 2022-09-01 → 2022-11-15 (+75d) | 1d → 88d | none → 98d |
| 130 | Eliminar | 2022-09-01 → 2022-07-15 A (-48d) | 2022-09-01 → 2022-11-15 (+75d) | 1d → 88d | none → 98d |
| 131 | Configuración de Dashboard | 2022-09-01 → 2022-07-15 A (-48d) | 2022-09-01 → 2022-11-15 (+75d) | 1d → 88d | none → 98d |
| 132 | Exportación de dashboard PDF | 2022-09-01 → 2022-07-15 A (-48d) | 2022-09-01 → 2022-11-15 (+75d) | 1d → 88d | none → 98d |
| 133 | Exportación de dashboard Excel | 2022-09-01 → 2022-07-15 A (-48d) | 2022-09-01 → 2022-11-15 (+75d) | 1d → 88d | none → 98d |
| 134 | Paginación Dashboard | 2022-09-01 → 2022-07-15 A (-48d) | 2022-09-01 → 2022-11-15 (+75d) | 1d → 88d | none → 98d |
| 135 | Busqueda Dash board | 2022-09-01 → 2022-07-15 A (-48d) | 2022-09-01 → 2022-11-15 (+75d) | 1d → 88d | none → 98d |
| 136 | Ventanas emergentes de validación | 2022-09-01 → 2022-07-15 A (-48d) | 2022-09-01 → 2022-11-15 (+75d) | 1d → 88d | none → 98d |
| 137 | **Administración de Presupuesto** | 2022-09-01 → 2022-07-15 A (-48d) | 2022-09-01 → 2022-11-15 (+75d) | 1d → 88d | none → 98d |
| 138 | Pantalla Principal | 2022-09-01 → 2022-07-15 A (-48d) | 2022-09-01 → 2022-11-15 (+75d) | 1d → 88d | none → 98d |
| 139 | Agregar | 2022-09-01 → 2022-07-15 A (-48d) | 2022-09-01 → 2022-11-15 (+75d) | 1d → 88d | none → 98d |
| 140 | Editar | 2022-09-01 → 2022-07-15 A (-48d) | 2022-09-01 → 2022-11-15 (+75d) | 1d → 88d | none → 98d |
| 141 | Eliminar | 2022-09-01 → 2022-07-15 A (-48d) | 2022-09-01 → 2022-11-15 (+75d) | 1d → 88d | none → 98d |
| 142 | Configuración de Dashboard | 2022-09-01 → 2022-07-15 A (-48d) | 2022-09-01 → 2022-11-15 (+75d) | 1d → 88d | none → 98d |
| 143 | Exportación de dashboard PDF | 2022-09-01 → 2022-07-15 A (-48d) | 2022-09-01 → 2022-11-15 (+75d) | 1d → 88d | none → 98d |
| 144 | Exportación de dashboard Excel | 2022-09-01 → 2022-07-15 A (-48d) | 2022-09-01 → 2022-11-15 (+75d) | 1d → 88d | none → 98d |
| 145 | Paginación Dashboard | 2022-09-01 → 2022-07-15 A (-48d) | 2022-09-01 → 2022-11-15 (+75d) | 1d → 88d | none → 98d |
| 146 | Busqueda Dash board | 2022-09-01 → 2022-07-15 A (-48d) | 2022-09-01 → 2022-11-15 (+75d) | 1d → 88d | none → 98d |
| 147 | Ventanas emergentes de validación | 2022-09-01 → 2022-07-15 A (-48d) | 2022-09-01 → 2022-11-15 (+75d) | 1d → 88d | none → 98d |
| 148 | **Administración de UMA** | 2022-09-01 A → 2022-07-15 A (-48d) | 2022-09-01 → 2022-11-15 (+75d) | 1d → 88d | none → 98d |
| 149 | Pantalla Principal | 2022-09-01 → 2022-07-15 A (-48d) | 2022-09-01 → 2022-11-15 (+75d) | 1d → 88d | none → 98d |
| 150 | Agregar | 2022-09-01 A → 2022-07-15 A (-48d) | 2022-09-01 A → 2022-11-15 A (+75d) | 1d → 88d |  |
| 151 | Editar | 2022-09-01 A → 2022-07-15 A (-48d) | 2022-09-01 A → 2022-11-15 A (+75d) | 1d → 88d |  |
| 152 | Eliminar | 2022-09-01 A → 2022-07-15 A (-48d) | 2022-09-01 A → 2022-11-15 A (+75d) | 1d → 88d |  |
| 153 | Configuración de Dashboard | 2022-09-01 → 2022-07-15 A (-48d) | 2022-09-01 → 2022-11-15 (+75d) | 1d → 88d | none → 98d |
| 154 | Exportación de dashboard PDF | 2022-09-01 → 2022-07-15 A (-48d) | 2022-09-01 → 2022-11-15 (+75d) | 1d → 88d | none → 98d |
| 155 | Exportación de dashboard Excel | 2022-09-01 → 2022-07-15 A (-48d) | 2022-09-01 → 2022-11-15 (+75d) | 1d → 88d | none → 98d |
| 156 | Paginación Dashboard | 2022-09-01 → 2022-07-15 A (-48d) | 2022-09-01 → 2022-11-15 (+75d) | 1d → 88d | none → 98d |
| 157 | Busqueda Dashboard | 2022-09-01 → 2022-07-15 A (-48d) | 2022-09-01 → 2022-11-15 (+75d) | 1d → 88d | none → 98d |
| 158 | Ventanas emergentes de validación | 2022-09-01 → 2022-07-15 A (-48d) | 2022-09-01 → 2022-11-15 (+75d) | 1d → 88d | none → 98d |
| 159 | **Administración de Inflación** | 2022-09-01 A → 2022-07-15 A (-48d) | 2022-09-01 → 2022-11-15 (+75d) | 1d → 88d | none → 98d |
| 160 | Pantalla Principal | 2022-09-01 → 2022-07-15 A (-48d) | 2022-09-01 → 2022-11-15 (+75d) | 1d → 88d | none → 98d |
| 161 | Plantilla Carga Masiva Inflación | 2022-09-01 A → 2022-07-15 A (-48d) | 2022-09-01 A → 2022-11-15 A (+75d) | 1d → 88d |  |
| 162 | Api Plantilla caga masiva Municipio - Inflación | 2022-09-01 A → 2022-07-15 A (-48d) | 2022-09-01 A → 2022-11-15 A (+75d) | 1d → 88d |  |
| 163 | Agregar | 2022-09-01 A → 2022-07-15 A (-48d) | 2022-09-01 A → 2022-11-15 A (+75d) | 1d → 88d |  |
| 164 | Editar | 2022-09-01 A → 2022-07-15 A (-48d) | 2022-09-01 A → 2022-11-15 A (+75d) | 1d → 88d |  |
| 165 | Eliminar | 2022-09-01 A → 2022-07-15 A (-48d) | 2022-09-01 A → 2022-11-15 A (+75d) | 1d → 88d |  |
| 166 | Configuración de Dashboard | 2022-09-01 → 2022-07-15 A (-48d) | 2022-09-01 → 2022-11-15 (+75d) | 1d → 88d | none → 98d |
| 167 | Exportación de dashboard PDF | 2022-09-01 → 2022-07-15 A (-48d) | 2022-09-01 → 2022-11-15 (+75d) | 1d → 88d | none → 98d |
| 168 | Exportación de dashboard Excel | 2022-09-01 → 2022-07-15 A (-48d) | 2022-09-01 → 2022-11-15 (+75d) | 1d → 88d | none → 98d |
| 169 | Paginación Dashboard | 2022-09-01 → 2022-07-15 A (-48d) | 2022-09-01 → 2022-11-15 (+75d) | 1d → 88d | none → 98d |
| 170 | Busqueda Dash board | 2022-09-01 → 2022-07-15 A (-48d) | 2022-09-01 → 2022-11-15 (+75d) | 1d → 88d | none → 98d |
| 171 | Ventanas emergentes de validación | 2022-09-01 → 2022-07-15 A (-48d) | 2022-09-01 → 2022-11-15 (+75d) | 1d → 88d | none → 98d |
| 172 | **Administración de Crecimiento** | 2022-09-01 A → 2022-07-15 A (-48d) | 2022-09-01 → 2022-11-15 (+75d) | 1d → 88d | none → 98d |
| 173 | Pantalla Principal | 2022-09-01 → 2022-07-15 A (-48d) | 2022-09-01 → 2022-11-15 (+75d) | 1d → 88d | none → 98d |
| 174 | Plantilla Carga Masiva Crecimiento | 2022-09-01 A → 2022-07-15 A (-48d) | 2022-09-01 A → 2022-11-15 A (+75d) | 1d → 88d |  |
| 175 | Api Plantilla caga masiva Municipio - Crecimiento | 2022-09-01 A → 2022-07-15 A (-48d) | 2022-09-01 A → 2022-11-15 A (+75d) | 1d → 88d |  |
| 176 | Agregar | 2022-09-01 A → 2022-07-15 A (-48d) | 2022-09-01 A → 2022-11-15 A (+75d) | 1d → 88d |  |
| 177 | Editar | 2022-09-01 A → 2022-07-15 A (-48d) | 2022-09-01 A → 2022-11-15 A (+75d) | 1d → 88d |  |
| 178 | Eliminar | 2022-09-01 A → 2022-07-15 A (-48d) | 2022-09-01 A → 2022-11-15 A (+75d) | 1d → 88d |  |
| 179 | Configuración de Dashboard | 2022-09-01 → 2022-07-15 A (-48d) | 2022-09-01 → 2022-11-15 (+75d) | 1d → 88d | none → 98d |

| ID | Task | Start | Finish | Duration | Total float |
| --- | --- | --- | --- | --- | --- |
| 180 | Exportación de dashboard PDF | 2022-09-01 → 2022-07-15 A (-48d) | 2022-09-01 → 2022-11-15 (+75d) | 1d → 88d | none → 98d |
| 181 | Exportación de dashboard Excel | 2022-09-01 → 2022-07-15 A (-48d) | 2022-09-01 → 2022-11-15 (+75d) | 1d → 88d | none → 98d |
| 182 | Paginación Dashboard | 2022-09-01 → 2022-07-15 A (-48d) | 2022-09-01 → 2022-11-15 (+75d) | 1d → 88d | none → 98d |
| 183 | Busqueda Dash board | 2022-09-01 → 2022-07-15 A (-48d) | 2022-09-01 → 2022-11-15 (+75d) | 1d → 88d | none → 98d |
| 184 | Ventanas emergentes de validación | 2022-09-01 → 2022-07-15 A (-48d) | 2022-09-01 → 2022-11-15 (+75d) | 1d → 88d | none → 98d |
| 185 | **Administración de Facturación** | 2022-09-01 A → 2022-07-15 A (-48d) | 2022-09-01 → 2022-11-15 (+75d) | 1d → 88d | none → 98d |
| 186 | Pantalla Principal | 2022-09-01 → 2022-07-15 A (-48d) | 2022-09-01 → 2022-11-15 (+75d) | 1d → 88d | none → 98d |
| 187 | Agregar | 2022-09-01 A → 2022-07-15 A (-48d) | 2022-09-01 A → 2022-11-15 A (+75d) | 1d → 88d |  |
| 188 | Editar | 2022-09-01 A → 2022-07-15 A (-48d) | 2022-09-01 A → 2022-11-15 A (+75d) | 1d → 88d |  |
| 189 | Eliminar | 2022-09-01 A → 2022-07-15 A (-48d) | 2022-09-01 A → 2022-11-15 A (+75d) | 1d → 88d |  |
| 190 | Configuración de Dashboard | 2022-09-01 → 2022-07-15 A (-48d) | 2022-09-01 → 2022-11-15 (+75d) | 1d → 88d | none → 98d |
| 191 | Exportación de dashboard PDF | 2022-09-01 → 2022-07-15 A (-48d) | 2022-09-01 → 2022-11-15 (+75d) | 1d → 88d | none → 98d |
| 192 | Exportación de dashboard Excel | 2022-09-01 → 2022-07-15 A (-48d) | 2022-09-01 → 2022-11-15 (+75d) | 1d → 88d | none → 98d |
| 193 | Paginación Dashboard | 2022-09-01 → 2022-07-15 A (-48d) | 2022-09-01 → 2022-11-15 (+75d) | 1d → 88d | none → 98d |
| 194 | Busqueda Dash board | 2022-09-01 → 2022-07-15 A (-48d) | 2022-09-01 → 2022-11-15 (+75d) | 1d → 88d | none → 98d |
| 195 | Ventanas emergentes de validación | 2022-09-01 → 2022-07-15 A (-48d) | 2022-09-01 → 2022-11-15 (+75d) | 1d → 88d | none → 98d |
| 196 | **Administración de Recaudación** | 2022-09-01 A → 2022-07-15 A (-48d) | 2022-09-01 → 2022-11-15 (+75d) | 1d → 88d | none → 98d |
| 197 | Pantalla Principal | 2022-09-01 → 2022-07-15 A (-48d) | 2022-09-01 → 2022-11-15 (+75d) | 1d → 88d | none → 98d |
| 198 | Plantilla Carga Masiva Recaudación | 2022-09-01 A → 2022-07-15 A (-48d) | 2022-09-01 A → 2022-11-15 A (+75d) | 1d → 88d |  |
| 199 | Api Plantilla caga masiva Municipio - Recaudación | 2022-09-01 A → 2022-07-15 A (-48d) | 2022-09-01 A → 2022-11-15 A (+75d) | 1d → 88d |  |
| 200 | Agregar | 2022-09-01 A → 2022-07-15 A (-48d) | 2022-09-01 A → 2022-11-15 A (+75d) | 1d → 88d |  |
| 201 | Editar | 2022-09-01 A → 2022-07-15 A (-48d) | 2022-09-01 A → 2022-11-15 A (+75d) | 1d → 88d |  |
| 202 | Eliminar | 2022-09-01 A → 2022-07-15 A (-48d) | 2022-09-01 A → 2022-11-15 A (+75d) | 1d → 88d |  |
| 203 | Configuración de Dashboard | 2022-09-01 → 2022-07-15 A (-48d) | 2022-09-01 → 2022-11-15 (+75d) | 1d → 88d | none → 98d |
| 204 | Exportación de dashboard PDF | 2022-09-01 → 2022-07-15 A (-48d) | 2022-09-01 → 2022-11-15 (+75d) | 1d → 88d | none → 98d |
| 205 | Exportación de dashboard Excel | 2022-09-01 → 2022-07-15 A (-48d) | 2022-09-01 → 2022-11-15 (+75d) | 1d → 88d | none → 98d |
| 206 | Paginación Dashboard | 2022-09-01 → 2022-07-15 A (-48d) | 2022-09-01 → 2022-11-15 (+75d) | 1d → 88d | none → 98d |
| 207 | Busqueda Dash board | 2022-09-01 → 2022-07-15 A (-48d) | 2022-09-01 → 2022-11-15 (+75d) | 1d → 88d | none → 98d |
| 208 | Ventanas emergentes de validación | 2022-09-01 → 2022-07-15 A (-48d) | 2022-09-01 → 2022-11-15 (+75d) | 1d → 88d | none → 98d |
| 209 | **Administración de Población** | 2022-09-01 A → 2022-07-15 A (-48d) | 2022-09-01 → 2022-11-15 (+75d) | 1d → 88d | none → 98d |
| 210 | Pantalla Principal | 2022-09-01 → 2022-07-15 A (-48d) | 2022-09-01 → 2022-11-15 (+75d) | 1d → 88d | none → 98d |
| 211 | Agregar | 2022-09-01 A → 2022-07-15 A (-48d) | 2022-09-01 A → 2022-11-15 A (+75d) | 1d → 88d |  |
| 212 | Editar | 2022-09-01 A → 2022-07-15 A (-48d) | 2022-09-01 A → 2022-11-15 A (+75d) | 1d → 88d |  |
| 213 | Eliminar | 2022-09-01 A → 2022-07-15 A (-48d) | 2022-09-01 A → 2022-11-15 A (+75d) | 1d → 88d |  |
| 214 | Configuración de Dashboard | 2022-09-01 → 2022-07-15 A (-48d) | 2022-09-01 → 2022-11-15 (+75d) | 1d → 88d | none → 98d |
| 215 | Exportación de dashboard PDF | 2022-09-01 → 2022-07-15 A (-48d) | 2022-09-01 → 2022-11-15 (+75d) | 1d → 88d | none → 98d |
| 216 | Exportación de dashboard Excel | 2022-09-01 → 2022-07-15 A (-48d) | 2022-09-01 → 2022-11-15 (+75d) | 1d → 88d | none → 98d |
| 217 | Paginación Dashboard | 2022-09-01 → 2022-07-15 A (-48d) | 2022-09-01 → 2022-11-15 (+75d) | 1d → 88d | none → 98d |
| 218 | Busqueda Dash board | 2022-09-01 → 2022-07-15 A (-48d) | 2022-09-01 → 2022-11-15 (+75d) | 1d → 88d | none → 98d |
| 219 | Ventanas emergentes de validación | 2022-09-01 → 2022-07-15 A (-48d) | 2022-09-01 → 2022-11-15 (+75d) | 1d → 88d | none → 98d |
| 220 | **Administración de Territorio** | 2022-09-01 A → 2022-07-15 A (-48d) | 2022-09-01 → 2022-11-15 (+75d) | 1d → 88d | none → 98d |
| 221 | Pantalla Principal | 2022-09-01 → 2022-07-15 A (-48d) | 2022-09-01 → 2022-11-15 (+75d) | 1d → 88d | none → 98d |
| 222 | Plantilla Carga Masiva Territorio | 2022-09-01 A → 2022-07-15 A (-48d) | 2022-09-01 A → 2022-11-15 A (+75d) | 1d → 88d |  |
| 223 | Api Plantilla caga masiva Municipio - Territorio | 2022-09-01 A → 2022-07-15 A (-48d) | 2022-09-01 A → 2022-11-15 A (+75d) | 1d → 88d |  |
| 224 | Agregar | 2022-09-01 A → 2022-07-15 A (-48d) | 2022-09-01 A → 2022-11-15 A (+75d) | 1d → 88d |  |
| 225 | Editar | 2022-09-01 A → 2022-07-15 A (-48d) | 2022-09-01 A → 2022-11-15 A (+75d) | 1d → 88d |  |
| 226 | Eliminar | 2022-09-01 A → 2022-07-15 A (-48d) | 2022-09-01 A → 2022-11-15 A (+75d) | 1d → 88d |  |
| 227 | Configuración de Dashboard | 2022-09-01 → 2022-07-15 A (-48d) | 2022-09-01 → 2022-11-15 (+75d) | 1d → 88d | none → 98d |
| 228 | Exportación de dashboard PDF | 2022-09-01 → 2022-07-15 A (-48d) | 2022-09-01 → 2022-11-15 (+75d) | 1d → 88d | none → 98d |
| 229 | Exportación de dashboard Excel | 2022-09-01 → 2022-07-15 A (-48d) | 2022-09-01 → 2022-11-15 (+75d) | 1d → 88d | none → 98d |
| 230 | Paginación Dashboard | 2022-09-01 → 2022-07-15 A (-48d) | 2022-09-01 → 2022-11-15 (+75d) | 1d → 88d | none → 98d |
| 231 | Busqueda Dash board | 2022-09-01 → 2022-07-15 A (-48d) | 2022-09-01 → 2022-11-15 (+75d) | 1d → 88d | none → 98d |
| 232 | Ventanas emergentes de validación | 2022-09-01 → 2022-07-15 A (-48d) | 2022-09-01 → 2022-11-15 (+75d) | 1d → 88d | none → 98d |
| 233 | **Administración de pobreza** | 2022-09-01 A → 2022-07-15 A (-48d) | 2022-09-01 → 2022-11-15 (+75d) | 1d → 88d | none → 98d |
| 234 | Pantalla Principal | 2022-09-01 → 2022-07-15 A (-48d) | 2022-09-01 → 2022-11-15 (+75d) | 1d → 88d | none → 98d |
| 235 | Plantilla Carga Masiva Pobreza | 2022-09-01 A → 2022-07-15 A (-48d) | 2022-09-01 A → 2022-11-15 A (+75d) | 1d → 88d |  |
| 236 | Api Plantilla caga masiva Municipio - Pobreza | 2022-09-01 A → 2022-07-15 A (-48d) | 2022-09-01 A → 2022-11-15 A (+75d) | 1d → 88d |  |
| 237 | Agregar | 2022-09-01 A → 2022-07-15 A (-48d) | 2022-09-01 A → 2022-11-15 A (+75d) | 1d → 88d |  |
| 238 | Editar | 2022-09-01 A → 2022-07-15 A (-48d) | 2022-09-01 A → 2022-11-15 A (+75d) | 1d → 88d |  |
| 239 | Eliminar | 2022-09-01 A → 2022-07-15 A (-48d) | 2022-09-01 A → 2022-11-15 A (+75d) | 1d → 88d |  |
| 240 | Configuración de Dashboard | 2022-09-01 → 2022-07-15 A (-48d) | 2022-09-01 → 2022-11-15 (+75d) | 1d → 88d | none → 98d |
| 241 | Exportación de dashboard PDF | 2022-09-01 → 2022-07-15 A (-48d) | 2022-09-01 → 2022-11-15 (+75d) | 1d → 88d | none → 98d |
| 242 | Exportación de dashboard Excel | 2022-09-01 → 2022-07-15 A (-48d) | 2022-09-01 → 2022-11-15 (+75d) | 1d → 88d | none → 98d |
| 243 | Paginación Dashboard | 2022-09-01 → 2022-07-15 A (-48d) | 2022-09-01 → 2022-11-15 (+75d) | 1d → 88d | none → 98d |
| 244 | Busqueda Dash board | 2022-09-01 → 2022-07-15 A (-48d) | 2022-09-01 → 2022-11-15 (+75d) | 1d → 88d | none → 98d |
| 245 | Ventanas emergentes de validación | 2022-09-01 → 2022-07-15 A (-48d) | 2022-09-01 → 2022-11-15 (+75d) | 1d → 88d | none → 98d |
| 246 | **Administración de Pobreza Extrema** | 2022-09-01 A → 2022-07-15 A (-48d) | 2022-09-01 A → 2022-11-15 A (+75d) | 1d → 88d |  |
| 247 | Plantilla Carga Masiva Pobreza Extrema | 2022-09-01 A → 2022-07-15 A (-48d) | 2022-09-01 A → 2022-11-15 A (+75d) | 1d → 88d |  |
| 248 | Api Plantilla caga masiva Municipio - Pobreza Extrema | 2022-09-01 A → 2022-07-15 A (-48d) | 2022-09-01 A → 2022-11-15 A (+75d) | 1d → 88d |  |
| 249 | **Administración de Pobreza Moderada** | 2022-09-01 A → 2022-07-15 A (-48d) | 2022-09-01 A → 2022-11-15 A (+75d) | 1d → 88d |  |

| ID | Task | Start | Finish | Duration | Complete | Total float |
| --- | --- | --- | --- | --- | --- | --- |
| 250 | Plantilla Carga Masiva Pobreza Moderada | 2022-09-01 A → 2022-07-15 A (-48d) | 2022-09-01 A → 2022-11-15 A (+75d) | 1d → 88d |  |  |
| 251 | Api Plantilla caga masiva Municipio - Pobreza Moderada | 2022-09-01 A → 2022-07-15 A (-48d) | 2022-09-01 A → 2022-11-15 A (+75d) | 1d → 88d |  |  |
| 252 | **Administración de Proyección** | 2022-09-01 A → 2022-07-15 A (-48d) | 2022-09-01 A → 2022-11-15 (+75d) | 1d → 88d | 100% → 40% | none → 98d |
| 253 | Agregar | 2022-09-01 A → 2022-07-15 A (-48d) | 2022-09-01 A → 2022-11-15 (+75d) | 1d → 88d | 100% → 0% | none → 98d |
| 254 | Editar | 2022-09-01 A → 2022-07-15 A (-48d) | 2022-09-01 A → 2022-11-15 (+75d) | 1d → 88d | 100% → 0% | none → 98d |
| 255 | Eliminar | 2022-09-01 A → 2022-07-15 A (-48d) | 2022-09-01 A → 2022-11-15 (+75d) | 1d → 88d | 100% → 0% | none → 98d |
| 256 | Plantilla Carga Masiva Proyección | 2022-09-01 A → 2022-07-15 A (-48d) | 2022-09-01 A → 2022-11-15 A (+75d) | 1d → 88d |  |  |
| 257 | Api Plantilla caga masiva Municipio - Proyección | 2022-09-01 A → 2022-07-15 A (-48d) | 2022-09-01 A → 2022-11-15 A (+75d) | 1d → 88d |  |  |
| 258 | **Dashboard Articulo 14 Fracción I** | 2022-09-01 → 2022-07-15 A (-48d) | 2022-09-01 → 2022-11-15 (+75d) | 1d → 88d |  | none → 98d |
| 259 | Pantalla Principal | 2022-09-01 → 2022-07-15 A (-48d) | 2022-09-01 → 2022-11-15 (+75d) | 1d → 88d |  | none → 98d |
| 260 | Generar plantilla | 2022-09-01 → 2022-07-15 A (-48d) | 2022-09-01 → 2022-11-15 (+75d) | 1d → 88d |  | none → 98d |
| 261 | Carga masiva - plantilla | 2022-09-01 → 2022-07-15 A (-48d) | 2022-09-01 → 2022-11-15 (+75d) | 1d → 88d |  | none → 98d |
| 262 | Recálculo de coeficiente | 2022-09-01 → 2022-07-15 A (-48d) | 2022-09-01 → 2022-11-15 (+75d) | 1d → 88d |  | none → 98d |
| 263 | Editar información | 2022-09-01 → 2022-07-15 A (-48d) | 2022-09-01 → 2022-11-15 (+75d) | 1d → 88d |  | none → 98d |
| 264 | Dashboard predial | 2022-09-01 → 2022-07-15 A (-48d) | 2022-09-01 → 2022-11-15 (+75d) | 1d → 88d |  | none → 98d |
| 265 | Dashboard población y territorio | 2022-09-01 → 2022-07-15 A (-48d) | 2022-09-01 → 2022-11-15 (+75d) | 1d → 88d |  | none → 98d |
| 266 | Dashboard carencia social | 2022-09-01 → 2022-07-15 A (-48d) | 2022-09-01 → 2022-11-15 (+75d) | 1d → 88d |  | none → 98d |
| 267 | Cálculo de coeficiente | 2022-09-01 → 2022-07-15 A (-48d) | 2022-09-01 → 2022-11-15 (+75d) | 1d → 88d |  | none → 98d |
| 268 | Proceso Autorización | 2022-09-01 → 2022-07-15 A (-48d) | 2022-09-01 → 2022-11-15 (+75d) | 1d → 88d |  | none → 98d |
| 269 | Ventanas emergentes de validación | 2022-09-01 → 2022-07-15 A (-48d) | 2022-09-01 → 2022-11-15 (+75d) | 1d → 88d |  | none → 98d |
| 270 | **Dashboard Articulo 14 Fracción II** | 2022-09-01 → 2022-07-15 A (-48d) | 2022-09-01 → 2022-11-15 (+75d) | 1d → 88d |  | none → 98d |
| 271 | Pantalla Principal | 2022-09-01 → 2022-07-15 A (-48d) | 2022-09-01 → 2022-11-15 (+75d) | 1d → 88d |  | none → 98d |
| 272 | Dashboard población | 2022-09-01 → 2022-07-15 A (-48d) | 2022-09-01 → 2022-11-15 (+75d) | 1d → 88d |  | none → 98d |
| 273 | generar plantilla | 2022-09-01 → 2022-07-15 A (-48d) | 2022-09-01 → 2022-11-15 (+75d) | 1d → 88d |  | none → 98d |
| 274 | Carga masiva - plantilla | 2022-09-01 → 2022-07-15 A (-48d) | 2022-09-01 → 2022-11-15 (+75d) | 1d → 88d |  | none → 98d |
| 275 | Recálculo de coeficiente | 2022-09-01 → 2022-07-15 A (-48d) | 2022-09-01 → 2022-11-15 (+75d) | 1d → 88d |  | none → 98d |
| 276 | Editar información individual | 2022-09-01 → 2022-07-15 A (-48d) | 2022-09-01 → 2022-11-15 (+75d) | 1d → 88d |  | none → 98d |
| 277 | Dashboard proyección población | 2022-09-01 → 2022-07-15 A (-48d) | 2022-09-01 → 2022-11-15 (+75d) | 1d → 88d |  | none → 98d |
| 278 | Carga masiva - plantilla | 2022-09-01 → 2022-07-15 A (-48d) | 2022-09-01 → 2022-11-15 (+75d) | 1d → 88d |  | none → 98d |
| 279 | Recálculo de coeficiente | 2022-09-01 → 2022-07-15 A (-48d) | 2022-09-01 → 2022-11-15 (+75d) | 1d → 88d |  | none → 98d |
| 280 | Editar información individual | 2022-09-01 → 2022-07-15 A (-48d) | 2022-09-01 → 2022-11-15 (+75d) | 1d → 88d |  | none → 98d |
| 281 | Cálculo de coeficiente | 2022-09-01 → 2022-07-15 A (-48d) | 2022-09-01 → 2022-11-15 (+75d) | 1d → 88d |  | none → 98d |
| 282 | Proceso Autorización | 2022-09-01 → 2022-07-15 A (-48d) | 2022-09-01 → 2022-11-15 (+75d) | 1d → 88d |  | none → 98d |
| 283 | Ventanas emergentes de validación | 2022-09-01 → 2022-07-15 A (-48d) | 2022-09-01 → 2022-11-15 (+75d) | 1d → 88d |  | none → 98d |
| 284 | **Dashboard Articulo 14 Fracción III** | 2022-09-01 A → 2022-07-15 A (-48d) | 2022-09-01 → 2022-11-15 (+75d) | 1d → 88d |  | none → 98d |
| 285 | Pantalla Principal | 2022-09-01 → 2022-07-15 A (-48d) | 2022-09-01 → 2022-11-15 (+75d) | 1d → 88d |  | none → 98d |
| 286 | Dashboard eficiencia recaudatoria | 2022-09-01 → 2022-07-15 A (-48d) | 2022-09-01 → 2022-11-15 (+75d) | 1d → 88d |  | none → 98d |
| 287 | generar plantilla | 2022-09-01 → 2022-07-15 A (-48d) | 2022-09-01 → 2022-11-15 (+75d) | 1d → 88d |  | none → 98d |
| 288 | Carga masiva - plantilla | 2022-09-01 → 2022-07-15 A (-48d) | 2022-09-01 → 2022-11-15 (+75d) | 1d → 88d |  | none → 98d |
| 289 | Recálculo de coeficiente | 2022-09-01 → 2022-07-15 A (-48d) | 2022-09-01 → 2022-11-15 (+75d) | 1d → 88d |  | none → 98d |
| 290 | Editar información individual | 2022-09-01 → 2022-07-15 A (-48d) | 2022-09-01 → 2022-11-15 (+75d) | 1d → 88d |  | none → 98d |
| 291 | Dashboard crecimiento recaudación | 2022-09-01 → 2022-07-15 A (-48d) | 2022-09-01 → 2022-11-15 (+75d) | 1d → 88d |  | none → 98d |
| 292 | Carga masiva - plantilla | 2022-09-01 → 2022-07-15 A (-48d) | 2022-09-01 → 2022-11-15 (+75d) | 1d → 88d |  | none → 98d |
| 293 | Recálculo de coeficiente | 2022-09-01 → 2022-07-15 A (-48d) | 2022-09-01 → 2022-11-15 (+75d) | 1d → 88d |  | none → 98d |
| 294 | Editar información individual | 2022-09-01 → 2022-07-15 A (-48d) | 2022-09-01 → 2022-11-15 (+75d) | 1d → 88d |  | none → 98d |
| 295 | Cálculo de coeficiente | 2022-09-01 → 2022-07-15 A (-48d) | 2022-09-01 → 2022-11-15 (+75d) | 1d → 88d |  | none → 98d |
| 296 | Proceso Autorización | 2022-09-01 → 2022-07-15 A (-48d) | 2022-09-01 → 2022-11-15 (+75d) | 1d → 88d |  | none → 98d |
| 297 | Ventanas emergentes de validación | 2022-09-01 → 2022-07-15 A (-48d) | 2022-09-01 → 2022-11-15 (+75d) | 1d → 88d |  | none → 98d |
| 298 | Participaciones Federales | 2022-09-01 → 2022-07-15 A (-48d) | 2022-09-01 → 2022-11-15 (+75d) | 1d → 88d |  | none → 98d |
| 299 | Dashboard Participaciones Federales | 2022-09-01 → 2022-07-15 A (-48d) | 2022-09-01 → 2022-11-15 (+75d) | 1d → 88d |  | none → 98d |
| 300 | Proceso Envío general Participaciones Federales | 2022-09-01 → 2022-07-15 A (-48d) | 2022-09-01 → 2022-11-15 (+75d) | 1d → 88d |  | none → 98d |
| 301 | Track general Participaciones Federales | 2022-09-01 A → 2022-07-15 A (-48d) | 2022-09-01 A → 2022-11-15 A (+75d) | 1d → 88d |  |  |
| 302 | **Dashboard FG** | 2022-09-01 → 2022-07-15 A (-48d) | 2022-09-01 → 2022-11-15 (+75d) | 1d → 88d |  | none → 98d |
| 303 | Configuración inicial Fondo General (FG) | 2022-09-01 → 2022-07-15 A (-48d) | 2022-09-01 → 2022-11-15 (+75d) | 1d → 88d |  | none → 98d |
| 304 | Carga inicial | 2022-09-01 → 2022-07-15 A (-48d) | 2022-09-01 → 2022-11-15 (+75d) | 1d → 88d |  | none → 98d |
| 305 | Pantalla Principal | 2022-09-01 → 2022-07-15 A (-48d) | 2022-09-01 → 2022-11-15 (+75d) | 1d → 88d |  | none → 98d |
| 306 | Proceso cálculo | 2022-09-01 → 2022-07-15 A (-48d) | 2022-09-01 → 2022-11-15 (+75d) | 1d → 88d |  | none → 98d |
| 307 | Proceso autorización | 2022-09-01 → 2022-07-15 A (-48d) | 2022-09-01 → 2022-11-15 (+75d) | 1d → 88d |  | none → 98d |
| 308 | Proceso envío | 2022-09-01 → 2022-07-15 A (-48d) | 2022-09-01 → 2022-11-15 (+75d) | 1d → 88d |  | none → 98d |
| 309 | Avance programático Fondo General | 2022-09-01 → 2022-07-15 A (-48d) | 2022-09-01 → 2022-11-15 (+75d) | 1d → 88d |  | none → 98d |
| 310 | Proceso Cancelación Fondo General | 2022-09-01 → 2022-07-15 A (-48d) | 2022-09-01 → 2022-11-15 (+75d) | 1d → 88d |  | none → 98d |
| 311 | Ventanas emergentes de validación | 2022-09-01 → 2022-07-15 A (-48d) | 2022-09-01 → 2022-11-15 (+75d) | 1d → 88d |  | none → 98d |
| 312 | **Dashboard FFM 70** | 2022-09-01 A → 2022-07-15 A (-48d) | 2022-09-01 → 2022-11-15 (+75d) | 1d → 88d |  | none → 98d |
| 313 | Configuración inicial Fondo Fomento Municipal 70 % (FFM 70% ) | 2022-09-01 → 2022-07-15 A (-48d) | 2022-09-01 → 2022-11-15 (+75d) | 1d → 88d |  | none → 98d |
| 314 | Carga inicial | 2022-09-01 → 2022-07-15 A (-48d) | 2022-09-01 → 2022-11-15 (+75d) | 1d → 88d |  | none → 98d |
| 315 | Pantalla Principal | 2022-09-01 → 2022-07-15 A (-48d) | 2022-09-01 → 2022-11-15 (+75d) | 1d → 88d |  | none → 98d |
| 316 | Proceso cálculo | 2022-09-01 → 2022-07-15 A (-48d) | 2022-09-01 → 2022-11-15 (+75d) | 1d → 88d |  | none → 98d |
| 317 | Proceso autorización | 2022-09-01 → 2022-07-15 A (-48d) | 2022-09-01 → 2022-11-15 (+75d) | 1d → 88d |  | none → 98d |
| 318 | Proceso envío | 2022-09-01 → 2022-07-15 A (-48d) | 2022-09-01 → 2022-11-15 (+75d) | 1d → 88d |  | none → 98d |
| 319 | Track | 2022-09-01 A → 2022-07-15 A (-48d) | 2022-09-01 A → 2022-11-15 A (+75d) | 1d → 88d |  |  |

| ID | Task | Start | Finish | Duration | Total float |
| --- | --- | --- | --- | --- | --- |
| 320 | Ventanas emergentes de validación | 2022-09-01 → 2022-07-15 A (-48d) | 2022-09-01 → 2022-11-15 (+75d) | 1d → 88d | none → 98d |
| 321 | Configuración inicial Fondo Fomento Municipal 30 % (FFM 30% ) | 2022-09-01 → 2022-07-15 A (-48d) | 2022-09-01 → 2022-11-15 (+75d) | 1d → 88d | none → 98d |
| 322 | **Dashboard FFM 30** | 2022-09-01 A → 2022-07-15 A (-48d) | 2022-09-01 → 2022-11-15 (+75d) | 1d → 88d | none → 98d |
| 323 | Pantalla Principal | 2022-09-01 → 2022-07-15 A (-48d) | 2022-09-01 → 2022-11-15 (+75d) | 1d → 88d | none → 98d |
| 324 | Carga Inicial | 2022-09-01 → 2022-07-15 A (-48d) | 2022-09-01 → 2022-11-15 (+75d) | 1d → 88d | none → 98d |
| 325 | Proceso cálculo | 2022-09-01 → 2022-07-15 A (-48d) | 2022-09-01 → 2022-11-15 (+75d) | 1d → 88d | none → 98d |
| 326 | Proceso autorización | 2022-09-01 → 2022-07-15 A (-48d) | 2022-09-01 → 2022-11-15 (+75d) | 1d → 88d | none → 98d |
| 327 | Proceso envío | 2022-09-01 → 2022-07-15 A (-48d) | 2022-09-01 → 2022-11-15 (+75d) | 1d → 88d | none → 98d |
| 328 | Track | 2022-09-01 A → 2022-07-15 A (-48d) | 2022-09-01 A → 2022-11-15 A (+75d) | 1d → 88d |  |
| 329 | Ventanas emergentes de validación | 2022-09-01 → 2022-07-15 A (-48d) | 2022-09-01 → 2022-11-15 (+75d) | 1d → 88d | none → 98d |
| 330 | Configuración inicial Impuesto Especial sobre Producción y Servicios (IEPS) | 2022-09-01 → 2022-07-15 A (-48d) | 2022-09-01 → 2022-11-15 (+75d) | 1d → 88d | none → 98d |
| 331 | **Dashboard IEPS** | 2022-09-01 A → 2022-07-15 A (-48d) | 2022-09-01 → 2022-11-15 (+75d) | 1d → 88d | none → 98d |
| 332 | Carga inicial | 2022-09-01 → 2022-07-15 A (-48d) | 2022-09-01 → 2022-11-15 (+75d) | 1d → 88d | none → 98d |
| 333 | Pantalla Principal | 2022-09-01 → 2022-07-15 A (-48d) | 2022-09-01 → 2022-11-15 (+75d) | 1d → 88d | none → 98d |
| 334 | Proceso cálculo | 2022-09-01 → 2022-07-15 A (-48d) | 2022-09-01 → 2022-11-15 (+75d) | 1d → 88d | none → 98d |
| 335 | Proceso autorización | 2022-09-01 → 2022-07-15 A (-48d) | 2022-09-01 → 2022-11-15 (+75d) | 1d → 88d | none → 98d |
| 336 | Proceso envío | 2022-09-01 → 2022-07-15 A (-48d) | 2022-09-01 → 2022-11-15 (+75d) | 1d → 88d | none → 98d |
| 337 | Track | 2022-09-01 A → 2022-07-15 A (-48d) | 2022-09-01 A → 2022-11-15 A (+75d) | 1d → 88d |  |
| 338 | Ventanas emergentes de validación | 2022-09-01 → 2022-07-15 A (-48d) | 2022-09-01 → 2022-11-15 (+75d) | 1d → 88d | none → 98d |
| 339 | Configuración inicial Impuesto sobre la Venta Final de Gasolinas y Diesel (IEPS GyD) | 2022-09-01 → 2022-07-15 A (-48d) | 2022-09-01 → 2022-11-15 (+75d) | 1d → 88d | none → 98d |
| 340 | **Dashboard IEPS GyD** | 2022-09-01 A → 2022-07-15 A (-48d) | 2022-09-01 → 2022-11-15 (+75d) | 1d → 88d | none → 98d |
| 341 | Carga inicial | 2022-09-01 → 2022-07-15 A (-48d) | 2022-09-01 → 2022-11-15 (+75d) | 1d → 88d | none → 98d |
| 342 | Pantalla Principal | 2022-09-01 → 2022-07-15 A (-48d) | 2022-09-01 → 2022-11-15 (+75d) | 1d → 88d | none → 98d |
| 343 | Proceso cálculo | 2022-09-01 → 2022-07-15 A (-48d) | 2022-09-01 → 2022-11-15 (+75d) | 1d → 88d | none → 98d |
| 344 | Proceso autorización | 2022-09-01 → 2022-07-15 A (-48d) | 2022-09-01 → 2022-11-15 (+75d) | 1d → 88d | none → 98d |
| 345 | Proceso envío | 2022-09-01 → 2022-07-15 A (-48d) | 2022-09-01 → 2022-11-15 (+75d) | 1d → 88d | none → 98d |
| 346 | Track | 2022-09-01 A → 2022-07-15 A (-48d) | 2022-09-01 A → 2022-11-15 A (+75d) | 1d → 88d |  |
| 347 | Ventanas emergentes de validación | 2022-09-01 → 2022-07-15 A (-48d) | 2022-09-01 → 2022-11-15 (+75d) | 1d → 88d | none → 98d |
| 348 | **Dashboard ISR Bienes Inmuebles** | 2022-09-01 A → 2022-07-15 A (-48d) | 2022-09-01 → 2022-11-15 (+75d) | 1d → 88d | none → 98d |
| 349 | Pantalla Principal | 2022-09-01 → 2022-07-15 A (-48d) | 2022-09-01 → 2022-11-15 (+75d) | 1d → 88d | none → 98d |
| 350 | Carga inicial | 2022-09-01 → 2022-07-15 A (-48d) | 2022-09-01 → 2022-11-15 (+75d) | 1d → 88d | none → 98d |
| 351 | Configuración inicial ISR Bienes Inmuebles | 2022-09-01 → 2022-07-15 A (-48d) | 2022-09-01 → 2022-11-15 (+75d) | 1d → 88d | none → 98d |
| 352 | Proceso cálculo | 2022-09-01 → 2022-07-15 A (-48d) | 2022-09-01 → 2022-11-15 (+75d) | 1d → 88d | none → 98d |
| 353 | Proceso autorización | 2022-09-01 → 2022-07-15 A (-48d) | 2022-09-01 → 2022-11-15 (+75d) | 1d → 88d | none → 98d |
| 354 | Proceso envío | 2022-09-01 → 2022-07-15 A (-48d) | 2022-09-01 → 2022-11-15 (+75d) | 1d → 88d | none → 98d |
| 355 | Track | 2022-09-01 A → 2022-07-15 A (-48d) | 2022-09-01 A → 2022-11-15 A (+75d) | 1d → 88d |  |
| 356 | Ventanas emergentes de validación | 2022-09-01 → 2022-07-15 A (-48d) | 2022-09-01 → 2022-11-15 (+75d) | 1d → 88d | none → 98d |
| 357 | **Dashboard FOFIR** | 2022-09-01 A → 2022-07-15 A (-48d) | 2022-09-01 → 2022-11-15 (+75d) | 1d → 88d | none → 98d |
| 358 | Pantalla Principal | 2022-09-01 → 2022-07-15 A (-48d) | 2022-09-01 → 2022-11-15 (+75d) | 1d → 88d | none → 98d |
| 359 | Carga inicial | 2022-09-01 → 2022-07-15 A (-48d) | 2022-09-01 → 2022-11-15 (+75d) | 1d → 88d | none → 98d |
| 360 | Configuración inicial Fondo de Fiscalización y Recaudación (FOFIR) | 2022-09-01 → 2022-07-15 A (-48d) | 2022-09-01 → 2022-11-15 (+75d) | 1d → 88d | none → 98d |
| 361 | Proceso cálculo | 2022-09-01 → 2022-07-15 A (-48d) | 2022-09-01 → 2022-11-15 (+75d) | 1d → 88d | none → 98d |
| 362 | Proceso autorización | 2022-09-01 → 2022-07-15 A (-48d) | 2022-09-01 → 2022-11-15 (+75d) | 1d → 88d | none → 98d |
| 363 | Proceso envío | 2022-09-01 → 2022-07-15 A (-48d) | 2022-09-01 → 2022-11-15 (+75d) | 1d → 88d | none → 98d |
| 364 | Track | 2022-09-01 A → 2022-07-15 A (-48d) | 2022-09-01 A → 2022-11-15 A (+75d) | 1d → 88d |  |
| 365 | Ventanas emergentes de validación | 2022-09-01 → 2022-07-15 A (-48d) | 2022-09-01 → 2022-11-15 (+75d) | 1d → 88d | none → 98d |
| 366 | **Dashboard ISAN** | 2022-09-01 A → 2022-07-15 A (-48d) | 2022-09-01 → 2022-11-15 (+75d) | 1d → 88d | none → 98d |
| 367 | Pantalla Principal | 2022-09-01 → 2022-07-15 A (-48d) | 2022-09-01 → 2022-11-15 (+75d) | 1d → 88d | none → 98d |
| 368 | Plantilla Carga Masiva ISAN | 2022-09-01 A → 2022-07-15 A (-48d) | 2022-09-01 A → 2022-11-15 A (+75d) | 1d → 88d |  |
| 369 | Api Plantilla caga masiva Municipio - ISAN | 2022-09-01 A → 2022-07-15 A (-48d) | 2022-09-01 A → 2022-11-15 A (+75d) | 1d → 88d |  |
| 370 | Carga inicial | 2022-09-01 → 2022-07-15 A (-48d) | 2022-09-01 → 2022-11-15 (+75d) | 1d → 88d | none → 98d |
| 371 | Configuración inicial Impuesto sobre Automóviles Nuevos (ISAN) | 2022-09-01 → 2022-07-15 A (-48d) | 2022-09-01 → 2022-11-15 (+75d) | 1d → 88d | none → 98d |
| 372 | Proceso cálculo | 2022-09-01 → 2022-07-15 A (-48d) | 2022-09-01 → 2022-11-15 (+75d) | 1d → 88d | none → 98d |
| 373 | Proceso autorización | 2022-09-01 → 2022-07-15 A (-48d) | 2022-09-01 → 2022-11-15 (+75d) | 1d → 88d | none → 98d |
| 374 | Proceso envío | 2022-09-01 → 2022-07-15 A (-48d) | 2022-09-01 → 2022-11-15 (+75d) | 1d → 88d | none → 98d |
| 375 | Track | 2022-09-01 A → 2022-07-15 A (-48d) | 2022-09-01 A → 2022-11-15 A (+75d) | 1d → 88d |  |
| 376 | Ventanas emergentes de validación | 2022-09-01 → 2022-07-15 A (-48d) | 2022-09-01 → 2022-11-15 (+75d) | 1d → 88d | none → 98d |
| 377 | **Dashboard Comp. ISAN** | 2022-09-01 A → 2022-07-15 A (-48d) | 2022-09-01 → 2022-11-15 (+75d) | 1d → 88d | none → 98d |
| 378 | Pantalla Principal | 2022-09-01 → 2022-07-15 A (-48d) | 2022-09-01 → 2022-11-15 (+75d) | 1d → 88d | none → 98d |
| 379 | Carga inicial | 2022-09-01 → 2022-07-15 A (-48d) | 2022-09-01 → 2022-11-15 (+75d) | 1d → 88d | none → 98d |
| 380 | Configuración inicial Compensación ISAN | 2022-09-01 → 2022-07-15 A (-48d) | 2022-09-01 → 2022-11-15 (+75d) | 1d → 88d | none → 98d |
| 381 | Proceso cálculo | 2022-09-01 → 2022-07-15 A (-48d) | 2022-09-01 → 2022-11-15 (+75d) | 1d → 88d | none → 98d |
| 382 | Proceso autorización | 2022-09-01 → 2022-07-15 A (-48d) | 2022-09-01 → 2022-11-15 (+75d) | 1d → 88d | none → 98d |
| 383 | Proceso envío | 2022-09-01 → 2022-07-15 A (-48d) | 2022-09-01 → 2022-11-15 (+75d) | 1d → 88d | none → 98d |
| 384 | Track | 2022-09-01 A → 2022-07-15 A (-48d) | 2022-09-01 A → 2022-11-15 A (+75d) | 1d → 88d |  |
| 385 | Ventanas emergentes de validación | 2022-09-01 → 2022-07-15 A (-48d) | 2022-09-01 → 2022-11-15 (+75d) | 1d → 88d | none → 98d |
| 386 | **Dashboard ISN** | 2022-09-01 A → 2022-07-15 A (-48d) | 2022-09-01 → 2022-11-15 (+75d) | 1d → 88d | none → 98d |
| 387 | Pantalla Principal | 2022-09-01 → 2022-07-15 A (-48d) | 2022-09-01 → 2022-11-15 (+75d) | 1d → 88d | none → 98d |
| 388 | Carga configuración inicial fondo ISN | 2022-09-01 → 2022-07-15 A (-48d) | 2022-09-01 → 2022-11-15 (+75d) | 1d → 88d | none → 98d |
| 389 | Proceso de cálculo | 2022-09-01 → 2022-07-15 A (-48d) | 2022-09-01 → 2022-11-15 (+75d) | 1d → 88d | none → 98d |

| ID | Task | Start | Finish | Duration | Complete | Total float | Other |
| --- | --- | --- | --- | --- | --- | --- | --- |
| 390 | Proceso de Autorización | 2022-09-01 → 2022-07-15 A (-48d) | 2022-09-01 → 2022-11-15 (+75d) | 1d → 88d |  | none → 98d |  |
| 391 | Proceso de Envío | 2022-09-01 → 2022-07-15 A (-48d) | 2022-09-01 → 2022-11-15 (+75d) | 1d → 88d |  | none → 98d |  |
| 392 | Track | 2022-09-01 A → 2022-07-15 A (-48d) | 2022-09-01 A → 2022-11-15 A (+75d) | 1d → 88d |  |  |  |
| 393 | Ventanas emergentes de validación | 2022-09-01 → 2022-07-15 A (-48d) | 2022-09-01 → 2022-11-15 (+75d) | 1d → 88d |  | none → 98d |  |
| 394 | **Dashboard ICV** | 2022-09-01 A → 2022-07-15 A (-48d) | 2022-09-01 → 2022-11-15 (+75d) | 1d → 88d |  | none → 98d |  |
| 395 | Pantalla Principal | 2022-09-01 → 2022-07-15 A (-48d) | 2022-09-01 → 2022-11-15 (+75d) | 1d → 88d |  | none → 98d |  |
| 396 | Carga Configuración inicial ICV | 2022-09-01 → 2022-07-15 A (-48d) | 2022-09-01 → 2022-11-15 (+75d) | 1d → 88d |  | none → 98d |  |
| 397 | Carga masiva de ICV - (Plantilla) | 2022-09-01 → 2022-07-15 A (-48d) | 2022-09-01 → 2022-11-15 (+75d) | 1d → 88d |  | none → 98d |  |
| 398 | Proceso de cálculo | 2022-09-01 → 2022-07-15 A (-48d) | 2022-09-01 → 2022-11-15 (+75d) | 1d → 88d |  | none → 98d |  |
| 399 | Proceso de Autorización | 2022-09-01 → 2022-07-15 A (-48d) | 2022-09-01 → 2022-11-15 (+75d) | 1d → 88d |  | none → 98d |  |
| 400 | Proceso de Envío | 2022-09-01 → 2022-07-15 A (-48d) | 2022-09-01 → 2022-11-15 (+75d) | 1d → 88d |  | none → 98d |  |
| 401 | Track | 2022-09-01 A → 2022-07-15 A (-48d) | 2022-09-01 A → 2022-11-15 A (+75d) | 1d → 88d |  |  |  |
| 402 | Ventanas emergentes de validación | 2022-09-01 → 2022-07-15 A (-48d) | 2022-09-01 → 2022-11-15 (+75d) | 1d → 88d |  | none → 98d |  |
| 403 | **Dashboard Fondo Ultracrecmiento** | 2022-09-01 A → 2022-07-15 A (-48d) | 2022-09-01 → 2022-11-15 (+75d) | 1d → 88d | 11% → 14% | none → 98d |  |
| 404 | Pantalla Principal | 2022-09-01 → 2022-07-15 A (-48d) | 2022-09-01 → 2022-11-15 (+75d) | 1d → 88d |  | none → 98d |  |
| 405 | Carga configuración inicial Fondo Ultracrecimiento | 2022-09-01 → 2022-07-15 A (-48d) | 2022-09-01 → 2022-11-15 (+75d) | 1d → 88d |  | none → 98d |  |
| 406 | Proceso de Autorización | 2022-09-01 → 2022-07-15 A (-48d) | 2022-09-01 → 2022-11-15 (+75d) | 1d → 88d |  | none → 98d |  |
| 407 | Proceso de Envío | 2022-09-01 → 2022-07-15 A (-48d) | 2022-09-01 → 2022-11-15 (+75d) | 1d → 88d |  | none → 98d |  |
| 408 | Track | 2022-09-01 A → 2022-07-15 A (-48d) | 2022-09-01 A → 2022-11-15 A (+75d) | 1d → 88d |  |  |  |
| 409 | Ventanas emergentes de validación | 2022-09-01 → 2022-07-15 A (-48d) | 2022-09-01 → 2022-11-15 (+75d) | 1d → 88d |  | none → 98d |  |
| 410 | Generación de reporte | 2022-09-01 → 2022-07-15 A (-48d) | 2022-09-01 → 2022-11-15 (+75d) | 1d → 88d |  | none → 98d |  |
| 411 | **Dashboard Fondos Descentralizado** | 2022-09-01 A → 2022-07-15 A (-48d) | 2022-09-01 → 2022-11-15 (+75d) | 1d → 88d | 20% → 14% | none → 98d |  |
| 412 | Pantalla Principal | 2022-09-01 → 2022-07-15 (-48d) | 2022-09-01 → 2022-11-15 (+75d) | 1d → 88d |  | none → 126d | constraint none → start no earlier than 2022-07-15 |
| 414 | Proceso de cálculo | 2022-09-01 → 2022-07-15 A (-48d) | 2022-09-01 → 2022-11-15 (+75d) | 1d → 88d |  | none → 98d |  |
| 415 | Proceso de Autorización | 2022-09-01 → 2022-07-15 A (-48d) | 2022-09-01 → 2022-11-15 (+75d) | 1d → 88d |  | none → 98d |  |
| 416 | Proceso de Envío | 2022-09-01 → 2022-07-15 A (-48d) | 2022-09-01 → 2022-11-15 (+75d) | 1d → 88d |  | none → 98d |  |
| 417 | Track | 2022-09-01 A → 2022-07-15 A (-48d) | 2022-09-01 A → 2022-11-15 A (+75d) | 1d → 88d |  |  |  |
| 418 | Ventanas emergentes de validación | 2022-09-01 → 2022-07-15 A (-48d) | 2022-09-01 → 2022-11-15 (+75d) | 1d → 88d |  | none → 98d |  |
| 419 | **Dashboard Fondos Seguridad** | 2022-09-01 A → 2022-07-15 A (-48d) | 2022-09-01 → 2022-11-15 (+75d) | 1d → 88d |  | none → 98d |  |
| 420 | Pantalla Principal | 2022-09-01 → 2022-07-15 A (-48d) | 2022-09-01 → 2022-11-15 (+75d) | 1d → 88d |  | none → 98d |  |
| 421 | Carga configuración inicial Fondo Seguridad | 2022-09-01 → 2022-07-15 A (-48d) | 2022-09-01 → 2022-11-15 (+75d) | 1d → 88d |  | none → 98d |  |
| 422 | Proceso de cálculo | 2022-09-01 → 2022-07-15 A (-48d) | 2022-09-01 → 2022-11-15 (+75d) | 1d → 88d |  | none → 98d |  |
| 423 | Proceso de Autorización | 2022-09-01 → 2022-07-15 A (-48d) | 2022-09-01 → 2022-11-15 (+75d) | 1d → 88d |  | none → 98d |  |
| 424 | Proceso de Envío | 2022-09-01 → 2022-07-15 A (-48d) | 2022-09-01 → 2022-11-15 (+75d) | 1d → 88d |  | none → 98d |  |
| 425 | Track | 2022-09-01 A → 2022-07-15 A (-48d) | 2022-09-01 A → 2022-11-15 A (+75d) | 1d → 88d |  |  |  |
| 426 | Ventanas emergentes de validación | 2022-09-01 → 2022-07-15 A (-48d) | 2022-09-01 → 2022-11-15 (+75d) | 1d → 88d |  | none → 98d |  |
| 427 | Generación de reporte | 2022-09-01 → 2022-07-15 A (-48d) | 2022-09-01 → 2022-11-15 (+75d) | 1d → 88d |  | none → 98d |  |
| 428 | **Dashboard Fondos de Desarrollo Municipal** | 2022-09-01 A → 2022-07-15 A (-48d) | 2022-09-01 → 2022-11-15 (+75d) | 1d → 88d |  | none → 98d |  |
| 429 | Pantalla Principal | 2022-09-01 → 2022-07-15 A (-48d) | 2022-09-01 → 2022-11-15 (+75d) | 1d → 88d |  | none → 98d |  |
| 430 | Carga configuración inicial Fondo Desarrollo Municipal | 2022-09-01 → 2022-07-15 A (-48d) | 2022-09-01 → 2022-11-15 (+75d) | 1d → 88d |  | none → 98d |  |
| 431 | Proceso de cálculo | 2022-09-01 → 2022-07-15 A (-48d) | 2022-09-01 → 2022-11-15 (+75d) | 1d → 88d |  | none → 98d |  |
| 432 | Proceso de Autorización | 2022-09-01 → 2022-07-15 A (-48d) | 2022-09-01 → 2022-11-15 (+75d) | 1d → 88d |  | none → 98d |  |
| 433 | Proceso de Envío | 2022-09-01 → 2022-07-15 A (-48d) | 2022-09-01 → 2022-11-15 (+75d) | 1d → 88d |  | none → 98d |  |
| 434 | Track | 2022-09-01 A → 2022-07-15 A (-48d) | 2022-09-01 A → 2022-11-15 A (+75d) | 1d → 88d |  |  |  |
| 435 | Ventanas emergentes de validación | 2022-09-01 → 2022-07-15 A (-48d) | 2022-09-01 → 2022-11-15 (+75d) | 1d → 88d |  | none → 98d |  |
| 436 | Generación de reporte | 2022-09-01 → 2022-07-15 A (-48d) | 2022-09-01 → 2022-11-15 (+75d) | 1d → 88d |  | none → 98d |  |
| 437 | **Dashboard Fondos FORTAMUN** | 2022-09-01 A → 2022-07-15 A (-48d) | 2022-09-01 → 2022-11-15 (+75d) | 1d → 88d |  | none → 98d |  |
| 438 | Pantalla Principal | 2022-09-01 → 2022-07-15 A (-48d) | 2022-09-01 → 2022-11-15 (+75d) | 1d → 88d |  | none → 98d |  |
| 439 | Carga configuración inicial Fondo FORTAMUN | 2022-09-01 → 2022-07-15 A (-48d) | 2022-09-01 → 2022-11-15 (+75d) | 1d → 88d |  | none → 98d |  |
| 440 | Proceso de cálculo | 2022-09-01 → 2022-07-15 A (-48d) | 2022-09-01 → 2022-11-15 (+75d) | 1d → 88d |  | none → 98d |  |
| 441 | Proceso de Autorización | 2022-09-01 → 2022-07-15 A (-48d) | 2022-09-01 → 2022-11-15 (+75d) | 1d → 88d |  | none → 98d |  |
| 442 | Proceso de Envío | 2022-09-01 → 2022-07-15 A (-48d) | 2022-09-01 → 2022-11-15 (+75d) | 1d → 88d |  | none → 98d |  |
| 443 | Track | 2022-09-01 A → 2022-07-15 A (-48d) | 2022-09-01 A → 2022-11-15 A (+75d) | 1d → 88d |  |  |  |
| 444 | Ventanas emergentes de validación | 2022-09-01 → 2022-07-15 A (-48d) | 2022-09-01 → 2022-11-15 (+75d) | 1d → 88d |  | none → 98d |  |
| 445 | Generación de reporte | 2022-09-01 → 2022-07-15 A (-48d) | 2022-09-01 → 2022-11-15 (+75d) | 1d → 88d |  | none → 98d |  |
| 446 | **Dashboard Fondos FISM** | 2022-09-01 A → 2022-07-15 A (-48d) | 2022-09-01 → 2022-11-15 (+75d) | 1d → 88d |  | none → 98d |  |
| 447 | Pantalla Principal | 2022-09-01 → 2022-07-15 A (-48d) | 2022-09-01 → 2022-11-15 (+75d) | 1d → 88d |  | none → 98d |  |
| 448 | Carga configuración inicial Fondo FISM | 2022-09-01 → 2022-07-15 A (-48d) | 2022-09-01 → 2022-11-15 (+75d) | 1d → 88d |  | none → 98d |  |
| 449 | Proceso de cálculo | 2022-09-01 → 2022-07-15 A (-48d) | 2022-09-01 → 2022-11-15 (+75d) | 1d → 88d |  | none → 98d |  |
| 450 | Proceso de Autorización | 2022-09-01 → 2022-07-15 A (-48d) | 2022-09-01 → 2022-11-15 (+75d) | 1d → 88d |  | none → 98d |  |
| 451 | Proceso de Envío | 2022-09-01 → 2022-07-15 A (-48d) | 2022-09-01 → 2022-11-15 (+75d) | 1d → 88d |  | none → 98d |  |
| 452 | Track | 2022-09-01 A → 2022-07-15 A (-48d) | 2022-09-01 A → 2022-11-15 A (+75d) | 1d → 88d |  |  |  |
| 453 | Ventanas emergentes de validación | 2022-09-01 → 2022-07-15 A (-48d) | 2022-09-01 → 2022-11-15 (+75d) | 1d → 88d |  | none → 98d |  |
| 454 | Generación de reporte | 2022-09-01 → 2022-07-15 A (-48d) | 2022-09-01 → 2022-11-15 (+75d) | 1d → 88d |  | none → 98d |  |
| 455 | Generador de estadísticas | 2022-09-01 → 2022-07-15 A (-48d) | 2022-09-01 → 2022-11-15 (+75d) | 1d → 88d |  | none → 98d |  |
| 456 | Generador de reportes | 2022-09-01 → 2022-07-15 A (-48d) | 2022-09-01 → 2022-11-15 (+75d) | 1d → 88d |  | none → 98d |  |
| 458 | **Módulo DAMOP** | 2022-09-01 A → 2022-07-15 A (-48d) | 2022-11-14 → 2022-12-19 (+35d) | 52.75d → 112d | 13% → 12% | none → 74d |  |
| 459 | **Base** | 2022-09-01 → 2022-07-15 A (-48d) | 2022-09-01 → 2022-12-19 (+109d) | 1d → 112d |  | none → 74d |  |
| 460 | Pantalla Principal | 2022-09-01 → 2022-07-15 A (-48d) | 2022-09-01 → 2022-12-19 (+109d) | 1d → 88d |  | none → 74d |  |
| 461 | Pop up Notificaciones | 2022-09-01 → 2022-07-15 A (-48d) | 2022-09-01 → 2022-12-19 (+109d) | 1d → 88d |  | none → 74d |  |

| ID | Task | Start | Finish | Duration | Complete | Total float |
| --- | --- | --- | --- | --- | --- | --- |
| 462 | Contador de Notificaciones (Icono campanita) | 2022-09-01 → 2022-07-15 A (-48d) | 2022-09-01 → 2022-12-19 (+109d) | 1d → 88d |  | none → 74d |
| 463 | Bandeja entrada de Notificaciones | 2022-09-01 → 2022-07-15 A (-48d) | 2022-09-01 → 2022-12-19 (+109d) | 1d → 88d |  | none → 74d |
| 464 | **Administración de Municipios** | 2022-09-01 A → 2022-07-15 A (-48d) | 2022-09-01 → 2022-12-19 (+109d) | 1d → 112d |  | none → 74d |
| 465 | Pantalla principal | 2022-09-01 → 2022-07-15 A (-48d) | 2022-09-01 → 2022-12-19 (+109d) | 1d → 88d |  | none → 74d |
| 466 | Insertar | 2022-09-01 A → 2022-07-15 A (-48d) | 2022-09-01 A → 2022-11-15 A (+75d) | 1d → 88d |  |  |
| 467 | Contactar Municipio | 2022-09-01 → 2022-07-15 A (-48d) | 2022-09-01 → 2022-12-19 (+109d) | 1d → 88d |  | none → 74d |
| 468 | Ver Detalles | 2022-09-01 → 2022-07-15 A (-48d) | 2022-09-01 → 2022-12-19 (+109d) | 1d → 88d |  | none → 74d |
| 469 | Configuración de Dashboard | 2022-09-01 → 2022-07-15 A (-48d) | 2022-09-01 → 2022-12-19 (+109d) | 1d → 88d |  | none → 74d |
| 470 | Exportación de dashboard PDF | 2022-09-01 → 2022-07-15 A (-48d) | 2022-09-01 → 2022-12-19 (+109d) | 1d → 88d |  | none → 74d |
| 471 | Exportación de dashboard Excel | 2022-09-01 → 2022-07-15 A (-48d) | 2022-09-01 → 2022-12-19 (+109d) | 1d → 88d |  | none → 74d |
| 472 | Paginación Dashboard | 2022-09-01 → 2022-07-15 A (-48d) | 2022-09-01 → 2022-12-19 (+109d) | 1d → 88d |  | none → 74d |
| 473 | Busqueda Dash board | 2022-09-01 → 2022-07-15 A (-48d) | 2022-09-01 → 2022-12-19 (+109d) | 1d → 88d |  | none → 74d |
| 474 | Ventanas emergentes de validación | 2022-09-01 → 2022-07-15 A (-48d) | 2022-09-01 → 2022-12-19 (+109d) | 1d → 88d |  | none → 74d |
| 475 | Modificar | 2022-09-01 A → 2022-07-15 A (-48d) | 2022-09-01 A → 2022-11-15 A (+75d) | 1d → 88d |  |  |
| 476 | Subida de Archivos | 2022-09-01 → 2022-07-15 A (-48d) | 2022-09-01 → 2022-12-19 (+109d) | 1d → 88d |  | none → 74d |
| 477 | Descarga de PDF | 2022-09-01 → 2022-07-15 A (-48d) | 2022-09-01 → 2022-12-19 (+109d) | 1d → 88d |  | none → 74d |
| 478 | **Administración de Avisos** | 2022-09-01 A → 2022-07-15 A (-48d) | 2022-09-01 → 2022-12-19 (+109d) | 1d → 112d |  | none → 74d |
| 479 | Pantalla principal | 2022-09-01 → 2022-07-15 A (-48d) | 2022-09-01 → 2022-12-19 (+109d) | 1d → 88d |  | none → 74d |
| 480 | Agregar | 2022-09-01 A → 2022-07-15 A (-48d) | 2022-09-01 A → 2022-11-15 A (+75d) | 1d → 88d |  |  |
| 481 | Eliminar | 2022-09-01 A → 2022-07-15 A (-48d) | 2022-09-01 A → 2022-11-15 A (+75d) | 1d → 88d |  |  |
| 482 | Editar | 2022-09-01 A → 2022-07-15 A (-48d) | 2022-09-01 A → 2022-11-15 A (+75d) | 1d → 88d |  |  |
| 483 | Configuración de Dashboard | 2022-09-01 → 2022-07-15 A (-48d) | 2022-09-01 → 2022-12-19 (+109d) | 1d → 88d |  | none → 74d |
| 484 | Exportación de dashboard PDF | 2022-09-01 → 2022-07-15 A (-48d) | 2022-09-01 → 2022-12-19 (+109d) | 1d → 88d |  | none → 74d |
| 485 | Exportación de dashboard Excel | 2022-09-01 → 2022-07-15 A (-48d) | 2022-09-01 → 2022-12-19 (+109d) | 1d → 88d |  | none → 74d |
| 486 | Paginación Dashboard | 2022-09-01 → 2022-07-15 A (-48d) | 2022-09-01 → 2022-12-19 (+109d) | 1d → 88d |  | none → 74d |
| 487 | Busqueda Dash board | 2022-09-01 → 2022-07-15 A (-48d) | 2022-09-01 → 2022-12-19 (+109d) | 1d → 88d |  | none → 74d |
| 488 | Ventanas emergentes de validación | 2022-09-01 → 2022-07-15 A (-48d) | 2022-09-01 → 2022-12-19 (+109d) | 1d → 88d |  | none → 74d |
| 489 | **Administración de Eventos** | 2022-09-01 A → 2022-07-15 A (-48d) | 2022-09-01 → 2022-12-19 (+109d) | 1d → 112d |  | none → 74d |
| 490 | Pantalla principal | 2022-09-01 → 2022-07-15 A (-48d) | 2022-09-01 → 2022-12-19 (+109d) | 1d → 88d |  | none → 74d |
| 491 | Agregar | 2022-09-01 A → 2022-07-15 A (-48d) | 2022-09-01 A → 2022-11-15 A (+75d) | 1d → 88d |  |  |
| 492 | Eliminar | 2022-09-01 A → 2022-07-15 A (-48d) | 2022-09-01 A → 2022-11-15 A (+75d) | 1d → 88d |  |  |
| 493 | Editar | 2022-09-01 A → 2022-07-15 A (-48d) | 2022-09-01 A → 2022-11-15 A (+75d) | 1d → 88d |  |  |
| 494 | Configuración de Dashboard | 2022-09-01 → 2022-07-15 A (-48d) | 2022-09-01 → 2022-12-19 (+109d) | 1d → 88d |  | none → 74d |
| 495 | Exportación de dashboard PDF | 2022-09-01 → 2022-07-15 A (-48d) | 2022-09-01 → 2022-12-19 (+109d) | 1d → 88d |  | none → 74d |
| 496 | Exportación de dashboard Excel | 2022-09-01 → 2022-07-15 A (-48d) | 2022-09-01 → 2022-12-19 (+109d) | 1d → 88d |  | none → 74d |
| 497 | Paginación Dashboard | 2022-09-01 → 2022-07-15 A (-48d) | 2022-09-01 → 2022-12-19 (+109d) | 1d → 88d |  | none → 74d |
| 498 | Busqueda Dash board | 2022-09-01 → 2022-07-15 A (-48d) | 2022-09-01 → 2022-12-19 (+109d) | 1d → 88d |  | none → 74d |
| 499 | Ventanas emergentes de validación | 2022-09-01 → 2022-07-15 A (-48d) | 2022-09-01 → 2022-12-19 (+109d) | 1d → 88d |  | none → 74d |
| 500 | **Administración de Conceptos** | 2022-09-01 → 2022-07-15 A (-48d) | 2022-09-01 → 2022-12-19 (+109d) | 1d → 112d |  | none → 74d |
| 501 | Pantalla principal | 2022-09-01 → 2022-07-15 A (-48d) | 2022-09-01 → 2022-12-19 (+109d) | 1d → 88d |  | none → 74d |
| 502 | Agregar | 2022-09-01 → 2022-07-15 A (-48d) | 2022-09-01 → 2022-12-19 (+109d) | 1d → 88d |  | none → 74d |
| 503 | Eliminar | 2022-09-01 → 2022-07-15 A (-48d) | 2022-09-01 → 2022-12-19 (+109d) | 1d → 88d |  | none → 74d |
| 504 | Editar | 2022-09-01 → 2022-07-15 A (-48d) | 2022-09-01 → 2022-12-19 (+109d) | 1d → 88d |  | none → 74d |
| 505 | **Administración tasa interés BANXICO** | 2022-09-01 A → 2022-07-15 A (-48d) | 2022-09-01 → 2022-12-19 (+109d) | 1d → 112d |  | none → 74d |
| 506 | Pantalla principal | 2022-09-01 A → 2022-07-15 A (-48d) | 2022-09-01 A → 2022-12-19 (+109d) | 1d → 88d | 100% → 0% | none → 74d |
| 507 | Insertar | 2022-09-01 A → 2022-07-15 A (-48d) | 2022-09-01 → 2022-11-15 A (+75d) | 1d → 88d | 0% → 100% |  |
| 508 | Modificar | 2022-09-01 A → 2022-07-15 A (-48d) | 2022-09-01 → 2022-11-15 A (+75d) | 1d → 88d | 0% → 100% |  |
| 509 | Eliminar | 2022-09-01 A → 2022-07-15 A (-48d) | 2022-09-01 → 2022-11-15 A (+75d) | 1d → 88d | 0% → 100% |  |
| 510 | Visualizar | 2022-09-01 A → 2022-07-15 A (-48d) | 2022-09-01 A → 2022-12-19 (+109d) | 1d → 88d | 100% → 0% | none → 74d |
| 511 | Job de Ejecucion automatica | 2022-09-01 A → 2022-07-15 A (-48d) | 2022-09-01 A → 2022-12-19 (+109d) | 1d → 88d | 100% → 0% | none → 74d |
| 512 | **Anticipo Participaciones** | 2022-09-01 A → 2022-07-15 A (-48d) | 2022-09-01 → 2022-12-19 (+109d) | 1d → 112d |  | none → 74d |
| 513 | Pantalla principal | 2022-09-01 → 2022-07-15 A (-48d) | 2022-09-01 → 2022-12-19 (+109d) | 1d → 88d |  | none → 74d |
| 514 | Agregar | 2022-09-01 → 2022-07-15 A (-48d) | 2022-09-01 → 2022-12-19 (+109d) | 1d → 88d |  | none → 74d |
| 515 | Eliminar | 2022-09-01 → 2022-07-15 A (-48d) | 2022-09-01 → 2022-12-19 (+109d) | 1d → 88d |  | none → 74d |
| 516 | Editar | 2022-09-01 → 2022-07-15 A (-48d) | 2022-09-01 → 2022-12-19 (+109d) | 1d → 88d |  | none → 74d |
| 517 | Configuración de Dashboard | 2022-09-01 → 2022-07-15 A (-48d) | 2022-09-01 → 2022-12-19 (+109d) | 1d → 88d |  | none → 74d |
| 518 | Exportación de dashboard PDF | 2022-09-01 → 2022-07-15 A (-48d) | 2022-09-01 → 2022-12-19 (+109d) | 1d → 88d |  | none → 74d |
| 519 | Exportación de dashboard Excel | 2022-09-01 → 2022-07-15 A (-48d) | 2022-09-01 → 2022-12-19 (+109d) | 1d → 88d |  | none → 74d |
| 520 | Paginación Dashboard | 2022-09-01 → 2022-07-15 A (-48d) | 2022-09-01 → 2022-12-19 (+109d) | 1d → 88d |  | none → 74d |
| 521 | Busqueda Dash board | 2022-09-01 → 2022-07-15 A (-48d) | 2022-09-01 → 2022-12-19 (+109d) | 1d → 88d |  | none → 74d |
| 522 | Ventanas emergentes de validación | 2022-09-01 → 2022-07-15 A (-48d) | 2022-09-01 → 2022-12-19 (+109d) | 1d → 88d |  | none → 74d |
| 523 | Carga masiva | 2022-09-01 → 2022-07-15 A (-48d) | 2022-09-01 → 2022-12-19 (+109d) | 1d → 88d |  | none → 74d |
| 524 | Copiar información del mes anterior | 2022-09-01 → 2022-07-15 A (-48d) | 2022-09-01 → 2022-12-19 (+109d) | 1d → 88d |  | none → 74d |
| 525 | Proceso de Ajuste | 2022-09-01 → 2022-07-15 A (-48d) | 2022-09-01 → 2022-12-19 (+109d) | 1d → 88d |  | none → 74d |
| 526 | Proceso de Enviar | 2022-09-01 → 2022-07-15 A (-48d) | 2022-09-01 → 2022-12-19 (+109d) | 1d → 88d |  | none → 74d |
| 527 | Track | 2022-09-01 A → 2022-07-15 A (-48d) | 2022-09-01 A → 2022-11-15 A (+75d) | 1d → 88d |  |  |
| 528 | **Solicitud de Recursos** | 2022-09-01 A → 2022-07-15 A (-48d) | 2022-09-01 → 2022-12-19 (+109d) | 1d → 112d | 9% → 7% | none → 74d |
| 533 | Configuración de Dashboard | 2022-09-01 → 2022-07-15 A (-48d) | 2022-09-01 → 2022-12-19 (+109d) | 1d → 88d |  | none → 74d |
| 534 | Exportación de dashboard PDF | 2022-09-01 → 2022-07-15 A (-48d) | 2022-09-01 → 2022-12-19 (+109d) | 1d → 88d |  | none → 74d |
| 535 | Exportación de dashboard Excel | 2022-09-01 → 2022-07-15 A (-48d) | 2022-09-01 → 2022-12-19 (+109d) | 1d → 88d |  | none → 74d |

| ID | Task | Start | Finish | Duration | Total float |
| --- | --- | --- | --- | --- | --- |
| 536 | Paginación Dashboard | 2022-09-01 → 2022-07-15 A (-48d) | 2022-09-01 → 2022-12-19 (+109d) | 1d → 88d | none → 74d |
| 537 | Busqueda Dash board | 2022-09-01 → 2022-07-15 A (-48d) | 2022-09-01 → 2022-12-19 (+109d) | 1d → 88d | none → 74d |
| 538 | Ventanas emergentes de validación | 2022-09-01 → 2022-07-15 A (-48d) | 2022-09-01 → 2022-12-19 (+109d) | 1d → 88d | none → 74d |
| 539 | Carga de documento | 2022-09-01 → 2022-07-15 A (-48d) | 2022-09-01 → 2022-12-19 (+109d) | 1d → 88d | none → 74d |
| 540 | Copiar información del mes anterior | 2022-09-01 → 2022-07-15 A (-48d) | 2022-09-01 → 2022-12-19 (+109d) | 1d → 88d | none → 74d |
| 541 | Dashboard de Solicitud de Recursos sección Solicitudes Pendientes | 2022-09-01 → 2022-07-15 A (-48d) | 2022-09-01 → 2022-12-19 (+109d) | 1d → 88d | none → 74d |
| 542 | Dashboard de Solicitud de Recursos sección Solicitudes en trámite | 2022-09-01 → 2022-07-15 A (-48d) | 2022-09-01 → 2022-12-19 (+109d) | 1d → 88d | none → 74d |
| 543 | Track | 2022-09-01 A → 2022-07-15 A (-48d) | 2022-09-01 A → 2022-11-15 A (+75d) | 1d → 88d |  |
| 544 | **Dashboard Participaciones Federales** | 2022-09-01 A → 2022-07-15 A (-48d) | 2022-09-01 → 2022-12-19 (+109d) | 1d → 112d | none → 74d |
| 545 | Pantalla principal | 2022-09-01 → 2022-07-15 A (-48d) | 2022-09-01 → 2022-12-19 (+109d) | 1d → 88d | none → 74d |
| 546 | Busqueda de Mes | 2022-09-01 → 2022-07-15 A (-48d) | 2022-09-01 → 2022-12-19 (+109d) | 1d → 88d | none → 74d |
| 547 | Busqueda de Año | 2022-09-01 → 2022-07-15 A (-48d) | 2022-09-01 → 2022-12-19 (+109d) | 1d → 88d | none → 74d |
| 548 | Busqueda general | 2022-09-01 → 2022-07-15 A (-48d) | 2022-09-01 → 2022-12-19 (+109d) | 1d → 88d | none → 74d |
| 549 | Editar | 2022-09-01 → 2022-07-15 A (-48d) | 2022-09-01 → 2022-12-19 (+109d) | 1d → 88d | none → 74d |
| 550 | Proceso de Autorizar | 2022-09-01 → 2022-07-15 A (-48d) | 2022-09-01 → 2022-12-19 (+109d) | 1d → 88d | none → 74d |
| 551 | Proceso de Enviar | 2022-09-01 → 2022-07-15 A (-48d) | 2022-09-01 → 2022-12-19 (+109d) | 1d → 88d | none → 74d |
| 552 | Track | 2022-09-01 A → 2022-07-15 A (-48d) | 2022-09-01 A → 2022-11-15 A (+75d) | 1d → 88d |  |
| 553 | Ventanas emergentes de validación | 2022-09-01 → 2022-07-15 A (-48d) | 2022-09-01 → 2022-12-19 (+109d) | 1d → 88d | none → 74d |
| 554 | **Dashboard ISN** | 2022-09-01 A → 2022-07-15 A (-48d) | 2022-09-01 → 2022-12-19 (+109d) | 1d → 112d | none → 74d |
| 555 | Pantalla principal | 2022-09-01 → 2022-07-15 A (-48d) | 2022-09-01 → 2022-12-19 (+109d) | 1d → 88d | none → 74d |
| 556 | Busqueda de Mes | 2022-09-01 → 2022-07-15 A (-48d) | 2022-09-01 → 2022-12-19 (+109d) | 1d → 88d | none → 74d |
| 557 | Busqueda de Año | 2022-09-01 → 2022-07-15 A (-48d) | 2022-09-01 → 2022-12-19 (+109d) | 1d → 88d | none → 74d |
| 558 | Busqueda | 2022-09-01 → 2022-07-15 A (-48d) | 2022-09-01 → 2022-12-19 (+109d) | 1d → 88d | none → 74d |
| 559 | Proceso de Autorización | 2022-09-01 → 2022-07-15 A (-48d) | 2022-09-01 → 2022-12-19 (+109d) | 1d → 88d | none → 74d |
| 560 | Proceso de Envío | 2022-09-01 → 2022-07-15 A (-48d) | 2022-09-01 → 2022-12-19 (+109d) | 1d → 88d | none → 74d |
| 561 | Track | 2022-09-01 A → 2022-07-15 A (-48d) | 2022-09-01 A → 2022-11-15 A (+75d) | 1d → 88d |  |
| 562 | Ventanas emergentes de validación | 2022-09-01 → 2022-07-15 A (-48d) | 2022-09-01 → 2022-12-19 (+109d) | 1d → 88d | none → 74d |
| 563 | **Dashboard ICV** | 2022-09-01 A → 2022-07-15 A (-48d) | 2022-09-01 → 2022-12-19 (+109d) | 1d → 112d | none → 74d |
| 564 | Pantalla principal | 2022-09-01 → 2022-07-15 A (-48d) | 2022-09-01 → 2022-12-19 (+109d) | 1d → 88d | none → 74d |
| 565 | Busqueda de Mes | 2022-09-01 → 2022-07-15 A (-48d) | 2022-09-01 → 2022-12-19 (+109d) | 1d → 88d | none → 74d |
| 566 | Busqueda de Año | 2022-09-01 → 2022-07-15 A (-48d) | 2022-09-01 → 2022-12-19 (+109d) | 1d → 88d | none → 74d |
| 567 | Busqueda | 2022-09-01 → 2022-07-15 A (-48d) | 2022-09-01 → 2022-12-19 (+109d) | 1d → 88d | none → 74d |
| 568 | Proceso de Autorización | 2022-09-01 → 2022-07-15 A (-48d) | 2022-09-01 → 2022-12-19 (+109d) | 1d → 88d | none → 74d |
| 569 | Proceso de Envío | 2022-09-01 → 2022-07-15 A (-48d) | 2022-09-01 → 2022-12-19 (+109d) | 1d → 88d | none → 74d |
| 570 | Track | 2022-09-01 A → 2022-07-15 A (-48d) | 2022-09-01 A → 2022-11-15 A (+75d) | 1d → 88d |  |
| 571 | Ventanas emergentes de validación | 2022-09-01 → 2022-07-15 A (-48d) | 2022-09-01 → 2022-12-19 (+109d) | 1d → 88d | none → 74d |
| 572 | **Dashboard Fondos FORTAMUN** | 2022-09-01 A → 2022-07-15 A (-48d) | 2022-09-01 → 2022-12-19 (+109d) | 1d → 112d | none → 74d |
| 573 | Pantalla principal | 2022-09-01 → 2022-07-15 A (-48d) | 2022-09-01 → 2022-12-19 (+109d) | 1d → 88d | none → 74d |
| 574 | Busqueda de Mes | 2022-09-01 → 2022-07-15 A (-48d) | 2022-09-01 → 2022-12-19 (+109d) | 1d → 88d | none → 74d |
| 575 | Busqueda de Año | 2022-09-01 → 2022-07-15 A (-48d) | 2022-09-01 → 2022-12-19 (+109d) | 1d → 88d | none → 74d |
| 576 | Busqueda | 2022-09-01 → 2022-07-15 A (-48d) | 2022-09-01 → 2022-12-19 (+109d) | 1d → 88d | none → 74d |
| 577 | Proceso de Autorización | 2022-09-01 → 2022-07-15 A (-48d) | 2022-09-01 → 2022-12-19 (+109d) | 1d → 88d | none → 74d |
| 578 | Proceso de Envío | 2022-09-01 → 2022-07-15 A (-48d) | 2022-09-01 → 2022-12-19 (+109d) | 1d → 88d | none → 74d |
| 579 | Track | 2022-09-01 A → 2022-07-15 A (-48d) | 2022-09-01 A → 2022-11-15 A (+75d) | 1d → 88d |  |
| 580 | Ventanas emergentes de validación | 2022-09-01 → 2022-07-15 A (-48d) | 2022-09-01 → 2022-12-19 (+109d) | 1d → 88d | none → 74d |
| 581 | **Dashboard Fondos FISM** | 2022-09-01 A → 2022-07-15 A (-48d) | 2022-09-01 → 2022-12-19 (+109d) | 1d → 112d | none → 74d |
| 582 | Pantalla principal | 2022-09-01 → 2022-07-15 A (-48d) | 2022-09-01 → 2022-12-19 (+109d) | 1d → 88d | none → 74d |
| 583 | Busqueda de Mes | 2022-09-01 → 2022-07-15 A (-48d) | 2022-09-01 → 2022-12-19 (+109d) | 1d → 88d | none → 74d |
| 584 | Busqueda de Año | 2022-09-01 → 2022-07-15 A (-48d) | 2022-09-01 → 2022-12-19 (+109d) | 1d → 88d | none → 74d |
| 585 | Busqueda | 2022-09-01 → 2022-07-15 A (-48d) | 2022-09-01 → 2022-12-19 (+109d) | 1d → 88d | none → 74d |
| 586 | Proceso de Autorización | 2022-09-01 → 2022-07-15 A (-48d) | 2022-09-01 → 2022-12-19 (+109d) | 1d → 88d | none → 74d |
| 587 | Proceso de Envío | 2022-09-01 → 2022-07-15 A (-48d) | 2022-09-01 → 2022-12-19 (+109d) | 1d → 88d | none → 74d |
| 588 | Track | 2022-09-01 A → 2022-07-15 A (-48d) | 2022-09-01 A → 2022-11-15 A (+75d) | 1d → 88d |  |
| 589 | Ventanas emergentes de validación | 2022-09-01 → 2022-07-15 A (-48d) | 2022-09-01 → 2022-12-19 (+109d) | 1d → 88d | none → 74d |
| 590 | **Administración de Fondo ultra crecimiento Zona metropolitana y no Metropolitana** | 2022-09-01 A → 2022-07-15 A (-48d) | 2022-09-01 → 2022-12-19 (+109d) | 1d → 112d | none → 74d |
| 591 | Pantalla principal | 2022-09-01 → 2022-07-15 A (-48d) | 2022-09-01 → 2022-12-19 (+109d) | 1d → 88d | none → 74d |
| 592 | Filtro mes | 2022-09-01 → 2022-07-15 A (-48d) | 2022-09-01 → 2022-12-19 (+109d) | 1d → 88d | none → 74d |
| 593 | Filtro año | 2022-09-01 → 2022-07-15 A (-48d) | 2022-09-01 → 2022-12-19 (+109d) | 1d → 88d | none → 74d |
| 594 | Filtro busqueda | 2022-09-01 → 2022-07-15 A (-48d) | 2022-09-01 → 2022-12-19 (+109d) | 1d → 88d | none → 74d |
| 595 | Configuración de Dashboard | 2022-09-01 → 2022-07-15 A (-48d) | 2022-09-01 → 2022-12-19 (+109d) | 1d → 88d | none → 74d |
| 596 | Exportación de dashboard PDF | 2022-09-01 → 2022-07-15 A (-48d) | 2022-09-01 → 2022-12-19 (+109d) | 1d → 88d | none → 74d |
| 597 | Exportación de dashboard Excel | 2022-09-01 → 2022-07-15 A (-48d) | 2022-09-01 → 2022-12-19 (+109d) | 1d → 88d | none → 74d |
| 598 | Paginación Dashboard | 2022-09-01 → 2022-07-15 A (-48d) | 2022-09-01 → 2022-12-19 (+109d) | 1d → 88d | none → 74d |
| 599 | Busqueda Dash board | 2022-09-01 → 2022-07-15 A (-48d) | 2022-09-01 → 2022-12-19 (+109d) | 1d → 88d | none → 74d |
| 600 | Ventanas emergentes de Autorizar por municipio | 2022-09-01 → 2022-07-15 A (-48d) | 2022-09-01 → 2022-12-19 (+109d) | 1d → 88d | none → 74d |
| 601 | Ventanas emergentes de Track por municipio | 2022-09-01 A → 2022-07-15 A (-48d) | 2022-09-01 A → 2022-11-15 A (+75d) | 1d → 88d |  |
| 602 | Ventanas emergentes de detalles por municipio | 2022-09-01 → 2022-07-15 A (-48d) | 2022-09-01 → 2022-12-19 (+109d) | 1d → 88d | none → 74d |
| 603 | Ventanas emergentes de Adjuntar oficio por municipio | 2022-09-01 → 2022-07-15 A (-48d) | 2022-09-01 → 2022-12-19 (+109d) | 1d → 88d | none → 74d |
| 604 | Ventana repositorio de oficios por municipio | 2022-09-01 → 2022-07-15 A (-48d) | 2022-09-01 → 2022-12-19 (+109d) | 1d → 88d | none → 74d |
| 605 | boton borrar oficio | 2022-09-01 → 2022-07-15 A (-48d) | 2022-09-01 → 2022-12-19 (+109d) | 1d → 88d | none → 74d |

| ID | Task | Start | Finish | Duration | Total float |
| --- | --- | --- | --- | --- | --- |
| 606 | boton configurar oficio | 2022-09-01 → 2022-07-15 A (-48d) | 2022-09-01 → 2022-12-19 (+109d) | 1d → 88d | none → 74d |
| 607 | **Administración de Fondo descentralizado Zona Metropolitana y no Metropolitana** | 2022-09-01 A → 2022-07-15 A (-48d) | 2022-09-01 → 2022-12-19 (+109d) | 1d → 112d | none → 74d |
| 608 | Pantalla principal | 2022-09-01 → 2022-07-15 A (-48d) | 2022-09-01 → 2022-12-19 (+109d) | 1d → 88d | none → 74d |
| 609 | Filtro mes | 2022-09-01 → 2022-07-15 A (-48d) | 2022-09-01 → 2022-12-19 (+109d) | 1d → 88d | none → 74d |
| 610 | Filtro año | 2022-09-01 → 2022-07-15 A (-48d) | 2022-09-01 → 2022-12-19 (+109d) | 1d → 88d | none → 74d |
| 611 | Filtro busqueda | 2022-09-01 → 2022-07-15 A (-48d) | 2022-09-01 → 2022-12-19 (+109d) | 1d → 88d | none → 74d |
| 612 | Configuración de Dashboard | 2022-09-01 → 2022-07-15 A (-48d) | 2022-09-01 → 2022-12-19 (+109d) | 1d → 88d | none → 74d |
| 613 | Exportación de dashboard PDF | 2022-09-01 → 2022-07-15 A (-48d) | 2022-09-01 → 2022-12-19 (+109d) | 1d → 88d | none → 74d |
| 614 | Exportación de dashboard Excel | 2022-09-01 → 2022-07-15 A (-48d) | 2022-09-01 → 2022-12-19 (+109d) | 1d → 88d | none → 74d |
| 615 | Paginación Dashboard | 2022-09-01 → 2022-07-15 A (-48d) | 2022-09-01 → 2022-12-19 (+109d) | 1d → 88d | none → 74d |
| 616 | Busqueda Dash board | 2022-09-01 → 2022-07-15 A (-48d) | 2022-09-01 → 2022-12-19 (+109d) | 1d → 88d | none → 74d |
| 617 | Ventanas emergentes de Autorizar por municipio | 2022-09-01 → 2022-07-15 A (-48d) | 2022-09-01 → 2022-12-19 (+109d) | 1d → 88d | none → 74d |
| 618 | Ventanas emergentes de Track por municipio | 2022-09-01 A → 2022-07-15 A (-48d) | 2022-09-01 A → 2022-11-15 A (+75d) | 1d → 88d |  |
| 619 | Ventanas emergentes de detalles por municipio | 2022-09-01 → 2022-07-15 A (-48d) | 2022-09-01 → 2022-12-19 (+109d) | 1d → 88d | none → 74d |
| 620 | Ventanas emergentes de Adjuntar oficio por municipio | 2022-09-01 → 2022-07-15 A (-48d) | 2022-09-01 → 2022-12-19 (+109d) | 1d → 88d | none → 74d |
| 621 | Ventana repositorio de oficios por municipio | 2022-09-01 → 2022-07-15 A (-48d) | 2022-09-01 → 2022-12-19 (+109d) | 1d → 88d | none → 74d |
| 622 | boton borrar oficio | 2022-09-01 → 2022-07-15 A (-48d) | 2022-09-01 → 2022-12-19 (+109d) | 1d → 88d | none → 74d |
| 623 | boton configurar oficio | 2022-09-01 → 2022-07-15 A (-48d) | 2022-09-01 → 2022-12-19 (+109d) | 1d → 88d | none → 74d |
| 624 | **Administración de Fondo de seguridad para municipios Metropolitanos y no Metropolitanos** | 2022-09-01 A → 2022-07-15 A (-48d) | 2022-09-01 → 2022-12-19 (+109d) | 1d → 112d | none → 74d |
| 625 | Pantalla principal | 2022-09-01 → 2022-07-15 A (-48d) | 2022-09-01 → 2022-12-19 (+109d) | 1d → 88d | none → 74d |
| 626 | Filtro mes | 2022-09-01 → 2022-07-15 A (-48d) | 2022-09-01 → 2022-12-19 (+109d) | 1d → 88d | none → 74d |
| 627 | Filtro año | 2022-09-01 → 2022-07-15 A (-48d) | 2022-09-01 → 2022-12-19 (+109d) | 1d → 88d | none → 74d |
| 628 | Filtro busqueda | 2022-09-01 → 2022-07-15 A (-48d) | 2022-09-01 → 2022-12-19 (+109d) | 1d → 88d | none → 74d |
| 629 | Configuración de Dashboard | 2022-09-01 → 2022-07-15 A (-48d) | 2022-09-01 → 2022-12-19 (+109d) | 1d → 88d | none → 74d |
| 630 | Exportación de dashboard PDF | 2022-09-01 → 2022-07-15 A (-48d) | 2022-09-01 → 2022-12-19 (+109d) | 1d → 88d | none → 74d |
| 631 | Exportación de dashboard Excel | 2022-09-01 → 2022-07-15 A (-48d) | 2022-09-01 → 2022-12-19 (+109d) | 1d → 88d | none → 74d |
| 632 | Paginación Dashboard | 2022-09-01 → 2022-07-15 A (-48d) | 2022-09-01 → 2022-12-19 (+109d) | 1d → 88d | none → 74d |
| 633 | Busqueda Dash board | 2022-09-01 → 2022-07-15 A (-48d) | 2022-09-01 → 2022-12-19 (+109d) | 1d → 88d | none → 74d |
| 634 | Ventanas emergentes de Autorizar | 2022-09-01 → 2022-07-15 A (-48d) | 2022-09-01 → 2022-12-19 (+109d) | 1d → 88d | none → 74d |
| 635 | Ventanas emergentes de Enviar | 2022-09-01 → 2022-07-15 A (-48d) | 2022-09-01 → 2022-12-19 (+109d) | 1d → 88d | none → 74d |
| 636 | Ventanas emergentes de Track | 2022-09-01 A → 2022-07-15 A (-48d) | 2022-09-01 A → 2022-11-15 A (+75d) | 1d → 88d |  |
| 637 | **Administración de Fondo de desarrollo municipal Metropolitanos y no Metropolitanos** | 2022-09-01 A → 2022-07-15 A (-48d) | 2022-09-01 → 2022-12-19 (+109d) | 1d → 112d | none → 74d |
| 638 | Pantalla principal | 2022-09-01 → 2022-07-15 A (-48d) | 2022-09-01 → 2022-12-19 (+109d) | 1d → 88d | none → 74d |
| 639 | Filtro mes | 2022-09-01 → 2022-07-15 A (-48d) | 2022-09-01 → 2022-12-19 (+109d) | 1d → 88d | none → 74d |
| 640 | Filtro año | 2022-09-01 → 2022-07-15 A (-48d) | 2022-09-01 → 2022-12-19 (+109d) | 1d → 88d | none → 74d |
| 641 | Filtro busqueda | 2022-09-01 → 2022-07-15 A (-48d) | 2022-09-01 → 2022-12-19 (+109d) | 1d → 88d | none → 74d |
| 642 | Configuración de Dashboard | 2022-09-01 → 2022-07-15 A (-48d) | 2022-09-01 → 2022-12-19 (+109d) | 1d → 88d | none → 74d |
| 643 | Exportación de dashboard PDF | 2022-09-01 → 2022-07-15 A (-48d) | 2022-09-01 → 2022-12-19 (+109d) | 1d → 88d | none → 74d |
| 644 | Exportación de dashboard Excel | 2022-09-01 → 2022-07-15 A (-48d) | 2022-09-01 → 2022-12-19 (+109d) | 1d → 88d | none → 74d |
| 645 | Paginación Dashboard | 2022-09-01 → 2022-07-15 A (-48d) | 2022-09-01 → 2022-12-19 (+109d) | 1d → 88d | none → 74d |
| 646 | Busqueda Dash board | 2022-09-01 → 2022-07-15 A (-48d) | 2022-09-01 → 2022-12-19 (+109d) | 1d → 88d | none → 74d |
| 647 | Ventanas emergentes de Autorizar | 2022-09-01 → 2022-07-15 A (-48d) | 2022-09-01 → 2022-12-19 (+109d) | 1d → 88d | none → 74d |
| 648 | Ventanas emergentes de Enviar | 2022-09-01 → 2022-07-15 A (-48d) | 2022-09-01 → 2022-12-19 (+109d) | 1d → 88d | none → 74d |
| 649 | Ventanas emergentes de Track | 2022-09-01 A → 2022-07-15 A (-48d) | 2022-09-01 A → 2022-11-15 A (+75d) | 1d → 88d |  |
| 650 | Módulo contacto con municipios | 2022-09-01 → 2022-07-15 A (-48d) | 2022-09-01 → 2022-12-19 (+109d) | 1d → 88d | none → 74d |
| 651 | Generador de reportes | 2022-09-01 → 2022-07-15 A (-48d) | 2022-09-01 → 2022-12-19 (+109d) | 1d → 88d | none → 74d |
| 652 | Generador de Estadísticas | 2022-09-01 → 2022-07-15 A (-48d) | 2022-09-01 → 2022-12-19 (+109d) | 1d → 88d | none → 74d |
| 653 | Dashboard Calendario | 2022-09-01 → 2022-07-15 A (-48d) | 2022-09-01 → 2022-12-19 (+109d) | 1d → 88d | none → 74d |
| 655 | **Módulo DCCP** | 2022-09-01 → 2022-11-15 A (+75d) | 2022-11-14 → 2022-12-15 (+31d) | 52.75d → 23d | none → 76d |
| 656 | **Dashboard Perfil DCCP** | 2022-09-01 → 2022-11-15 A (+75d) | 2022-09-01 → 2022-12-15 (+105d) | 1d → 23d | none → 76d |
| 657 | Bloqueo de Sesión | 2022-09-01 → 2022-11-15 A (+75d) | 2022-09-01 → 2022-12-15 (+105d) | 1d → 23d | none → 76d |
| 658 | Perfil | 2022-09-01 → 2022-11-15 A (+75d) | 2022-09-01 → 2022-12-15 (+105d) | 1d → 23d | none → 76d |
| 659 | Pop up Notificaciones | 2022-09-01 → 2022-11-15 A (+75d) | 2022-09-01 → 2022-12-15 (+105d) | 1d → 23d | none → 76d |
| 660 | Contador de Notificaciones (Icono campanita) | 2022-09-01 → 2022-11-15 A (+75d) | 2022-09-01 → 2022-12-15 (+105d) | 1d → 23d | none → 76d |
| 661 | Bandeja entrada de Notificaciones | 2022-09-01 → 2022-11-15 A (+75d) | 2022-09-01 → 2022-12-15 (+105d) | 1d → 23d | none → 76d |
| 662 | Configuración de Consulta | 2022-09-01 → 2022-11-15 A (+75d) | 2022-09-01 → 2022-12-15 (+105d) | 1d → 23d | none → 76d |
| 664 | **Módulo DAF** | 2022-09-01 → 2022-11-15 A (+75d) | 2022-11-14 → 2022-12-15 (+31d) | 52.75d → 23d | none → 76d |
| 665 | **Dashboard Perfil DAF** | 2022-09-01 → 2022-11-15 A (+75d) | 2022-09-01 → 2022-12-15 (+105d) | 1d → 23d | none → 76d |
| 666 | Pantalla Perfil | 2022-09-01 → 2022-11-15 A (+75d) | 2022-09-01 → 2022-12-15 (+105d) | 1d → 23d | none → 76d |
| 667 | Pop up Notificaciones | 2022-09-01 → 2022-11-15 A (+75d) | 2022-09-01 → 2022-12-15 (+105d) | 1d → 23d | none → 76d |
| 668 | Contador de Notificaciones (Icono campanita) | 2022-09-01 → 2022-11-15 A (+75d) | 2022-09-01 → 2022-12-15 (+105d) | 1d → 23d | none → 76d |
| 669 | Bandeja entrada de Notificaciones | 2022-09-01 → 2022-11-15 A (+75d) | 2022-09-01 → 2022-12-15 (+105d) | 1d → 23d | none → 76d |
| 670 | Carga de Speis | 2022-09-01 → 2022-11-15 A (+75d) | 2022-09-01 → 2022-12-15 (+105d) | 1d → 23d | none → 76d |
| 671 | Generación de Estadísticas | 2022-09-01 → 2022-11-15 A (+75d) | 2022-09-01 → 2022-12-15 (+105d) | 1d → 23d | none → 76d |
| 672 | Generacion de graficas | 2022-09-01 → 2022-11-15 A (+75d) | 2022-09-01 → 2022-12-15 (+105d) | 1d → 23d | none → 76d |
| 674 | **Módulo DPCP** | 2022-09-01 → 2022-11-15 A (+75d) | 2022-11-14 → 2022-12-15 (+31d) | 52.75d → 23d | none → 76d |
| 675 | **Dashboard Perfil DPCP** | 2022-09-01 → 2022-11-15 A (+75d) | 2022-09-01 → 2022-12-15 (+105d) | 1d → 23d | none → 76d |
| 676 | Pantalla Perfil | 2022-09-01 → 2022-11-15 A (+75d) | 2022-09-01 → 2022-12-15 (+105d) | 1d → 23d | none → 76d |
| 677 | Pop up Notificaciones | 2022-09-01 → 2022-11-15 A (+75d) | 2022-09-01 → 2022-12-15 (+105d) | 1d → 23d | none → 76d |
| 678 | Contador de Notificaciones (Icono campanita) | 2022-09-01 → 2022-11-15 A (+75d) | 2022-09-01 → 2022-12-15 (+105d) | 1d → 23d | none → 76d |

| ID | Task | Start | Finish | Duration | Total float |
| --- | --- | --- | --- | --- | --- |
| 679 | Bandeja entrada de Notificaciones | 2022-09-01 → 2022-11-15 A (+75d) | 2022-09-01 → 2022-12-15 (+105d) | 1d → 23d | none → 76d |
| 680 | Asignación de Presupuesto | 2022-09-01 → 2022-11-15 A (+75d) | 2022-09-01 → 2022-12-15 (+105d) | 1d → 23d | none → 76d |
| 681 | Generación de Estadísticas | 2022-09-01 → 2022-11-15 A (+75d) | 2022-09-01 → 2022-12-15 (+105d) | 1d → 23d | none → 76d |
| 682 | Generación de graficas | 2022-09-01 → 2022-11-15 A (+75d) | 2022-09-01 → 2022-12-15 (+105d) | 1d → 23d | none → 76d |
| 684 | **Módulo Municipios** | 2022-09-01 A → 2022-11-15 A (+75d) | 2022-11-14 → 2022-12-15 (+31d) | 52.75d → 23d | none → 76d |
| 685 | **Base** | 2022-09-01 A → 2022-11-15 A (+75d) | 2022-09-01 → 2022-12-15 (+105d) | 1d → 23d | none → 76d |
| 686 | Buzon | 2022-09-01 → 2022-11-15 A (+75d) | 2022-09-01 → 2022-12-15 (+105d) | 1d → 23d | none → 76d |
| 687 | Login | 2022-09-01 A → 2022-11-15 A (+75d) | 2022-09-01 A → 2022-12-15 A (+105d) | 1d → 23d |  |
| 688 | Logout | 2022-09-01 A → 2022-11-15 A (+75d) | 2022-09-01 A → 2022-12-15 A (+105d) | 1d → 23d |  |
| 689 | Bloqueo de Sesión | 2022-09-01 → 2022-11-15 A (+75d) | 2022-09-01 → 2022-12-15 (+105d) | 1d → 23d | none → 76d |
| 690 | Perfil | 2022-09-01 → 2022-11-15 A (+75d) | 2022-09-01 → 2022-12-15 (+105d) | 1d → 23d | none → 76d |
| 691 | **Dashboard Inicio** | 2022-09-01 → 2022-11-15 A (+75d) | 2022-09-01 → 2022-12-15 (+105d) | 1d → 23d | none → 76d |
| 692 | Pantalla Principal | 2022-09-01 → 2022-11-15 A (+75d) | 2022-09-01 → 2022-12-15 (+105d) | 1d → 23d | none → 76d |
| 693 | Configuración de Dashboard | 2022-09-01 → 2022-11-15 A (+75d) | 2022-09-01 → 2022-12-15 (+105d) | 1d → 23d | none → 76d |
| 694 | Ventanas emergentes de validación | 2022-09-01 → 2022-11-15 A (+75d) | 2022-09-01 → 2022-12-15 (+105d) | 1d → 23d | none → 76d |
| 695 | Ruleta imágenes | 2022-09-01 → 2022-11-15 A (+75d) | 2022-09-01 → 2022-12-15 (+105d) | 1d → 23d | none → 76d |
| 696 | Mensaje de Bienvenida | 2022-09-01 → 2022-11-15 A (+75d) | 2022-09-01 → 2022-12-15 (+105d) | 1d → 23d | none → 76d |
| 697 | **Mis Cuentas** | 2022-09-01 → 2022-11-15 A (+75d) | 2022-09-01 → 2022-12-15 (+105d) | 1d → 23d | none → 76d |
| 698 | Pantalla Principal | 2022-09-01 → 2022-11-15 A (+75d) | 2022-09-01 → 2022-12-15 (+105d) | 1d → 23d | none → 76d |
| 699 | Agregar | 2022-09-01 → 2022-11-15 A (+75d) | 2022-09-01 → 2022-12-15 (+105d) | 1d → 23d | none → 76d |
| 700 | Editar | 2022-09-01 → 2022-11-15 A (+75d) | 2022-09-01 → 2022-12-15 (+105d) | 1d → 23d | none → 76d |
| 701 | Eliminar | 2022-09-01 → 2022-11-15 A (+75d) | 2022-09-01 → 2022-12-15 (+105d) | 1d → 23d | none → 76d |
| 702 | Configuración de Dashboard | 2022-09-01 → 2022-11-15 A (+75d) | 2022-09-01 → 2022-12-15 (+105d) | 1d → 23d | none → 76d |
| 703 | Exportación de dashboard PDF | 2022-09-01 → 2022-11-15 A (+75d) | 2022-09-01 → 2022-12-15 (+105d) | 1d → 23d | none → 76d |
| 704 | Exportación de dashboard Excel | 2022-09-01 → 2022-11-15 A (+75d) | 2022-09-01 → 2022-12-15 (+105d) | 1d → 23d | none → 76d |
| 705 | Paginación Dashboard | 2022-09-01 → 2022-11-15 A (+75d) | 2022-09-01 → 2022-12-15 (+105d) | 1d → 23d | none → 76d |
| 706 | Busqueda Dash board | 2022-09-01 → 2022-11-15 A (+75d) | 2022-09-01 → 2022-12-15 (+105d) | 1d → 23d | none → 76d |
| 707 | Ventanas emergentes de validación | 2022-09-01 → 2022-11-15 A (+75d) | 2022-09-01 → 2022-12-15 (+105d) | 1d → 23d | none → 76d |
| 708 | **Solicitud de Recursos** | 2022-09-01 → 2022-11-15 A (+75d) | 2022-09-01 → 2022-12-15 (+105d) | 1d → 23d | none → 76d |
| 709 | Pantalla Principal | 2022-09-01 → 2022-11-15 A (+75d) | 2022-09-01 → 2022-12-15 (+105d) | 1d → 23d | none → 76d |
| 710 | Agregar | 2022-09-01 → 2022-11-15 A (+75d) | 2022-09-01 → 2022-12-15 (+105d) | 1d → 23d | none → 76d |
| 711 | Editar | 2022-09-01 → 2022-11-15 A (+75d) | 2022-09-01 → 2022-12-15 (+105d) | 1d → 23d | none → 76d |
| 712 | Eliminar | 2022-09-01 → 2022-11-15 A (+75d) | 2022-09-01 → 2022-12-15 (+105d) | 1d → 23d | none → 76d |
| 713 | Configuración de Dashboard | 2022-09-01 → 2022-11-15 A (+75d) | 2022-09-01 → 2022-12-15 (+105d) | 1d → 23d | none → 76d |
| 714 | Exportación de dashboard PDF | 2022-09-01 → 2022-11-15 A (+75d) | 2022-09-01 → 2022-12-15 (+105d) | 1d → 23d | none → 76d |
| 715 | Exportación de dashboard Excel | 2022-09-01 → 2022-11-15 A (+75d) | 2022-09-01 → 2022-12-15 (+105d) | 1d → 23d | none → 76d |
| 716 | Paginación Dashboard | 2022-09-01 → 2022-11-15 A (+75d) | 2022-09-01 → 2022-12-15 (+105d) | 1d → 23d | none → 76d |
| 717 | Busqueda Dash board | 2022-09-01 → 2022-11-15 A (+75d) | 2022-09-01 → 2022-12-15 (+105d) | 1d → 23d | none → 76d |
| 718 | Ventanas emergentes de validación | 2022-09-01 → 2022-11-15 A (+75d) | 2022-09-01 → 2022-12-15 (+105d) | 1d → 23d | none → 76d |
| 719 | Boton Detalles | 2022-09-01 → 2022-11-15 A (+75d) | 2022-09-01 → 2022-12-15 (+105d) | 1d → 23d | none → 76d |
| 720 | **Dashboard Ayuda** | 2022-09-01 → 2022-11-15 A (+75d) | 2022-09-01 → 2022-12-15 (+105d) | 1d → 23d | none → 76d |
| 721 | Pantalla principal | 2022-09-01 → 2022-11-15 A (+75d) | 2022-09-01 → 2022-12-15 (+105d) | 1d → 23d | none → 76d |
| 722 | Configuracion de Enlaces | 2022-09-01 → 2022-11-15 A (+75d) | 2022-09-01 → 2022-12-15 (+105d) | 1d → 23d | none → 76d |
| 723 | **Recepcion de Recursos Participaciones Federales** | 2022-09-01 → 2022-11-15 A (+75d) | 2022-09-01 → 2022-12-15 (+105d) | 1d → 23d | none → 76d |
| 724 | Pantalla Principal | 2022-09-01 → 2022-11-15 A (+75d) | 2022-09-01 → 2022-12-15 (+105d) | 1d → 23d | none → 76d |
| 725 | Agregar | 2022-09-01 → 2022-11-15 A (+75d) | 2022-09-01 → 2022-12-15 (+105d) | 1d → 23d | none → 76d |
| 726 | Editar | 2022-09-01 → 2022-11-15 A (+75d) | 2022-09-01 → 2022-12-15 (+105d) | 1d → 23d | none → 76d |
| 727 | Eliminar | 2022-09-01 → 2022-11-15 A (+75d) | 2022-09-01 → 2022-12-15 (+105d) | 1d → 23d | none → 76d |
| 728 | Configuración de Dashboard | 2022-09-01 → 2022-11-15 A (+75d) | 2022-09-01 → 2022-12-15 (+105d) | 1d → 23d | none → 76d |
| 729 | Exportación de dashboard PDF | 2022-09-01 → 2022-11-15 A (+75d) | 2022-09-01 → 2022-12-15 (+105d) | 1d → 23d | none → 76d |
| 730 | Exportación de dashboard Excel | 2022-09-01 → 2022-11-15 A (+75d) | 2022-09-01 → 2022-12-15 (+105d) | 1d → 23d | none → 76d |
| 731 | Paginación Dashboard | 2022-09-01 → 2022-11-15 A (+75d) | 2022-09-01 → 2022-12-15 (+105d) | 1d → 23d | none → 76d |
| 732 | Busqueda Dash board | 2022-09-01 → 2022-11-15 A (+75d) | 2022-09-01 → 2022-12-15 (+105d) | 1d → 23d | none → 76d |
| 733 | Ventanas emergentes de validación | 2022-09-01 → 2022-11-15 A (+75d) | 2022-09-01 → 2022-12-15 (+105d) | 1d → 23d | none → 76d |
| 734 | **Recepcion de Recursos Participaciones Estatales** | 2022-09-01 → 2022-11-15 A (+75d) | 2022-09-01 → 2022-12-15 (+105d) | 1d → 23d | none → 76d |
| 735 | Pantalla Principal | 2022-09-01 → 2022-11-15 A (+75d) | 2022-09-01 → 2022-12-15 (+105d) | 1d → 23d | none → 76d |
| 736 | Agregar | 2022-09-01 → 2022-11-15 A (+75d) | 2022-09-01 → 2022-12-15 (+105d) | 1d → 23d | none → 76d |
| 737 | Editar | 2022-09-01 → 2022-11-15 A (+75d) | 2022-09-01 → 2022-12-15 (+105d) | 1d → 23d | none → 76d |
| 738 | Eliminar | 2022-09-01 → 2022-11-15 A (+75d) | 2022-09-01 → 2022-12-15 (+105d) | 1d → 23d | none → 76d |
| 739 | Configuración de Dashboard | 2022-09-01 → 2022-11-15 A (+75d) | 2022-09-01 → 2022-12-15 (+105d) | 1d → 23d | none → 76d |
| 740 | Exportación de dashboard PDF | 2022-09-01 → 2022-11-15 A (+75d) | 2022-09-01 → 2022-12-15 (+105d) | 1d → 23d | none → 76d |
| 741 | Exportación de dashboard Excel | 2022-09-01 → 2022-11-15 A (+75d) | 2022-09-01 → 2022-12-15 (+105d) | 1d → 23d | none → 76d |
| 742 | Paginación Dashboard | 2022-09-01 → 2022-11-15 A (+75d) | 2022-09-01 → 2022-12-15 (+105d) | 1d → 23d | none → 76d |
| 743 | Busqueda Dash board | 2022-09-01 → 2022-11-15 A (+75d) | 2022-09-01 → 2022-12-15 (+105d) | 1d → 23d | none → 76d |
| 744 | Ventanas emergentes de validación | 2022-09-01 → 2022-11-15 A (+75d) | 2022-09-01 → 2022-12-15 (+105d) | 1d → 23d | none → 76d |
| 745 | **Recepcion de Recursos Aportaciones Federales** | 2022-09-01 → 2022-11-15 A (+75d) | 2022-09-01 → 2022-12-15 (+105d) | 1d → 23d | none → 76d |
| 746 | Pantalla Principal | 2022-09-01 → 2022-11-15 A (+75d) | 2022-09-01 → 2022-12-15 (+105d) | 1d → 23d | none → 76d |
| 747 | Agregar | 2022-09-01 → 2022-11-15 A (+75d) | 2022-09-01 → 2022-12-15 (+105d) | 1d → 23d | none → 76d |
| 748 | Editar | 2022-09-01 → 2022-11-15 A (+75d) | 2022-09-01 → 2022-12-15 (+105d) | 1d → 23d | none → 76d |
| 749 | Eliminar | 2022-09-01 → 2022-11-15 A (+75d) | 2022-09-01 → 2022-12-15 (+105d) | 1d → 23d | none → 76d |

| ID | Task | Start | Finish | Duration | Total float |
| --- | --- | --- | --- | --- | --- |
| 750 | Configuración de Dashboard | 2022-09-01 → 2022-11-15 A (+75d) | 2022-09-01 → 2022-12-15 (+105d) | 1d → 23d | none → 76d |
| 751 | Exportación de dashboard PDF | 2022-09-01 → 2022-11-15 A (+75d) | 2022-09-01 → 2022-12-15 (+105d) | 1d → 23d | none → 76d |
| 752 | Exportación de dashboard Excel | 2022-09-01 → 2022-11-15 A (+75d) | 2022-09-01 → 2022-12-15 (+105d) | 1d → 23d | none → 76d |
| 753 | Paginación Dashboard | 2022-09-01 → 2022-11-15 A (+75d) | 2022-09-01 → 2022-12-15 (+105d) | 1d → 23d | none → 76d |
| 754 | Busqueda Dash board | 2022-09-01 → 2022-11-15 A (+75d) | 2022-09-01 → 2022-12-15 (+105d) | 1d → 23d | none → 76d |
| 755 | Ventanas emergentes de validación | 2022-09-01 → 2022-11-15 A (+75d) | 2022-09-01 → 2022-12-15 (+105d) | 1d → 23d | none → 76d |
| 756 | **Recepcion de Recursos Aportaciones Estatales** | 2022-09-01 → 2022-11-15 A (+75d) | 2022-09-01 → 2022-12-15 (+105d) | 1d → 23d | none → 76d |
| 757 | Pantalla Principal | 2022-09-01 → 2022-11-15 A (+75d) | 2022-09-01 → 2022-12-15 (+105d) | 1d → 23d | none → 76d |
| 758 | Agregar | 2022-09-01 → 2022-11-15 A (+75d) | 2022-09-01 → 2022-12-15 (+105d) | 1d → 23d | none → 76d |
| 759 | Editar | 2022-09-01 → 2022-11-15 A (+75d) | 2022-09-01 → 2022-12-15 (+105d) | 1d → 23d | none → 76d |
| 760 | Eliminar | 2022-09-01 → 2022-11-15 A (+75d) | 2022-09-01 → 2022-12-15 (+105d) | 1d → 23d | none → 76d |
| 761 | Configuración de Dashboard | 2022-09-01 → 2022-11-15 A (+75d) | 2022-09-01 → 2022-12-15 (+105d) | 1d → 23d | none → 76d |
| 762 | Exportación de dashboard PDF | 2022-09-01 → 2022-11-15 A (+75d) | 2022-09-01 → 2022-12-15 (+105d) | 1d → 23d | none → 76d |
| 763 | Exportación de dashboard Excel | 2022-09-01 → 2022-11-15 A (+75d) | 2022-09-01 → 2022-12-15 (+105d) | 1d → 23d | none → 76d |
| 764 | Paginación Dashboard | 2022-09-01 → 2022-11-15 A (+75d) | 2022-09-01 → 2022-12-15 (+105d) | 1d → 23d | none → 76d |
| 765 | Busqueda Dash board | 2022-09-01 → 2022-11-15 A (+75d) | 2022-09-01 → 2022-12-15 (+105d) | 1d → 23d | none → 76d |
| 766 | Ventanas emergentes de validación | 2022-09-01 → 2022-11-15 A (+75d) | 2022-09-01 → 2022-12-15 (+105d) | 1d → 23d | none → 76d |
| 768 | **Módulo OPD** | 2022-09-01 → 2022-11-15 A (+75d) | 2022-11-14 → 2022-12-15 (+31d) | 52.75d → 23d | none → 76d |
| 769 | **Base** | 2022-09-01 → 2022-11-15 A (+75d) | 2022-09-01 → 2022-12-15 (+105d) | 1d → 23d | none → 76d |
| 770 | Perfil | 2022-09-01 → 2022-11-15 A (+75d) | 2022-09-01 → 2022-12-15 (+105d) | 1d → 23d | none → 76d |
| 771 | Pop up Notificaciones | 2022-09-01 → 2022-11-15 A (+75d) | 2022-09-01 → 2022-12-15 (+105d) | 1d → 23d | none → 76d |
| 772 | Contador de Notificaciones (Icono campanita) | 2022-09-01 → 2022-11-15 A (+75d) | 2022-09-01 → 2022-12-15 (+105d) | 1d → 23d | none → 76d |
| 773 | Bandeja entrada de Notificaciones | 2022-09-01 → 2022-11-15 A (+75d) | 2022-09-01 → 2022-12-15 (+105d) | 1d → 23d | none → 76d |
| 774 | **Dashboard mis cuentas** | 2022-09-01 → 2022-11-15 A (+75d) | 2022-09-01 → 2022-12-15 (+105d) | 1d → 23d | none → 76d |
| 775 | Pantalla Principal | 2022-09-01 → 2022-11-15 A (+75d) | 2022-09-01 → 2022-12-15 (+105d) | 1d → 23d | none → 76d |
| 776 | Configuración de Dashboard | 2022-09-01 → 2022-11-15 A (+75d) | 2022-09-01 → 2022-12-15 (+105d) | 1d → 23d | none → 76d |
| 777 | Exportación de dashboard PDF | 2022-09-01 → 2022-11-15 A (+75d) | 2022-09-01 → 2022-12-15 (+105d) | 1d → 23d | none → 76d |
| 778 | Exportación de dashboard Excel | 2022-09-01 → 2022-11-15 A (+75d) | 2022-09-01 → 2022-12-15 (+105d) | 1d → 23d | none → 76d |
| 779 | Paginación Dashboard | 2022-09-01 → 2022-11-15 A (+75d) | 2022-09-01 → 2022-12-15 (+105d) | 1d → 23d | none → 76d |
| 780 | Busqueda Dashboard | 2022-09-01 → 2022-11-15 A (+75d) | 2022-09-01 → 2022-12-15 (+105d) | 1d → 23d | none → 76d |
| 781 | Agregar | 2022-09-01 → 2022-11-15 A (+75d) | 2022-09-01 → 2022-12-15 (+105d) | 1d → 23d | none → 76d |
| 782 | Editar | 2022-09-01 → 2022-11-15 A (+75d) | 2022-09-01 → 2022-12-15 (+105d) | 1d → 23d | none → 76d |
| 783 | Eliminar | 2022-09-01 → 2022-11-15 A (+75d) | 2022-09-01 → 2022-12-15 (+105d) | 1d → 23d | none → 76d |
| 784 | Ventanas emergentes de validación | 2022-09-01 → 2022-11-15 A (+75d) | 2022-09-01 → 2022-12-15 (+105d) | 1d → 23d | none → 76d |
| 785 | **Dashboard Facturación** | 2022-09-01 → 2022-11-15 A (+75d) | 2022-09-01 → 2022-12-15 (+105d) | 1d → 23d | none → 76d |
| 786 | Pantalla Principal | 2022-09-01 → 2022-11-15 A (+75d) | 2022-09-01 → 2022-12-15 (+105d) | 1d → 23d | none → 76d |
| 787 | Configuración de Dashboard | 2022-09-01 → 2022-11-15 A (+75d) | 2022-09-01 → 2022-12-15 (+105d) | 1d → 23d | none → 76d |
| 788 | Exportación de dashboard PDF | 2022-09-01 → 2022-11-15 A (+75d) | 2022-09-01 → 2022-12-15 (+105d) | 1d → 23d | none → 76d |
| 789 | Exportación de dashboard Excel | 2022-09-01 → 2022-11-15 A (+75d) | 2022-09-01 → 2022-12-15 (+105d) | 1d → 23d | none → 76d |
| 790 | Paginación Dashboard | 2022-09-01 → 2022-11-15 A (+75d) | 2022-09-01 → 2022-12-15 (+105d) | 1d → 23d | none → 76d |
| 791 | Busqueda Dashboard | 2022-09-01 → 2022-11-15 A (+75d) | 2022-09-01 → 2022-12-15 (+105d) | 1d → 23d | none → 76d |
| 792 | Ventanas de visualización de detalle | 2022-09-01 → 2022-11-15 A (+75d) | 2022-09-01 → 2022-12-15 (+105d) | 1d → 23d | none → 76d |
| 793 | Busqueda por Año | 2022-09-01 → 2022-11-15 A (+75d) | 2022-09-01 → 2022-12-15 (+105d) | 1d → 23d | none → 76d |
| 794 | **Dashboard Solicitud de recursos** | 2022-09-01 → 2022-11-15 A (+75d) | 2022-09-01 → 2022-12-15 (+105d) | 1d → 23d | none → 76d |
| 795 | Pantalla Principal | 2022-09-01 → 2022-11-15 A (+75d) | 2022-09-01 → 2022-12-15 (+105d) | 1d → 23d | none → 76d |
| 796 | Configuración de Dashboard | 2022-09-01 → 2022-11-15 A (+75d) | 2022-09-01 → 2022-12-15 (+105d) | 1d → 23d | none → 76d |
| 797 | Exportación de dashboard PDF | 2022-09-01 → 2022-11-15 A (+75d) | 2022-09-01 → 2022-12-15 (+105d) | 1d → 23d | none → 76d |
| 798 | Exportación de dashboard Excel | 2022-09-01 → 2022-11-15 A (+75d) | 2022-09-01 → 2022-12-15 (+105d) | 1d → 23d | none → 76d |
| 799 | Paginación Dashboard | 2022-09-01 → 2022-11-15 A (+75d) | 2022-09-01 → 2022-12-15 (+105d) | 1d → 23d | none → 76d |
| 800 | **Busqueda Dashboard** | 2022-09-01 → 2022-11-15 A (+75d) | 2022-09-01 → 2022-12-15 (+105d) | 1d → 23d | none → 76d |
| 801 | Pantalla Principal | 2022-09-01 → 2022-11-15 A (+75d) | 2022-09-01 → 2022-12-15 (+105d) | 1d → 23d | none → 76d |
| 802 | Agregar | 2022-09-01 → 2022-11-15 A (+75d) | 2022-09-01 → 2022-12-15 (+105d) | 1d → 23d | none → 76d |
| 803 | Editar | 2022-09-01 → 2022-11-15 A (+75d) | 2022-09-01 → 2022-12-15 (+105d) | 1d → 23d | none → 76d |
| 804 | Eliminar | 2022-09-01 → 2022-11-15 A (+75d) | 2022-09-01 → 2022-12-15 (+105d) | 1d → 23d | none → 76d |
| 805 | Ventanas emergentes de validación | 2022-09-01 → 2022-11-15 A (+75d) | 2022-09-01 → 2022-12-15 (+105d) | 1d → 23d | none → 76d |
| 806 | Busqueda por Año | 2022-09-01 → 2022-11-15 A (+75d) | 2022-09-01 → 2022-12-15 (+105d) | 1d → 23d | none → 76d |
| 807 | Carga de documentos | 2022-09-01 → 2022-11-15 A (+75d) | 2022-09-01 → 2022-12-15 (+105d) | 1d → 23d | none → 76d |
| 808 | PDF generado por la solicitud de recursos | 2022-09-01 → 2022-11-15 A (+75d) | 2022-09-01 → 2022-12-15 (+105d) | 1d → 23d | none → 76d |
| 809 | **Dashboard menu preguntas frecuentes** | 2022-09-01 → 2022-11-15 A (+75d) | 2022-09-01 → 2022-12-15 (+105d) | 1d → 23d | none → 76d |
| 810 | Pantalla Principal | 2022-09-01 → 2022-11-15 A (+75d) | 2022-09-01 → 2022-12-15 (+105d) | 1d → 23d | none → 76d |
| 811 | Configuracion de dashboard | 2022-09-01 → 2022-11-15 A (+75d) | 2022-09-01 → 2022-12-15 (+105d) | 1d → 23d | none → 76d |
| 812 | **Dashboard Recepción de recursos** | 2022-09-01 → 2022-11-15 A (+75d) | 2022-09-01 → 2022-12-15 (+105d) | 1d → 23d | none → 76d |
| 813 | Pantalla Principal | 2022-09-01 → 2022-11-15 A (+75d) | 2022-09-01 → 2022-12-15 (+105d) | 1d → 23d | none → 76d |
| 814 | Configuracion de dashboard | 2022-09-01 → 2022-11-15 A (+75d) | 2022-09-01 → 2022-12-15 (+105d) | 1d → 23d | none → 76d |
| 815 | Exportación de dashboard PDF | 2022-09-01 → 2022-11-15 A (+75d) | 2022-09-01 → 2022-12-15 (+105d) | 1d → 23d | none → 76d |
| 816 | Exportación de dashboard Excel | 2022-09-01 → 2022-11-15 A (+75d) | 2022-09-01 → 2022-12-15 (+105d) | 1d → 23d | none → 76d |
| 817 | Paginación Dashboard | 2022-09-01 → 2022-11-15 A (+75d) | 2022-09-01 → 2022-12-15 (+105d) | 1d → 23d | none → 76d |
| 818 | Busqueda Dashboard | 2022-09-01 → 2022-11-15 A (+75d) | 2022-09-01 → 2022-12-15 (+105d) | 1d → 23d | none → 76d |
| 819 | Subida de Archivo | 2022-09-01 → 2022-11-15 A (+75d) | 2022-09-01 → 2022-12-15 (+105d) | 1d → 23d | none → 76d |
| 820 | **Dashboard Recepción de recursos sección participaciones estatales** | 2022-09-01 → 2022-11-15 A (+75d) | 2022-09-01 → 2022-12-15 (+105d) | 1d → 23d | none → 76d |

| ID | Task | Start | Finish | Duration | Complete | Total float |
| --- | --- | --- | --- | --- | --- | --- |
| 821 | Pantalla Principal | 2022-09-01 → 2022-11-15 A (+75d) | 2022-09-01 → 2022-12-15 (+105d) | 1d → 23d |  | none → 76d |
| 822 | Configuracion de dashboard | 2022-09-01 → 2022-11-15 A (+75d) | 2022-09-01 → 2022-12-15 (+105d) | 1d → 23d |  | none → 76d |
| 823 | Exportación de dashboard PDF | 2022-09-01 → 2022-11-15 A (+75d) | 2022-09-01 → 2022-12-15 (+105d) | 1d → 23d |  | none → 76d |
| 824 | Exportación de dashboard Excel | 2022-09-01 → 2022-11-15 A (+75d) | 2022-09-01 → 2022-12-15 (+105d) | 1d → 23d |  | none → 76d |
| 825 | Paginación Dashboard | 2022-09-01 → 2022-11-15 A (+75d) | 2022-09-01 → 2022-12-15 (+105d) | 1d → 23d |  | none → 76d |
| 826 | Busqueda Dashboard | 2022-09-01 → 2022-11-15 A (+75d) | 2022-09-01 → 2022-12-15 (+105d) | 1d → 23d |  | none → 76d |
| 827 | Subida de Archivo | 2022-09-01 → 2022-11-15 A (+75d) | 2022-09-01 → 2022-12-15 (+105d) | 1d → 23d |  | none → 76d |
| 828 | **Dashboard Recepción de recursos sección aportaciones federales** | 2022-09-01 → 2022-11-15 A (+75d) | 2022-09-01 → 2022-12-15 (+105d) | 1d → 23d |  | none → 76d |
| 829 | Pantalla Principal | 2022-09-01 → 2022-11-15 A (+75d) | 2022-09-01 → 2022-12-15 (+105d) | 1d → 23d |  | none → 76d |
| 830 | Configuracion de dashboard | 2022-09-01 → 2022-11-15 A (+75d) | 2022-09-01 → 2022-12-15 (+105d) | 1d → 23d |  | none → 76d |
| 831 | Exportación de dashboard PDF | 2022-09-01 → 2022-11-15 A (+75d) | 2022-09-01 → 2022-12-15 (+105d) | 1d → 23d |  | none → 76d |
| 832 | Exportación de dashboard Excel | 2022-09-01 → 2022-11-15 A (+75d) | 2022-09-01 → 2022-12-15 (+105d) | 1d → 23d |  | none → 76d |
| 833 | Paginación Dashboard | 2022-09-01 → 2022-11-15 A (+75d) | 2022-09-01 → 2022-12-15 (+105d) | 1d → 23d |  | none → 76d |
| 834 | Busqueda Dashboard | 2022-09-01 → 2022-11-15 A (+75d) | 2022-09-01 → 2022-12-15 (+105d) | 1d → 23d |  | none → 76d |
| 835 | Subida de Archivo | 2022-09-01 → 2022-11-15 A (+75d) | 2022-09-01 → 2022-12-15 (+105d) | 1d → 23d |  | none → 76d |
| 836 | **Dashboard Recepción de recursos sección aportaciones estatales** | 2022-09-01 → 2022-11-15 A (+75d) | 2022-09-01 → 2022-12-15 (+105d) | 1d → 23d |  | none → 76d |
| 837 | Pantalla Principal | 2022-09-01 → 2022-11-15 A (+75d) | 2022-09-01 → 2022-12-15 (+105d) | 1d → 23d |  | none → 76d |
| 838 | Configuracion de dashboard | 2022-09-01 → 2022-11-15 A (+75d) | 2022-09-01 → 2022-12-15 (+105d) | 1d → 23d |  | none → 76d |
| 839 | Exportación de dashboard PDF | 2022-09-01 → 2022-11-15 A (+75d) | 2022-09-01 → 2022-12-15 (+105d) | 1d → 23d |  | none → 76d |
| 840 | Exportación de dashboard Excel | 2022-09-01 → 2022-11-15 A (+75d) | 2022-09-01 → 2022-12-15 (+105d) | 1d → 23d |  | none → 76d |
| 841 | Paginación Dashboard | 2022-09-01 → 2022-11-15 A (+75d) | 2022-09-01 → 2022-12-15 (+105d) | 1d → 23d |  | none → 76d |
| 842 | Busqueda Dashboard | 2022-09-01 → 2022-11-15 A (+75d) | 2022-09-01 → 2022-12-15 (+105d) | 1d → 23d |  | none → 76d |
| 843 | Subida de Archivo | 2022-09-01 → 2022-11-15 A (+75d) | 2022-09-01 → 2022-12-15 (+105d) | 1d → 23d |  | none → 76d |
| 844 | **Diseño y Desarrollo FRONT** | 2022-07-15 → 2022-08-18 (+34d) | 2022-11-15 → 2023-02-23 (+100d) | 88d → 136d | 14% → 5% |  |
| 846 | **Módulo de Administración** | 2022-09-01 A → 2022-07-15 A (-48d) | 2022-11-14 → 2022-11-15 (+1d) | 52.75d → 88d | 46% → 6% |  |
| 860 | **Base** | 2022-09-01 A → 2022-07-15 A (-48d) | 2022-11-14 → 2022-11-15 (+1d) | 52.75d → 88d |  | none → 98d |
| 861 | Login | 2022-09-01 A → 2022-07-15 A (-48d) | 2022-11-14 A → 2022-11-15 A (+1d) | 52.75d → 88d |  |  |
| 862 | Logout | 2022-09-01 A → 2022-07-15 A (-48d) | 2022-11-14 A → 2022-11-15 A (+1d) | 52.75d → 88d |  |  |
| 863 | Bloqueo de Sesión | 2022-09-01 → 2022-07-15 A (-48d) | 2022-11-14 → 2022-11-15 (+1d) | 52.75d → 88d |  | none → 98d |
| 864 | Perfil | 2022-09-01 → 2022-07-15 A (-48d) | 2022-11-14 → 2022-11-15 (+1d) | 52.75d → 88d |  | none → 98d |
| 865 | **Administración de Usuarios** | 2022-09-01 → 2022-07-15 A (-48d) | 2022-09-01 → 2022-11-15 (+75d) | 1d → 88d |  | none → 98d |
| 866 | Agregar | 2022-09-01 → 2022-07-15 A (-48d) | 2022-09-01 → 2022-11-15 (+75d) | 1d → 88d |  | none → 98d |
| 867 | Pantalla Principal | 2022-09-01 → 2022-07-15 A (-48d) | 2022-09-01 → 2022-11-15 (+75d) | 1d → 88d |  | none → 98d |
| 868 | Editar | 2022-09-01 → 2022-07-15 A (-48d) | 2022-09-01 → 2022-11-15 (+75d) | 1d → 88d |  | none → 98d |
| 869 | Eliminar | 2022-09-01 → 2022-07-15 A (-48d) | 2022-09-01 → 2022-11-15 (+75d) | 1d → 88d |  | none → 98d |
| 870 | Configuración de Dashboard | 2022-09-01 → 2022-07-15 A (-48d) | 2022-09-01 → 2022-11-15 (+75d) | 1d → 88d |  | none → 98d |
| 871 | Exportación de dashboard PDF | 2022-09-01 → 2022-07-15 A (-48d) | 2022-09-01 → 2022-11-15 (+75d) | 1d → 88d |  | none → 98d |
| 872 | Exportación de dashboard Excel | 2022-09-01 → 2022-07-15 A (-48d) | 2022-09-01 → 2022-11-15 (+75d) | 1d → 88d |  | none → 98d |
| 873 | Paginación Dashboard | 2022-09-01 → 2022-07-15 A (-48d) | 2022-09-01 → 2022-11-15 (+75d) | 1d → 88d |  | none → 98d |
| 874 | Busqueda Dash board | 2022-09-01 → 2022-07-15 A (-48d) | 2022-09-01 → 2022-11-15 (+75d) | 1d → 88d |  | none → 98d |
| 875 | Ventanas emergentes de validación | 2022-09-01 → 2022-07-15 A (-48d) | 2022-09-01 → 2022-11-15 (+75d) | 1d → 88d |  | none → 98d |
| 876 | **Administración de Roles y Permisos** | 2022-09-01 → 2022-07-15 A (-48d) | 2022-09-01 → 2022-11-15 (+75d) | 1d → 88d |  | none → 98d |
| 877 | Pantalla Principal | 2022-09-01 → 2022-07-15 A (-48d) | 2022-09-01 → 2022-11-15 (+75d) | 1d → 88d |  | none → 98d |
| 878 | Agregar | 2022-09-01 → 2022-07-15 A (-48d) | 2022-09-01 → 2022-11-15 (+75d) | 1d → 88d |  | none → 98d |
| 879 | Editar | 2022-09-01 → 2022-07-15 A (-48d) | 2022-09-01 → 2022-11-15 (+75d) | 1d → 88d |  | none → 98d |
| 880 | Eliminar | 2022-09-01 → 2022-07-15 A (-48d) | 2022-09-01 → 2022-11-15 (+75d) | 1d → 88d |  | none → 98d |
| 881 | Configuración de Dashboard | 2022-09-01 → 2022-07-15 A (-48d) | 2022-09-01 → 2022-11-15 (+75d) | 1d → 88d |  | none → 98d |
| 882 | Exportación de dashboard PDF | 2022-09-01 → 2022-07-15 A (-48d) | 2022-09-01 → 2022-11-15 (+75d) | 1d → 88d |  | none → 98d |
| 883 | Exportación de dashboard Excel | 2022-09-01 → 2022-07-15 A (-48d) | 2022-09-01 → 2022-11-15 (+75d) | 1d → 88d |  | none → 98d |
| 884 | Paginación Dashboard | 2022-09-01 → 2022-07-15 A (-48d) | 2022-09-01 → 2022-11-15 (+75d) | 1d → 88d |  | none → 98d |
| 885 | Busqueda Dash board | 2022-09-01 → 2022-07-15 A (-48d) | 2022-09-01 → 2022-11-15 (+75d) | 1d → 88d |  | none → 98d |
| 886 | Ventanas emergentes de validación | 2022-09-01 → 2022-07-15 A (-48d) | 2022-09-01 → 2022-11-15 (+75d) | 1d → 88d |  | none → 98d |
| 888 | **Módulo CPH** | 2022-09-01 A → 2022-07-15 A (-48d) | 2022-11-14 → 2022-12-19 (+35d) | 52.75d → 112d |  | none → 74d |
| 889 | **Base** | 2022-09-01 → 2022-07-15 A (-48d) | 2022-09-01 → 2022-12-19 (+109d) | 1d → 112d |  | none → 74d |
| 890 | Perfil | 2022-09-01 → 2022-07-15 A (-48d) | 2022-09-01 → 2022-12-19 (+109d) | 1d → 88d |  | none → 74d |
| 891 | Pop up Notificaciones | 2022-09-01 → 2022-07-15 A (-48d) | 2022-09-01 → 2022-12-19 (+109d) | 1d → 88d |  | none → 74d |
| 892 | Contador de Notificaciones (Icono campanita) | 2022-09-01 → 2022-07-15 A (-48d) | 2022-09-01 → 2022-12-19 (+109d) | 1d → 88d |  | none → 74d |
| 893 | Bandeja entrada de Notificaciones | 2022-09-01 → 2022-07-15 A (-48d) | 2022-09-01 → 2022-12-19 (+109d) | 1d → 88d |  | none → 74d |
| 894 | **Administración de Municipios** | 2022-09-01 → 2022-07-15 A (-48d) | 2022-09-01 → 2022-12-19 (+109d) | 1d → 112d |  | none → 74d |
| 895 | Pantalla Principal | 2022-09-01 → 2022-07-15 A (-48d) | 2022-09-01 → 2022-12-19 (+109d) | 1d → 88d |  | none → 74d |
| 896 | Agregar | 2022-09-01 → 2022-07-15 A (-48d) | 2022-09-01 → 2022-12-19 (+109d) | 1d → 88d |  | none → 74d |
| 897 | Editar | 2022-09-01 → 2022-07-15 A (-48d) | 2022-09-01 → 2022-12-19 (+109d) | 1d → 88d |  | none → 74d |
| 898 | Eliminar | 2022-09-01 → 2022-07-15 A (-48d) | 2022-09-01 → 2022-12-19 (+109d) | 1d → 88d |  | none → 74d |
| 899 | Configuración de Dashboard | 2022-09-01 → 2022-07-15 A (-48d) | 2022-09-01 → 2022-12-19 (+109d) | 1d → 88d |  | none → 74d |
| 900 | Exportación de dashboard PDF | 2022-09-01 → 2022-07-15 A (-48d) | 2022-09-01 → 2022-12-19 (+109d) | 1d → 88d |  | none → 74d |
| 901 | Exportación de dashboard Excel | 2022-09-01 → 2022-07-15 A (-48d) | 2022-09-01 → 2022-12-19 (+109d) | 1d → 88d |  | none → 74d |
| 902 | Paginación Dashboard | 2022-09-01 → 2022-07-15 A (-48d) | 2022-09-01 → 2022-12-19 (+109d) | 1d → 88d |  | none → 74d |
| 903 | Busqueda Dash board | 2022-09-01 → 2022-07-15 A (-48d) | 2022-09-01 → 2022-12-19 (+109d) | 1d → 88d |  | none → 74d |
| 904 | Ventanas emergentes de validación | 2022-09-01 → 2022-07-15 A (-48d) | 2022-09-01 → 2022-12-19 (+109d) | 1d → 88d |  | none → 74d |
| 905 | **Administración de Fondos** | 2022-09-01 → 2022-07-15 A (-48d) | 2022-09-01 → 2022-12-19 (+109d) | 1d → 112d |  | none → 74d |

| ID | Task | Start | Finish | Duration | Total float |
| --- | --- | --- | --- | --- | --- |
| 906 | Pantalla Principal | 2022-09-01 → 2022-07-15 A (-48d) | 2022-09-01 → 2022-12-19 (+109d) | 1d → 88d | none → 74d |
| 907 | Agregar | 2022-09-01 → 2022-07-15 A (-48d) | 2022-09-01 → 2022-12-19 (+109d) | 1d → 88d | none → 74d |
| 908 | Editar | 2022-09-01 → 2022-07-15 A (-48d) | 2022-09-01 → 2022-12-19 (+109d) | 1d → 88d | none → 74d |
| 909 | Eliminar | 2022-09-01 → 2022-07-15 A (-48d) | 2022-09-01 → 2022-12-19 (+109d) | 1d → 88d | none → 74d |
| 910 | Configuración de Dashboard | 2022-09-01 → 2022-07-15 A (-48d) | 2022-09-01 → 2022-12-19 (+109d) | 1d → 88d | none → 74d |
| 911 | Exportación de dashboard PDF | 2022-09-01 → 2022-07-15 A (-48d) | 2022-09-01 → 2022-12-19 (+109d) | 1d → 88d | none → 74d |
| 912 | Exportación de dashboard Excel | 2022-09-01 → 2022-07-15 A (-48d) | 2022-09-01 → 2022-12-19 (+109d) | 1d → 88d | none → 74d |
| 913 | Paginación Dashboard | 2022-09-01 → 2022-07-15 A (-48d) | 2022-09-01 → 2022-12-19 (+109d) | 1d → 88d | none → 74d |
| 914 | Busqueda Dash board | 2022-09-01 → 2022-07-15 A (-48d) | 2022-09-01 → 2022-12-19 (+109d) | 1d → 88d | none → 74d |
| 915 | Ventanas emergentes de validación | 2022-09-01 → 2022-07-15 A (-48d) | 2022-09-01 → 2022-12-19 (+109d) | 1d → 88d | none → 74d |
| 916 | **Administración de Presupuesto** | 2022-09-01 → 2022-07-15 A (-48d) | 2022-09-01 → 2022-12-19 (+109d) | 1d → 112d | none → 74d |
| 917 | Pantalla Principal | 2022-09-01 → 2022-07-15 A (-48d) | 2022-09-01 → 2022-12-19 (+109d) | 1d → 88d | none → 74d |
| 918 | Agregar | 2022-09-01 → 2022-07-15 A (-48d) | 2022-09-01 → 2022-12-19 (+109d) | 1d → 88d | none → 74d |
| 919 | Editar | 2022-09-01 → 2022-07-15 A (-48d) | 2022-09-01 → 2022-12-19 (+109d) | 1d → 88d | none → 74d |
| 920 | Eliminar | 2022-09-01 → 2022-07-15 A (-48d) | 2022-09-01 → 2022-12-19 (+109d) | 1d → 88d | none → 74d |
| 921 | Configuración de Dashboard | 2022-09-01 → 2022-07-15 A (-48d) | 2022-09-01 → 2022-12-19 (+109d) | 1d → 88d | none → 74d |
| 922 | Exportación de dashboard PDF | 2022-09-01 → 2022-07-15 A (-48d) | 2022-09-01 → 2022-12-19 (+109d) | 1d → 88d | none → 74d |
| 923 | Exportación de dashboard Excel | 2022-09-01 → 2022-07-15 A (-48d) | 2022-09-01 → 2022-12-19 (+109d) | 1d → 88d | none → 74d |
| 924 | Paginación Dashboard | 2022-09-01 → 2022-07-15 A (-48d) | 2022-09-01 → 2022-12-19 (+109d) | 1d → 88d | none → 74d |
| 925 | Busqueda Dash board | 2022-09-01 → 2022-07-15 A (-48d) | 2022-09-01 → 2022-12-19 (+109d) | 1d → 88d | none → 74d |
| 926 | Ventanas emergentes de validación | 2022-09-01 → 2022-07-15 A (-48d) | 2022-09-01 → 2022-12-19 (+109d) | 1d → 88d | none → 74d |
| 927 | **Administración de UMA** | 2022-09-01 → 2022-07-15 A (-48d) | 2022-09-01 → 2022-12-19 (+109d) | 1d → 112d | none → 74d |
| 928 | Pantalla Principal | 2022-09-01 → 2022-07-15 A (-48d) | 2022-09-01 → 2022-12-19 (+109d) | 1d → 88d | none → 74d |
| 929 | Agregar | 2022-09-01 → 2022-07-15 A (-48d) | 2022-09-01 → 2022-12-19 (+109d) | 1d → 88d | none → 74d |
| 930 | Editar | 2022-09-01 → 2022-07-15 A (-48d) | 2022-09-01 → 2022-12-19 (+109d) | 1d → 88d | none → 74d |
| 931 | Eliminar | 2022-09-01 → 2022-07-15 A (-48d) | 2022-09-01 → 2022-12-19 (+109d) | 1d → 88d | none → 74d |
| 932 | Configuración de Dashboard | 2022-09-01 → 2022-07-15 A (-48d) | 2022-09-01 → 2022-12-19 (+109d) | 1d → 88d | none → 74d |
| 933 | Exportación de dashboard PDF | 2022-09-01 → 2022-07-15 A (-48d) | 2022-09-01 → 2022-12-19 (+109d) | 1d → 88d | none → 74d |
| 934 | Exportación de dashboard Excel | 2022-09-01 → 2022-07-15 A (-48d) | 2022-09-01 → 2022-12-19 (+109d) | 1d → 88d | none → 74d |
| 935 | Paginación Dashboard | 2022-09-01 → 2022-07-15 A (-48d) | 2022-09-01 → 2022-12-19 (+109d) | 1d → 88d | none → 74d |
| 936 | Busqueda Dashboard | 2022-09-01 → 2022-07-15 A (-48d) | 2022-09-01 → 2022-12-19 (+109d) | 1d → 88d | none → 74d |
| 937 | Ventanas emergentes de validación | 2022-09-01 → 2022-07-15 A (-48d) | 2022-09-01 → 2022-12-19 (+109d) | 1d → 88d | none → 74d |
| 938 | **Administración de Inflación** | 2022-09-01 A → 2022-07-15 A (-48d) | 2022-09-01 → 2022-12-19 (+109d) | 1d → 112d | none → 74d |
| 939 | Pantalla Principal | 2022-09-01 → 2022-07-15 A (-48d) | 2022-09-01 → 2022-12-19 (+109d) | 1d → 88d | none → 74d |
| 940 | Plantilla Carga Masiva Inflación | 2022-09-01 A → 2022-07-15 A (-48d) | 2022-09-01 A → 2022-11-15 A (+75d) | 1d → 88d |  |
| 941 | Api Plantilla caga masiva Municipio - Inflación | 2022-09-01 A → 2022-07-15 A (-48d) | 2022-09-01 A → 2022-11-15 A (+75d) | 1d → 88d |  |
| 942 | Agregar | 2022-09-01 → 2022-07-15 A (-48d) | 2022-09-01 → 2022-12-19 (+109d) | 1d → 88d | none → 74d |
| 943 | Editar | 2022-09-01 → 2022-07-15 A (-48d) | 2022-09-01 → 2022-12-19 (+109d) | 1d → 88d | none → 74d |
| 944 | Eliminar | 2022-09-01 → 2022-07-15 A (-48d) | 2022-09-01 → 2022-12-19 (+109d) | 1d → 88d | none → 74d |
| 945 | Configuración de Dashboard | 2022-09-01 → 2022-07-15 A (-48d) | 2022-09-01 → 2022-12-19 (+109d) | 1d → 88d | none → 74d |
| 946 | Exportación de dashboard PDF | 2022-09-01 → 2022-07-15 A (-48d) | 2022-09-01 → 2022-12-19 (+109d) | 1d → 88d | none → 74d |
| 947 | Exportación de dashboard Excel | 2022-09-01 → 2022-07-15 A (-48d) | 2022-09-01 → 2022-12-19 (+109d) | 1d → 88d | none → 74d |
| 948 | Paginación Dashboard | 2022-09-01 → 2022-07-15 A (-48d) | 2022-09-01 → 2022-12-19 (+109d) | 1d → 88d | none → 74d |
| 949 | Busqueda Dash board | 2022-09-01 → 2022-07-15 A (-48d) | 2022-09-01 → 2022-12-19 (+109d) | 1d → 88d | none → 74d |
| 950 | Ventanas emergentes de validación | 2022-09-01 → 2022-07-15 A (-48d) | 2022-09-01 → 2022-12-19 (+109d) | 1d → 88d | none → 74d |
| 951 | **Administración de Crecimiento** | 2022-09-01 A → 2022-07-15 A (-48d) | 2022-09-01 → 2022-12-19 (+109d) | 1d → 112d | none → 74d |
| 952 | Pantalla Principal | 2022-09-01 → 2022-07-15 A (-48d) | 2022-09-01 → 2022-12-19 (+109d) | 1d → 88d | none → 74d |
| 953 | Plantilla Carga Masiva Crecimiento | 2022-09-01 A → 2022-07-15 A (-48d) | 2022-09-01 A → 2022-11-15 A (+75d) | 1d → 88d |  |
| 954 | Api Plantilla caga masiva Municipio - Crecimiento | 2022-09-01 A → 2022-07-15 A (-48d) | 2022-09-01 A → 2022-11-15 A (+75d) | 1d → 88d |  |
| 955 | Agregar | 2022-09-01 → 2022-07-15 A (-48d) | 2022-09-01 → 2022-12-19 (+109d) | 1d → 88d | none → 74d |
| 956 | Editar | 2022-09-01 → 2022-07-15 A (-48d) | 2022-09-01 → 2022-12-19 (+109d) | 1d → 88d | none → 74d |
| 957 | Eliminar | 2022-09-01 → 2022-07-15 A (-48d) | 2022-09-01 → 2022-12-19 (+109d) | 1d → 88d | none → 74d |
| 958 | Configuración de Dashboard | 2022-09-01 → 2022-07-15 A (-48d) | 2022-09-01 → 2022-12-19 (+109d) | 1d → 88d | none → 74d |
| 959 | Exportación de dashboard PDF | 2022-09-01 → 2022-07-15 A (-48d) | 2022-09-01 → 2022-12-19 (+109d) | 1d → 88d | none → 74d |
| 960 | Exportación de dashboard Excel | 2022-09-01 → 2022-07-15 A (-48d) | 2022-09-01 → 2022-12-19 (+109d) | 1d → 88d | none → 74d |
| 961 | Paginación Dashboard | 2022-09-01 → 2022-07-15 A (-48d) | 2022-09-01 → 2022-12-19 (+109d) | 1d → 88d | none → 74d |
| 962 | Busqueda Dash board | 2022-09-01 → 2022-07-15 A (-48d) | 2022-09-01 → 2022-12-19 (+109d) | 1d → 88d | none → 74d |
| 963 | Ventanas emergentes de validación | 2022-09-01 → 2022-07-15 A (-48d) | 2022-09-01 → 2022-12-19 (+109d) | 1d → 88d | none → 74d |
| 964 | **Administración de Facturación** | 2022-09-01 → 2022-07-15 A (-48d) | 2022-09-01 → 2022-12-19 (+109d) | 1d → 112d | none → 74d |
| 965 | Pantalla Principal | 2022-09-01 → 2022-07-15 A (-48d) | 2022-09-01 → 2022-12-19 (+109d) | 1d → 88d | none → 74d |
| 966 | Agregar | 2022-09-01 → 2022-07-15 A (-48d) | 2022-09-01 → 2022-12-19 (+109d) | 1d → 88d | none → 74d |
| 967 | Editar | 2022-09-01 → 2022-07-15 A (-48d) | 2022-09-01 → 2022-12-19 (+109d) | 1d → 88d | none → 74d |
| 968 | Eliminar | 2022-09-01 → 2022-07-15 A (-48d) | 2022-09-01 → 2022-12-19 (+109d) | 1d → 88d | none → 74d |
| 969 | Configuración de Dashboard | 2022-09-01 → 2022-07-15 A (-48d) | 2022-09-01 → 2022-12-19 (+109d) | 1d → 88d | none → 74d |
| 970 | Exportación de dashboard PDF | 2022-09-01 → 2022-07-15 A (-48d) | 2022-09-01 → 2022-12-19 (+109d) | 1d → 88d | none → 74d |
| 971 | Exportación de dashboard Excel | 2022-09-01 → 2022-07-15 A (-48d) | 2022-09-01 → 2022-12-19 (+109d) | 1d → 88d | none → 74d |
| 972 | Paginación Dashboard | 2022-09-01 → 2022-07-15 A (-48d) | 2022-09-01 → 2022-12-19 (+109d) | 1d → 88d | none → 74d |
| 973 | Busqueda Dash board | 2022-09-01 → 2022-07-15 A (-48d) | 2022-09-01 → 2022-12-19 (+109d) | 1d → 88d | none → 74d |
| 974 | Ventanas emergentes de validación | 2022-09-01 → 2022-07-15 A (-48d) | 2022-09-01 → 2022-12-19 (+109d) | 1d → 88d | none → 74d |
| 975 | **Administración de Recaudación** | 2022-09-01 A → 2022-07-15 A (-48d) | 2022-09-01 → 2022-12-19 (+109d) | 1d → 112d | none → 74d |

| ID | Task | Start | Finish | Duration | Total float |
| --- | --- | --- | --- | --- | --- |
| 976 | Pantalla Principal | 2022-09-01 → 2022-07-15 A (-48d) | 2022-09-01 → 2022-12-19 (+109d) | 1d → 88d | none → 74d |
| 977 | Plantilla Carga Masiva Recaudación | 2022-09-01 A → 2022-07-15 A (-48d) | 2022-09-01 A → 2022-11-15 A (+75d) | 1d → 88d |  |
| 978 | Api Plantilla caga masiva Municipio - Recaudación | 2022-09-01 A → 2022-07-15 A (-48d) | 2022-09-01 A → 2022-11-15 A (+75d) | 1d → 88d |  |
| 979 | Agregar | 2022-09-01 → 2022-07-15 A (-48d) | 2022-09-01 → 2022-12-19 (+109d) | 1d → 88d | none → 74d |
| 980 | Editar | 2022-09-01 → 2022-07-15 A (-48d) | 2022-09-01 → 2022-12-19 (+109d) | 1d → 88d | none → 74d |
| 981 | Eliminar | 2022-09-01 → 2022-07-15 A (-48d) | 2022-09-01 → 2022-12-19 (+109d) | 1d → 88d | none → 74d |
| 982 | Configuración de Dashboard | 2022-09-01 → 2022-07-15 A (-48d) | 2022-09-01 → 2022-12-19 (+109d) | 1d → 88d | none → 74d |
| 983 | Exportación de dashboard PDF | 2022-09-01 → 2022-07-15 A (-48d) | 2022-09-01 → 2022-12-19 (+109d) | 1d → 88d | none → 74d |
| 984 | Exportación de dashboard Excel | 2022-09-01 → 2022-07-15 A (-48d) | 2022-09-01 → 2022-12-19 (+109d) | 1d → 88d | none → 74d |
| 985 | Paginación Dashboard | 2022-09-01 → 2022-07-15 A (-48d) | 2022-09-01 → 2022-12-19 (+109d) | 1d → 88d | none → 74d |
| 986 | Busqueda Dash board | 2022-09-01 → 2022-07-15 A (-48d) | 2022-09-01 → 2022-12-19 (+109d) | 1d → 88d | none → 74d |
| 987 | Ventanas emergentes de validación | 2022-09-01 → 2022-07-15 A (-48d) | 2022-09-01 → 2022-12-19 (+109d) | 1d → 88d | none → 74d |
| 988 | **Administración de Población** | 2022-09-01 → 2022-07-15 A (-48d) | 2022-09-01 → 2022-12-19 (+109d) | 1d → 112d | none → 74d |
| 989 | Pantalla Principal | 2022-09-01 → 2022-07-15 A (-48d) | 2022-09-01 → 2022-12-19 (+109d) | 1d → 88d | none → 74d |
| 990 | Agregar | 2022-09-01 → 2022-07-15 A (-48d) | 2022-09-01 → 2022-12-19 (+109d) | 1d → 88d | none → 74d |
| 991 | Editar | 2022-09-01 → 2022-07-15 A (-48d) | 2022-09-01 → 2022-12-19 (+109d) | 1d → 88d | none → 74d |
| 992 | Eliminar | 2022-09-01 → 2022-07-15 A (-48d) | 2022-09-01 → 2022-12-19 (+109d) | 1d → 88d | none → 74d |
| 993 | Configuración de Dashboard | 2022-09-01 → 2022-07-15 A (-48d) | 2022-09-01 → 2022-12-19 (+109d) | 1d → 88d | none → 74d |
| 994 | Exportación de dashboard PDF | 2022-09-01 → 2022-07-15 A (-48d) | 2022-09-01 → 2022-12-19 (+109d) | 1d → 88d | none → 74d |
| 995 | Exportación de dashboard Excel | 2022-09-01 → 2022-07-15 A (-48d) | 2022-09-01 → 2022-12-19 (+109d) | 1d → 88d | none → 74d |
| 996 | Paginación Dashboard | 2022-09-01 → 2022-07-15 A (-48d) | 2022-09-01 → 2022-12-19 (+109d) | 1d → 88d | none → 74d |
| 997 | Busqueda Dash board | 2022-09-01 → 2022-07-15 A (-48d) | 2022-09-01 → 2022-12-19 (+109d) | 1d → 88d | none → 74d |
| 998 | Ventanas emergentes de validación | 2022-09-01 → 2022-07-15 A (-48d) | 2022-09-01 → 2022-12-19 (+109d) | 1d → 88d | none → 74d |
| 999 | **Administración de Territorio** | 2022-09-01 A → 2022-07-15 A (-48d) | 2022-09-01 → 2022-12-19 (+109d) | 1d → 112d | none → 74d |
| 1000 | Pantalla Principal | 2022-09-01 → 2022-07-15 A (-48d) | 2022-09-01 → 2022-12-19 (+109d) | 1d → 88d | none → 74d |
| 1001 | Plantilla Carga Masiva Territorio | 2022-09-01 A → 2022-07-15 A (-48d) | 2022-09-01 A → 2022-11-15 A (+75d) | 1d → 88d |  |
| 1002 | Api Plantilla caga masiva Municipio - Territorio | 2022-09-01 A → 2022-07-15 A (-48d) | 2022-09-01 A → 2022-11-15 A (+75d) | 1d → 88d |  |
| 1003 | Agregar | 2022-09-01 → 2022-07-15 A (-48d) | 2022-09-01 → 2022-12-19 (+109d) | 1d → 88d | none → 74d |
| 1004 | Editar | 2022-09-01 → 2022-07-15 A (-48d) | 2022-09-01 → 2022-12-19 (+109d) | 1d → 88d | none → 74d |
| 1005 | Eliminar | 2022-09-01 → 2022-07-15 A (-48d) | 2022-09-01 → 2022-12-19 (+109d) | 1d → 88d | none → 74d |
| 1006 | Configuración de Dashboard | 2022-09-01 → 2022-07-15 A (-48d) | 2022-09-01 → 2022-12-19 (+109d) | 1d → 88d | none → 74d |
| 1007 | Exportación de dashboard PDF | 2022-09-01 → 2022-07-15 A (-48d) | 2022-09-01 → 2022-12-19 (+109d) | 1d → 88d | none → 74d |
| 1008 | Exportación de dashboard Excel | 2022-09-01 → 2022-07-15 A (-48d) | 2022-09-01 → 2022-12-19 (+109d) | 1d → 88d | none → 74d |
| 1009 | Paginación Dashboard | 2022-09-01 → 2022-07-15 A (-48d) | 2022-09-01 → 2022-12-19 (+109d) | 1d → 88d | none → 74d |
| 1010 | Busqueda Dash board | 2022-09-01 → 2022-07-15 A (-48d) | 2022-09-01 → 2022-12-19 (+109d) | 1d → 88d | none → 74d |
| 1011 | Ventanas emergentes de validación | 2022-09-01 → 2022-07-15 A (-48d) | 2022-09-01 → 2022-12-19 (+109d) | 1d → 88d | none → 74d |
| 1012 | **Administración de pobreza** | 2022-09-01 A → 2022-07-15 A (-48d) | 2022-09-01 → 2022-12-19 (+109d) | 1d → 112d | none → 74d |
| 1013 | Pantalla Principal | 2022-09-01 → 2022-07-15 A (-48d) | 2022-09-01 → 2022-12-19 (+109d) | 1d → 88d | none → 74d |
| 1014 | Plantilla Carga Masiva Pobreza | 2022-09-01 A → 2022-07-15 A (-48d) | 2022-09-01 A → 2022-11-15 A (+75d) | 1d → 88d |  |
| 1015 | Api Plantilla caga masiva Municipio - Pobreza | 2022-09-01 A → 2022-07-15 A (-48d) | 2022-09-01 A → 2022-11-15 A (+75d) | 1d → 88d |  |
| 1016 | Agregar | 2022-09-01 → 2022-07-15 A (-48d) | 2022-09-01 → 2022-12-19 (+109d) | 1d → 88d | none → 74d |
| 1017 | Editar | 2022-09-01 → 2022-07-15 A (-48d) | 2022-09-01 → 2022-12-19 (+109d) | 1d → 88d | none → 74d |
| 1018 | Eliminar | 2022-09-01 → 2022-07-15 A (-48d) | 2022-09-01 → 2022-12-19 (+109d) | 1d → 88d | none → 74d |
| 1019 | Configuración de Dashboard | 2022-09-01 → 2022-07-15 A (-48d) | 2022-09-01 → 2022-12-19 (+109d) | 1d → 88d | none → 74d |
| 1020 | Exportación de dashboard PDF | 2022-09-01 → 2022-07-15 A (-48d) | 2022-09-01 → 2022-12-19 (+109d) | 1d → 88d | none → 74d |
| 1021 | Exportación de dashboard Excel | 2022-09-01 → 2022-07-15 A (-48d) | 2022-09-01 → 2022-12-19 (+109d) | 1d → 88d | none → 74d |
| 1022 | Paginación Dashboard | 2022-09-01 → 2022-07-15 A (-48d) | 2022-09-01 → 2022-12-19 (+109d) | 1d → 88d | none → 74d |
| 1023 | Busqueda Dash board | 2022-09-01 → 2022-07-15 A (-48d) | 2022-09-01 → 2022-12-19 (+109d) | 1d → 88d | none → 74d |
| 1024 | Ventanas emergentes de validación | 2022-09-01 → 2022-07-15 A (-48d) | 2022-09-01 → 2022-12-19 (+109d) | 1d → 88d | none → 74d |
| 1025 | **Administración de Pobreza Extrema** | 2022-09-01 A → 2022-07-15 A (-48d) | 2022-09-01 A → 2022-11-15 A (+75d) | 1d → 88d |  |
| 1026 | Plantilla Carga Masiva Pobreza Extrema | 2022-09-01 A → 2022-07-15 A (-48d) | 2022-09-01 A → 2022-11-15 A (+75d) | 1d → 88d |  |
| 1027 | Api Plantilla caga masiva Municipio - Pobreza Extrema | 2022-09-01 A → 2022-07-15 A (-48d) | 2022-09-01 A → 2022-11-15 A (+75d) | 1d → 88d |  |
| 1028 | **Administración de Pobreza Moderada** | 2022-09-01 A → 2022-07-15 A (-48d) | 2022-09-01 A → 2022-11-15 A (+75d) | 1d → 88d |  |
| 1029 | Plantilla Carga Masiva Pobreza Moderada | 2022-09-01 A → 2022-07-15 A (-48d) | 2022-09-01 A → 2022-11-15 A (+75d) | 1d → 88d |  |
| 1030 | Api Plantilla caga masiva Municipio - Pobreza Moderada | 2022-09-01 A → 2022-07-15 A (-48d) | 2022-09-01 A → 2022-11-15 A (+75d) | 1d → 88d |  |
| 1031 | **Administración de Proyección** | 2022-09-01 A → 2022-07-15 A (-48d) | 2022-09-01 → 2022-12-19 (+109d) | 1d → 112d | none → 74d |
| 1032 | Agregar | 2022-09-01 → 2022-07-15 A (-48d) | 2022-09-01 → 2022-12-19 (+109d) | 1d → 88d | none → 74d |
| 1033 | Editar | 2022-09-01 → 2022-07-15 A (-48d) | 2022-09-01 → 2022-12-19 (+109d) | 1d → 88d | none → 74d |
| 1034 | Eliminar | 2022-09-01 → 2022-07-15 A (-48d) | 2022-09-01 → 2022-12-19 (+109d) | 1d → 88d | none → 74d |
| 1035 | Plantilla Carga Masiva Proyección | 2022-09-01 A → 2022-07-15 A (-48d) | 2022-09-01 A → 2022-11-15 A (+75d) | 1d → 88d |  |
| 1036 | Api Plantilla caga masiva Municipio - Proyección | 2022-09-01 A → 2022-07-15 A (-48d) | 2022-09-01 A → 2022-11-15 A (+75d) | 1d → 88d |  |
| 1037 | **Dashboard Articulo 14 Fracción I** | 2022-09-01 → 2022-07-15 A (-48d) | 2022-09-01 → 2022-12-19 (+109d) | 1d → 112d | none → 74d |
| 1038 | Pantalla Principal | 2022-09-01 → 2022-07-15 A (-48d) | 2022-09-01 → 2022-12-19 (+109d) | 1d → 88d | none → 74d |
| 1039 | Generar plantilla | 2022-09-01 → 2022-07-15 A (-48d) | 2022-09-01 → 2022-12-19 (+109d) | 1d → 88d | none → 74d |
| 1040 | Carga masiva - plantilla | 2022-09-01 → 2022-07-15 A (-48d) | 2022-09-01 → 2022-12-19 (+109d) | 1d → 88d | none → 74d |
| 1041 | Recálculo de coeficiente | 2022-09-01 → 2022-07-15 A (-48d) | 2022-09-01 → 2022-12-19 (+109d) | 1d → 88d | none → 74d |
| 1042 | Editar información | 2022-09-01 → 2022-07-15 A (-48d) | 2022-09-01 → 2022-12-19 (+109d) | 1d → 88d | none → 74d |
| 1043 | Dashboard predial | 2022-09-01 → 2022-07-15 A (-48d) | 2022-09-01 → 2022-12-19 (+109d) | 1d → 88d | none → 74d |
| 1044 | Dashboard población y territorio | 2022-09-01 → 2022-07-15 A (-48d) | 2022-09-01 → 2022-12-19 (+109d) | 1d → 88d | none → 74d |
| 1045 | Dashboard carencia social | 2022-09-01 → 2022-07-15 A (-48d) | 2022-09-01 → 2022-12-19 (+109d) | 1d → 88d | none → 74d |

| ID | Task | Start | Finish | Duration | Total float |
| --- | --- | --- | --- | --- | --- |
| 1046 | Cálculo de coeficiente | 2022-09-01 → 2022-07-15 A (-48d) | 2022-09-01 → 2022-12-19 (+109d) | 1d → 88d | none → 74d |
| 1047 | Proceso Autorización | 2022-09-01 → 2022-07-15 A (-48d) | 2022-09-01 → 2022-12-19 (+109d) | 1d → 88d | none → 74d |
| 1048 | Ventanas emergentes de validación | 2022-09-01 → 2022-07-15 A (-48d) | 2022-09-01 → 2022-12-19 (+109d) | 1d → 88d | none → 74d |
| 1049 | **Dashboard Articulo 14 Fracción II** | 2022-09-01 → 2022-07-15 A (-48d) | 2022-09-01 → 2022-12-19 (+109d) | 1d → 112d | none → 74d |
| 1050 | Pantalla Principal | 2022-09-01 → 2022-07-15 A (-48d) | 2022-09-01 → 2022-12-19 (+109d) | 1d → 88d | none → 74d |
| 1051 | Dashboard población | 2022-09-01 → 2022-07-15 A (-48d) | 2022-09-01 → 2022-12-19 (+109d) | 1d → 88d | none → 74d |
| 1052 | generar plantilla | 2022-09-01 → 2022-07-15 A (-48d) | 2022-09-01 → 2022-12-19 (+109d) | 1d → 88d | none → 74d |
| 1053 | Carga masiva - plantilla | 2022-09-01 → 2022-07-15 A (-48d) | 2022-09-01 → 2022-12-19 (+109d) | 1d → 88d | none → 74d |
| 1054 | Recálculo de coeficiente | 2022-09-01 → 2022-07-15 A (-48d) | 2022-09-01 → 2022-12-19 (+109d) | 1d → 88d | none → 74d |
| 1055 | Editar información individual | 2022-09-01 → 2022-07-15 A (-48d) | 2022-09-01 → 2022-12-19 (+109d) | 1d → 88d | none → 74d |
| 1056 | Dashboard proyección población | 2022-09-01 → 2022-07-15 A (-48d) | 2022-09-01 → 2022-12-19 (+109d) | 1d → 88d | none → 74d |
| 1057 | Carga masiva - plantilla | 2022-09-01 → 2022-07-15 A (-48d) | 2022-09-01 → 2022-12-19 (+109d) | 1d → 88d | none → 74d |
| 1058 | Recálculo de coeficiente | 2022-09-01 → 2022-07-15 A (-48d) | 2022-09-01 → 2022-12-19 (+109d) | 1d → 88d | none → 74d |
| 1059 | Editar información individual | 2022-09-01 → 2022-07-15 A (-48d) | 2022-09-01 → 2022-12-19 (+109d) | 1d → 88d | none → 74d |
| 1060 | Cálculo de coeficiente | 2022-09-01 → 2022-07-15 A (-48d) | 2022-09-01 → 2022-12-19 (+109d) | 1d → 88d | none → 74d |
| 1061 | Proceso Autorización | 2022-09-01 → 2022-07-15 A (-48d) | 2022-09-01 → 2022-12-19 (+109d) | 1d → 88d | none → 74d |
| 1062 | Ventanas emergentes de validación | 2022-09-01 → 2022-07-15 A (-48d) | 2022-09-01 → 2022-12-19 (+109d) | 1d → 88d | none → 74d |
| 1063 | **Dashboard Articulo 14 Fracción III** | 2022-09-01 → 2022-07-15 A (-48d) | 2022-09-01 → 2022-12-19 (+109d) | 1d → 112d | none → 74d |
| 1064 | Pantalla Principal | 2022-09-01 → 2022-07-15 A (-48d) | 2022-09-01 → 2022-12-19 (+109d) | 1d → 88d | none → 74d |
| 1065 | Dashboard eficiencia recaudatoria | 2022-09-01 → 2022-07-15 A (-48d) | 2022-09-01 → 2022-12-19 (+109d) | 1d → 88d | none → 74d |
| 1066 | generar plantilla | 2022-09-01 → 2022-07-15 A (-48d) | 2022-09-01 → 2022-12-19 (+109d) | 1d → 88d | none → 74d |
| 1067 | Carga masiva - plantilla | 2022-09-01 → 2022-07-15 A (-48d) | 2022-09-01 → 2022-12-19 (+109d) | 1d → 88d | none → 74d |
| 1068 | Recálculo de coeficiente | 2022-09-01 → 2022-07-15 A (-48d) | 2022-09-01 → 2022-12-19 (+109d) | 1d → 88d | none → 74d |
| 1069 | Editar información individual | 2022-09-01 → 2022-07-15 A (-48d) | 2022-09-01 → 2022-12-19 (+109d) | 1d → 88d | none → 74d |
| 1070 | Dashboard crecimiento recaudación | 2022-09-01 → 2022-07-15 A (-48d) | 2022-09-01 → 2022-12-19 (+109d) | 1d → 88d | none → 74d |
| 1071 | Carga masiva - plantilla | 2022-09-01 → 2022-07-15 A (-48d) | 2022-09-01 → 2022-12-19 (+109d) | 1d → 88d | none → 74d |
| 1072 | Recálculo de coeficiente | 2022-09-01 → 2022-07-15 A (-48d) | 2022-09-01 → 2022-12-19 (+109d) | 1d → 88d | none → 74d |
| 1073 | Editar información individual | 2022-09-01 → 2022-07-15 A (-48d) | 2022-09-01 → 2022-12-19 (+109d) | 1d → 88d | none → 74d |
| 1074 | Cálculo de coeficiente | 2022-09-01 → 2022-07-15 A (-48d) | 2022-09-01 → 2022-12-19 (+109d) | 1d → 88d | none → 74d |
| 1075 | Proceso Autorización | 2022-09-01 → 2022-07-15 A (-48d) | 2022-09-01 → 2022-12-19 (+109d) | 1d → 88d | none → 74d |
| 1076 | Ventanas emergentes de validación | 2022-09-01 → 2022-07-15 A (-48d) | 2022-09-01 → 2022-12-19 (+109d) | 1d → 88d | none → 74d |
| 1077 | Participaciones Federales | 2022-09-01 → 2022-07-15 A (-48d) | 2022-09-01 → 2022-12-19 (+109d) | 1d → 88d | none → 74d |
| 1078 | Dashboard Participaciones Federales | 2022-09-01 → 2022-07-15 A (-48d) | 2022-09-01 → 2022-12-19 (+109d) | 1d → 88d | none → 74d |
| 1079 | Proceso Envío general Participaciones Federales | 2022-09-01 → 2022-07-15 A (-48d) | 2022-09-01 → 2022-12-19 (+109d) | 1d → 88d | none → 74d |
| 1080 | Track general Participaciones Federales | 2022-09-01 → 2022-07-15 A (-48d) | 2022-09-01 → 2022-12-19 (+109d) | 1d → 88d | none → 74d |
| 1081 | **Dashboard FG** | 2022-09-01 → 2022-07-15 A (-48d) | 2022-09-01 → 2022-12-19 (+109d) | 1d → 112d | none → 74d |
| 1082 | Configuración inicial Fondo General (FG) | 2022-09-01 → 2022-07-15 A (-48d) | 2022-09-01 → 2022-12-19 (+109d) | 1d → 88d | none → 74d |
| 1083 | Carga inicial | 2022-09-01 → 2022-07-15 A (-48d) | 2022-09-01 → 2022-12-19 (+109d) | 1d → 88d | none → 74d |
| 1084 | Pantalla Principal | 2022-09-01 → 2022-07-15 A (-48d) | 2022-09-01 → 2022-12-19 (+109d) | 1d → 88d | none → 74d |
| 1085 | Proceso cálculo | 2022-09-01 → 2022-07-15 A (-48d) | 2022-09-01 → 2022-12-19 (+109d) | 1d → 88d | none → 74d |
| 1086 | Proceso autorización | 2022-09-01 → 2022-07-15 A (-48d) | 2022-09-01 → 2022-12-19 (+109d) | 1d → 88d | none → 74d |
| 1087 | Proceso envío | 2022-09-01 → 2022-07-15 A (-48d) | 2022-09-01 → 2022-12-19 (+109d) | 1d → 88d | none → 74d |
| 1088 | Avance programático Fondo General | 2022-09-01 → 2022-07-15 A (-48d) | 2022-09-01 → 2022-12-19 (+109d) | 1d → 88d | none → 74d |
| 1089 | Proceso Cancelación Fondo General | 2022-09-01 → 2022-07-15 A (-48d) | 2022-09-01 → 2022-12-19 (+109d) | 1d → 88d | none → 74d |
| 1090 | Ventanas emergentes de validación | 2022-09-01 → 2022-07-15 A (-48d) | 2022-09-01 → 2022-12-19 (+109d) | 1d → 88d | none → 74d |
| 1091 | **Dashboard FFM 70** | 2022-09-01 → 2022-07-15 A (-48d) | 2022-09-01 → 2022-12-19 (+109d) | 1d → 112d | none → 74d |
| 1092 | Configuración inicial Fondo Fomento Municipal 70 % (FFM 70% ) | 2022-09-01 → 2022-07-15 A (-48d) | 2022-09-01 → 2022-12-19 (+109d) | 1d → 88d | none → 74d |
| 1093 | Carga inicial | 2022-09-01 → 2022-07-15 A (-48d) | 2022-09-01 → 2022-12-19 (+109d) | 1d → 88d | none → 74d |
| 1094 | Pantalla Principal | 2022-09-01 → 2022-07-15 A (-48d) | 2022-09-01 → 2022-12-19 (+109d) | 1d → 88d | none → 74d |
| 1095 | Proceso cálculo | 2022-09-01 → 2022-07-15 A (-48d) | 2022-09-01 → 2022-12-19 (+109d) | 1d → 88d | none → 74d |
| 1096 | Proceso autorización | 2022-09-01 → 2022-07-15 A (-48d) | 2022-09-01 → 2022-12-19 (+109d) | 1d → 88d | none → 74d |
| 1097 | Proceso envío | 2022-09-01 → 2022-07-15 A (-48d) | 2022-09-01 → 2022-12-19 (+109d) | 1d → 88d | none → 74d |
| 1098 | Track | 2022-09-01 → 2022-07-15 A (-48d) | 2022-09-01 → 2022-12-19 (+109d) | 1d → 88d | none → 74d |
| 1099 | Ventanas emergentes de validación | 2022-09-01 → 2022-07-15 A (-48d) | 2022-09-01 → 2022-12-19 (+109d) | 1d → 88d | none → 74d |
| 1100 | Configuración inicial Fondo Fomento Municipal 30 % (FFM 30% ) | 2022-09-01 → 2022-07-15 A (-48d) | 2022-09-01 → 2022-12-19 (+109d) | 1d → 88d | none → 74d |
| 1101 | **Dashboard FFM 30** | 2022-09-01 → 2022-07-15 A (-48d) | 2022-09-01 → 2022-12-19 (+109d) | 1d → 112d | none → 74d |
| 1102 | Pantalla Principal | 2022-09-01 → 2022-07-15 A (-48d) | 2022-09-01 → 2022-12-19 (+109d) | 1d → 88d | none → 74d |
| 1103 | Carga Inicial | 2022-09-01 → 2022-07-15 A (-48d) | 2022-09-01 → 2022-12-19 (+109d) | 1d → 88d | none → 74d |
| 1104 | Proceso cálculo | 2022-09-01 → 2022-07-15 A (-48d) | 2022-09-01 → 2022-12-19 (+109d) | 1d → 88d | none → 74d |
| 1105 | Proceso autorización | 2022-09-01 → 2022-07-15 A (-48d) | 2022-09-01 → 2022-12-19 (+109d) | 1d → 88d | none → 74d |
| 1106 | Proceso envío | 2022-09-01 → 2022-07-15 A (-48d) | 2022-09-01 → 2022-12-19 (+109d) | 1d → 88d | none → 74d |
| 1107 | Track | 2022-09-01 → 2022-07-15 A (-48d) | 2022-09-01 → 2022-12-19 (+109d) | 1d → 88d | none → 74d |
| 1108 | Ventanas emergentes de validación | 2022-09-01 → 2022-07-15 A (-48d) | 2022-09-01 → 2022-12-19 (+109d) | 1d → 88d | none → 74d |
| 1109 | Configuración inicial Impuesto Especial sobre Producción y Servicios (IEPS) | 2022-09-01 → 2022-07-15 A (-48d) | 2022-09-01 → 2022-12-19 (+109d) | 1d → 88d | none → 74d |
| 1110 | **Dashboard IEPS** | 2022-09-01 → 2022-07-15 A (-48d) | 2022-09-01 → 2022-12-19 (+109d) | 1d → 112d | none → 74d |
| 1111 | Carga inicial | 2022-09-01 → 2022-07-15 A (-48d) | 2022-09-01 → 2022-12-19 (+109d) | 1d → 88d | none → 74d |
| 1112 | Pantalla Principal | 2022-09-01 → 2022-07-15 A (-48d) | 2022-09-01 → 2022-12-19 (+109d) | 1d → 88d | none → 74d |
| 1113 | Proceso cálculo | 2022-09-01 → 2022-07-15 A (-48d) | 2022-09-01 → 2022-12-19 (+109d) | 1d → 88d | none → 74d |
| 1114 | Proceso autorización | 2022-09-01 → 2022-07-15 A (-48d) | 2022-09-01 → 2022-12-19 (+109d) | 1d → 88d | none → 74d |
| 1115 | Proceso envío | 2022-09-01 → 2022-07-15 A (-48d) | 2022-09-01 → 2022-12-19 (+109d) | 1d → 88d | none → 74d |

| ID | Task | Start | Finish | Duration | Total float |
| --- | --- | --- | --- | --- | --- |
| 1116 | Track | 2022-09-01 → 2022-07-15 A (-48d) | 2022-09-01 → 2022-12-19 (+109d) | 1d → 88d | none → 74d |
| 1117 | Ventanas emergentes de validación | 2022-09-01 → 2022-07-15 A (-48d) | 2022-09-01 → 2022-12-19 (+109d) | 1d → 88d | none → 74d |
| 1118 | Configuración inicial Impuesto sobre la Venta Final de Gasolinas y Diesel (IEPS GyD) | 2022-09-01 → 2022-07-15 A (-48d) | 2022-09-01 → 2022-12-19 (+109d) | 1d → 88d | none → 74d |
| 1119 | **Dashboard IEPS GyD** | 2022-09-01 → 2022-07-15 A (-48d) | 2022-09-01 → 2022-12-19 (+109d) | 1d → 112d | none → 74d |
| 1120 | Carga inicial | 2022-09-01 → 2022-07-15 A (-48d) | 2022-09-01 → 2022-12-19 (+109d) | 1d → 88d | none → 74d |
| 1121 | Pantalla Principal | 2022-09-01 → 2022-07-15 A (-48d) | 2022-09-01 → 2022-12-19 (+109d) | 1d → 88d | none → 74d |
| 1122 | Proceso cálculo | 2022-09-01 → 2022-07-15 A (-48d) | 2022-09-01 → 2022-12-19 (+109d) | 1d → 88d | none → 74d |
| 1123 | Proceso autorización | 2022-09-01 → 2022-07-15 A (-48d) | 2022-09-01 → 2022-12-19 (+109d) | 1d → 88d | none → 74d |
| 1124 | Proceso envío | 2022-09-01 → 2022-07-15 A (-48d) | 2022-09-01 → 2022-12-19 (+109d) | 1d → 88d | none → 74d |
| 1125 | Track | 2022-09-01 → 2022-07-15 A (-48d) | 2022-09-01 → 2022-12-19 (+109d) | 1d → 88d | none → 74d |
| 1126 | Ventanas emergentes de validación | 2022-09-01 → 2022-07-15 A (-48d) | 2022-09-01 → 2022-12-19 (+109d) | 1d → 88d | none → 74d |
| 1127 | **Dashboard ISR Bienes Inmuebles** | 2022-09-01 → 2022-07-15 A (-48d) | 2022-09-01 → 2022-12-19 (+109d) | 1d → 112d | none → 74d |
| 1128 | Pantalla Principal | 2022-09-01 → 2022-07-15 A (-48d) | 2022-09-01 → 2022-12-19 (+109d) | 1d → 88d | none → 74d |
| 1129 | Carga inicial | 2022-09-01 → 2022-07-15 A (-48d) | 2022-09-01 → 2022-12-19 (+109d) | 1d → 88d | none → 74d |
| 1130 | Configuración inicial ISR Bienes Inmuebles | 2022-09-01 → 2022-07-15 A (-48d) | 2022-09-01 → 2022-12-19 (+109d) | 1d → 88d | none → 74d |
| 1131 | Proceso cálculo | 2022-09-01 → 2022-07-15 A (-48d) | 2022-09-01 → 2022-12-19 (+109d) | 1d → 88d | none → 74d |
| 1132 | Proceso autorización | 2022-09-01 → 2022-07-15 A (-48d) | 2022-09-01 → 2022-12-19 (+109d) | 1d → 88d | none → 74d |
| 1133 | Proceso envío | 2022-09-01 → 2022-07-15 A (-48d) | 2022-09-01 → 2022-12-19 (+109d) | 1d → 88d | none → 74d |
| 1134 | Track | 2022-09-01 → 2022-07-15 A (-48d) | 2022-09-01 → 2022-12-19 (+109d) | 1d → 88d | none → 74d |
| 1135 | Ventanas emergentes de validación | 2022-09-01 → 2022-07-15 A (-48d) | 2022-09-01 → 2022-12-19 (+109d) | 1d → 88d | none → 74d |
| 1136 | **Dashboard FOFIR** | 2022-09-01 → 2022-07-15 A (-48d) | 2022-09-01 → 2022-12-19 (+109d) | 1d → 112d | none → 74d |
| 1137 | Pantalla Principal | 2022-09-01 → 2022-07-15 A (-48d) | 2022-09-01 → 2022-12-19 (+109d) | 1d → 88d | none → 74d |
| 1138 | Carga inicial | 2022-09-01 → 2022-07-15 A (-48d) | 2022-09-01 → 2022-12-19 (+109d) | 1d → 88d | none → 74d |
| 1139 | Configuración inicial Fondo de Fiscalización y Recaudación (FOFIR) | 2022-09-01 → 2022-07-15 A (-48d) | 2022-09-01 → 2022-12-19 (+109d) | 1d → 88d | none → 74d |
| 1140 | Proceso cálculo | 2022-09-01 → 2022-07-15 A (-48d) | 2022-09-01 → 2022-12-19 (+109d) | 1d → 88d | none → 74d |
| 1141 | Proceso autorización | 2022-09-01 → 2022-07-15 A (-48d) | 2022-09-01 → 2022-12-19 (+109d) | 1d → 88d | none → 74d |
| 1142 | Proceso envío | 2022-09-01 → 2022-07-15 A (-48d) | 2022-09-01 → 2022-12-19 (+109d) | 1d → 88d | none → 74d |
| 1143 | Track | 2022-09-01 → 2022-07-15 A (-48d) | 2022-09-01 → 2022-12-19 (+109d) | 1d → 88d | none → 74d |
| 1144 | Ventanas emergentes de validación | 2022-09-01 → 2022-07-15 A (-48d) | 2022-09-01 → 2022-12-19 (+109d) | 1d → 88d | none → 74d |
| 1145 | **Dashboard ISAN** | 2022-09-01 A → 2022-07-15 A (-48d) | 2022-09-01 → 2022-12-19 (+109d) | 1d → 112d | none → 74d |
| 1146 | Pantalla Principal | 2022-09-01 → 2022-07-15 A (-48d) | 2022-09-01 → 2022-12-19 (+109d) | 1d → 88d | none → 74d |
| 1147 | Plantilla Carga Masiva ISAN | 2022-09-01 A → 2022-07-15 A (-48d) | 2022-09-01 A → 2022-11-15 A (+75d) | 1d → 88d |  |
| 1148 | Api Plantilla caga masiva Municipio - ISAN | 2022-09-01 A → 2022-07-15 A (-48d) | 2022-09-01 A → 2022-11-15 A (+75d) | 1d → 88d |  |
| 1149 | Carga inicial | 2022-09-01 → 2022-07-15 A (-48d) | 2022-09-01 → 2022-12-19 (+109d) | 1d → 88d | none → 74d |
| 1150 | Configuración inicial Impuesto sobre Automóviles Nuevos (ISAN) | 2022-09-01 → 2022-07-15 A (-48d) | 2022-09-01 → 2022-12-19 (+109d) | 1d → 88d | none → 74d |
| 1151 | Proceso cálculo | 2022-09-01 → 2022-07-15 A (-48d) | 2022-09-01 → 2022-12-19 (+109d) | 1d → 88d | none → 74d |
| 1152 | Proceso autorización | 2022-09-01 → 2022-07-15 A (-48d) | 2022-09-01 → 2022-12-19 (+109d) | 1d → 88d | none → 74d |
| 1153 | Proceso envío | 2022-09-01 → 2022-07-15 A (-48d) | 2022-09-01 → 2022-12-19 (+109d) | 1d → 88d | none → 74d |
| 1154 | Track | 2022-09-01 → 2022-07-15 A (-48d) | 2022-09-01 → 2022-12-19 (+109d) | 1d → 88d | none → 74d |
| 1155 | Ventanas emergentes de validación | 2022-09-01 → 2022-07-15 A (-48d) | 2022-09-01 → 2022-12-19 (+109d) | 1d → 88d | none → 74d |
| 1156 | **Dashboard Comp. ISAN** | 2022-09-01 → 2022-07-15 A (-48d) | 2022-09-01 → 2022-12-19 (+109d) | 1d → 112d | none → 74d |
| 1157 | Pantalla Principal | 2022-09-01 → 2022-07-15 A (-48d) | 2022-09-01 → 2022-12-19 (+109d) | 1d → 88d | none → 74d |
| 1158 | Carga inicial | 2022-09-01 → 2022-07-15 A (-48d) | 2022-09-01 → 2022-12-19 (+109d) | 1d → 88d | none → 74d |
| 1159 | Configuración inicial Compensación ISAN | 2022-09-01 → 2022-07-15 A (-48d) | 2022-09-01 → 2022-12-19 (+109d) | 1d → 88d | none → 74d |
| 1160 | Proceso cálculo | 2022-09-01 → 2022-07-15 A (-48d) | 2022-09-01 → 2022-12-19 (+109d) | 1d → 88d | none → 74d |
| 1161 | Proceso autorización | 2022-09-01 → 2022-07-15 A (-48d) | 2022-09-01 → 2022-12-19 (+109d) | 1d → 88d | none → 74d |
| 1162 | Proceso envío | 2022-09-01 → 2022-07-15 A (-48d) | 2022-09-01 → 2022-12-19 (+109d) | 1d → 88d | none → 74d |
| 1163 | Track | 2022-09-01 → 2022-07-15 A (-48d) | 2022-09-01 → 2022-12-19 (+109d) | 1d → 88d | none → 74d |
| 1164 | Ventanas emergentes de validación | 2022-09-01 → 2022-07-15 A (-48d) | 2022-09-01 → 2022-12-19 (+109d) | 1d → 88d | none → 74d |
| 1165 | **Dashboard ISN** | 2022-09-01 → 2022-07-15 A (-48d) | 2022-09-01 → 2022-12-19 (+109d) | 1d → 112d | none → 74d |
| 1166 | Pantalla Principal | 2022-09-01 → 2022-07-15 A (-48d) | 2022-09-01 → 2022-12-19 (+109d) | 1d → 88d | none → 74d |
| 1167 | Carga configuración inicial fondo ISN | 2022-09-01 → 2022-07-15 A (-48d) | 2022-09-01 → 2022-12-19 (+109d) | 1d → 88d | none → 74d |
| 1168 | Proceso de cálculo | 2022-09-01 → 2022-07-15 A (-48d) | 2022-09-01 → 2022-12-19 (+109d) | 1d → 88d | none → 74d |
| 1169 | Proceso de Autorización | 2022-09-01 → 2022-07-15 A (-48d) | 2022-09-01 → 2022-12-19 (+109d) | 1d → 88d | none → 74d |
| 1170 | Proceso de Envío | 2022-09-01 → 2022-07-15 A (-48d) | 2022-09-01 → 2022-12-19 (+109d) | 1d → 88d | none → 74d |
| 1171 | Track | 2022-09-01 → 2022-07-15 A (-48d) | 2022-09-01 → 2022-12-19 (+109d) | 1d → 88d | none → 74d |
| 1172 | Ventanas emergentes de validación | 2022-09-01 → 2022-07-15 A (-48d) | 2022-09-01 → 2022-12-19 (+109d) | 1d → 88d | none → 74d |
| 1173 | **Dashboard ICV** | 2022-09-01 → 2022-07-15 A (-48d) | 2022-09-01 → 2022-12-19 (+109d) | 1d → 112d | none → 74d |
| 1174 | Pantalla Principal | 2022-09-01 → 2022-07-15 A (-48d) | 2022-09-01 → 2022-12-19 (+109d) | 1d → 88d | none → 74d |
| 1175 | Carga Configuración inicial ICV | 2022-09-01 → 2022-07-15 A (-48d) | 2022-09-01 → 2022-12-19 (+109d) | 1d → 88d | none → 74d |
| 1176 | Carga masiva de ICV - (Plantilla) | 2022-09-01 → 2022-07-15 A (-48d) | 2022-09-01 → 2022-12-19 (+109d) | 1d → 88d | none → 74d |
| 1177 | Proceso de cálculo | 2022-09-01 → 2022-07-15 A (-48d) | 2022-09-01 → 2022-12-19 (+109d) | 1d → 88d | none → 74d |
| 1178 | Proceso de Autorización | 2022-09-01 → 2022-07-15 A (-48d) | 2022-09-01 → 2022-12-19 (+109d) | 1d → 88d | none → 74d |
| 1179 | Proceso de Envío | 2022-09-01 → 2022-07-15 A (-48d) | 2022-09-01 → 2022-12-19 (+109d) | 1d → 88d | none → 74d |
| 1180 | Track | 2022-09-01 → 2022-07-15 A (-48d) | 2022-09-01 → 2022-12-19 (+109d) | 1d → 88d | none → 74d |
| 1181 | Ventanas emergentes de validación | 2022-09-01 → 2022-07-15 A (-48d) | 2022-09-01 → 2022-12-19 (+109d) | 1d → 88d | none → 74d |
| 1182 | **Dashboard Fondo Ultracrecmiento** | 2022-09-01 → 2022-07-15 A (-48d) | 2022-09-01 → 2022-12-19 (+109d) | 1d → 112d | none → 74d |
| 1183 | Pantalla Principal | 2022-09-01 → 2022-07-15 A (-48d) | 2022-09-01 → 2022-12-19 (+109d) | 1d → 88d | none → 74d |
| 1184 | Carga configuración inicial Fondo Ultracrecimiento | 2022-09-01 → 2022-07-15 A (-48d) | 2022-09-01 → 2022-12-19 (+109d) | 1d → 88d | none → 74d |
| 1185 | Proceso de Autorización | 2022-09-01 → 2022-07-15 A (-48d) | 2022-09-01 → 2022-12-19 (+109d) | 1d → 88d | none → 74d |

| ID | Task | Start | Finish | Duration | Complete | Total float | Other |
| --- | --- | --- | --- | --- | --- | --- | --- |
| 1186 | Proceso de Envío | 2022-09-01 → 2022-07-15 A (-48d) | 2022-09-01 → 2022-12-19 (+109d) | 1d → 88d |  | none → 74d |  |
| 1187 | Track | 2022-09-01 → 2022-07-15 A (-48d) | 2022-09-01 → 2022-12-19 (+109d) | 1d → 88d |  | none → 74d |  |
| 1188 | Ventanas emergentes de validación | 2022-09-01 → 2022-07-15 A (-48d) | 2022-09-01 → 2022-12-19 (+109d) | 1d → 88d |  | none → 74d |  |
| 1189 | Generación de reporte | 2022-09-01 → 2022-07-15 A (-48d) | 2022-09-01 → 2022-12-19 (+109d) | 1d → 88d |  | none → 74d |  |
| 1190 | **Dashboard Fondos Descentralizado** | 2022-09-01 → 2022-07-15 A (-48d) | 2022-09-01 → 2022-12-19 (+109d) | 1d → 112d |  | none → 74d |  |
| 1191 | Pantalla Principal | 2022-09-01 → 2022-08-18 (-14d) | 2022-09-01 → 2022-12-19 (+109d) | 1d → 88d |  | none → 74d | constraint none → start no earlier than 2022-07-15 |
| 1193 | Proceso de cálculo | 2022-09-01 → 2022-07-15 A (-48d) | 2022-09-01 → 2022-12-19 (+109d) | 1d → 88d |  | none → 74d |  |
| 1194 | Proceso de Autorización | 2022-09-01 → 2022-07-15 A (-48d) | 2022-09-01 → 2022-12-19 (+109d) | 1d → 88d |  | none → 74d |  |
| 1195 | Proceso de Envío | 2022-09-01 → 2022-07-15 A (-48d) | 2022-09-01 → 2022-12-19 (+109d) | 1d → 88d |  | none → 74d |  |
| 1196 | Track | 2022-09-01 → 2022-07-15 A (-48d) | 2022-09-01 → 2022-12-19 (+109d) | 1d → 88d |  | none → 74d |  |
| 1197 | Ventanas emergentes de validación | 2022-09-01 → 2022-07-15 A (-48d) | 2022-09-01 → 2022-12-19 (+109d) | 1d → 88d |  | none → 74d |  |
| 1198 | **Dashboard Fondos Seguridad** | 2022-09-01 → 2022-07-15 A (-48d) | 2022-09-01 → 2022-12-19 (+109d) | 1d → 112d |  | none → 74d |  |
| 1199 | Pantalla Principal | 2022-09-01 → 2022-07-15 A (-48d) | 2022-09-01 → 2022-12-19 (+109d) | 1d → 88d |  | none → 74d |  |
| 1200 | Carga configuración inicial Fondo Seguridad | 2022-09-01 → 2022-07-15 A (-48d) | 2022-09-01 → 2022-12-19 (+109d) | 1d → 88d |  | none → 74d |  |
| 1201 | Proceso de cálculo | 2022-09-01 → 2022-07-15 A (-48d) | 2022-09-01 → 2022-12-19 (+109d) | 1d → 88d |  | none → 74d |  |
| 1202 | Proceso de Autorización | 2022-09-01 → 2022-07-15 A (-48d) | 2022-09-01 → 2022-12-19 (+109d) | 1d → 88d |  | none → 74d |  |
| 1203 | Proceso de Envío | 2022-09-01 → 2022-07-15 A (-48d) | 2022-09-01 → 2022-12-19 (+109d) | 1d → 88d |  | none → 74d |  |
| 1204 | Track | 2022-09-01 → 2022-07-15 A (-48d) | 2022-09-01 → 2022-12-19 (+109d) | 1d → 88d |  | none → 74d |  |
| 1205 | Ventanas emergentes de validación | 2022-09-01 → 2022-07-15 A (-48d) | 2022-09-01 → 2022-12-19 (+109d) | 1d → 88d |  | none → 74d |  |
| 1206 | Generación de reporte | 2022-09-01 → 2022-07-15 A (-48d) | 2022-09-01 → 2022-12-19 (+109d) | 1d → 88d |  | none → 74d |  |
| 1207 | **Dashboard Fondos de Desarrollo Municipal** | 2022-09-01 → 2022-07-15 A (-48d) | 2022-09-01 → 2022-12-19 (+109d) | 1d → 112d |  | none → 74d |  |
| 1208 | Pantalla Principal | 2022-09-01 → 2022-07-15 A (-48d) | 2022-09-01 → 2022-12-19 (+109d) | 1d → 88d |  | none → 74d |  |
| 1209 | Carga configuración inicial Fondo Desarrollo Municipal | 2022-09-01 → 2022-07-15 A (-48d) | 2022-09-01 → 2022-12-19 (+109d) | 1d → 88d |  | none → 74d |  |
| 1210 | Proceso de cálculo | 2022-09-01 → 2022-07-15 A (-48d) | 2022-09-01 → 2022-12-19 (+109d) | 1d → 88d |  | none → 74d |  |
| 1211 | Proceso de Autorización | 2022-09-01 → 2022-07-15 A (-48d) | 2022-09-01 → 2022-12-19 (+109d) | 1d → 88d |  | none → 74d |  |
| 1212 | Proceso de Envío | 2022-09-01 → 2022-07-15 A (-48d) | 2022-09-01 → 2022-12-19 (+109d) | 1d → 88d |  | none → 74d |  |
| 1213 | Track | 2022-09-01 → 2022-07-15 A (-48d) | 2022-09-01 → 2022-12-19 (+109d) | 1d → 88d |  | none → 74d |  |
| 1214 | Ventanas emergentes de validación | 2022-09-01 → 2022-07-15 A (-48d) | 2022-09-01 → 2022-12-19 (+109d) | 1d → 88d |  | none → 74d |  |
| 1215 | Generación de reporte | 2022-09-01 → 2022-07-15 A (-48d) | 2022-09-01 → 2022-12-19 (+109d) | 1d → 88d |  | none → 74d |  |
| 1216 | **Dashboard Fondos FORTAMUN** | 2022-09-01 → 2022-07-15 A (-48d) | 2022-09-01 → 2022-12-19 (+109d) | 1d → 112d |  | none → 74d |  |
| 1217 | Pantalla Principal | 2022-09-01 → 2022-07-15 A (-48d) | 2022-09-01 → 2022-12-19 (+109d) | 1d → 88d |  | none → 74d |  |
| 1218 | Carga configuración inicial Fondo FORTAMUN | 2022-09-01 → 2022-07-15 A (-48d) | 2022-09-01 → 2022-12-19 (+109d) | 1d → 88d |  | none → 74d |  |
| 1219 | Proceso de cálculo | 2022-09-01 → 2022-07-15 A (-48d) | 2022-09-01 → 2022-12-19 (+109d) | 1d → 88d |  | none → 74d |  |
| 1220 | Proceso de Autorización | 2022-09-01 → 2022-07-15 A (-48d) | 2022-09-01 → 2022-12-19 (+109d) | 1d → 88d |  | none → 74d |  |
| 1221 | Proceso de Envío | 2022-09-01 → 2022-07-15 A (-48d) | 2022-09-01 → 2022-12-19 (+109d) | 1d → 88d |  | none → 74d |  |
| 1222 | Track | 2022-09-01 → 2022-07-15 A (-48d) | 2022-09-01 → 2022-12-19 (+109d) | 1d → 88d |  | none → 74d |  |
| 1223 | Ventanas emergentes de validación | 2022-09-01 → 2022-07-15 A (-48d) | 2022-09-01 → 2022-12-19 (+109d) | 1d → 88d |  | none → 74d |  |
| 1224 | Generación de reporte | 2022-09-01 → 2022-07-15 A (-48d) | 2022-09-01 → 2022-12-19 (+109d) | 1d → 88d |  | none → 74d |  |
| 1225 | **Dashboard Fondos FISM** | 2022-09-01 → 2022-07-15 A (-48d) | 2022-09-01 → 2022-12-19 (+109d) | 1d → 112d |  | none → 74d |  |
| 1226 | Pantalla Principal | 2022-09-01 → 2022-07-15 A (-48d) | 2022-09-01 → 2022-12-19 (+109d) | 1d → 88d |  | none → 74d |  |
| 1227 | Carga configuración inicial Fondo FISM | 2022-09-01 → 2022-07-15 A (-48d) | 2022-09-01 → 2022-12-19 (+109d) | 1d → 88d |  | none → 74d |  |
| 1228 | Proceso de cálculo | 2022-09-01 → 2022-07-15 A (-48d) | 2022-09-01 → 2022-12-19 (+109d) | 1d → 88d |  | none → 74d |  |
| 1229 | Proceso de Autorización | 2022-09-01 → 2022-07-15 A (-48d) | 2022-09-01 → 2022-12-19 (+109d) | 1d → 88d |  | none → 74d |  |
| 1230 | Proceso de Envío | 2022-09-01 → 2022-07-15 A (-48d) | 2022-09-01 → 2022-12-19 (+109d) | 1d → 88d |  | none → 74d |  |
| 1231 | Track | 2022-09-01 → 2022-07-15 A (-48d) | 2022-09-01 → 2022-12-19 (+109d) | 1d → 88d |  | none → 74d |  |
| 1232 | Ventanas emergentes de validación | 2022-09-01 → 2022-07-15 A (-48d) | 2022-09-01 → 2022-12-19 (+109d) | 1d → 88d |  | none → 74d |  |
| 1233 | Generación de reporte | 2022-09-01 → 2022-07-15 A (-48d) | 2022-09-01 → 2022-12-19 (+109d) | 1d → 88d |  | none → 74d |  |
| 1234 | Generador de estadísticas | 2022-09-01 → 2022-07-15 A (-48d) | 2022-09-01 → 2022-12-19 (+109d) | 1d → 88d |  | none → 74d |  |
| 1235 | Generador de reportes | 2022-09-01 → 2022-07-15 A (-48d) | 2022-09-01 → 2022-12-19 (+109d) | 1d → 88d |  | none → 74d |  |
| 1237 | **Módulo DAMOP** | 2022-09-01 → 2022-07-15 A (-48d) | 2022-11-14 → 2022-12-19 (+35d) | 52.75d → 112d | 0% → 3% | none → 74d |  |
| 1238 | **Base** | 2022-09-01 → 2022-07-15 A (-48d) | 2022-09-01 → 2022-12-19 (+109d) | 1d → 112d |  | none → 74d |  |
| 1239 | Pantalla Principal | 2022-09-01 → 2022-07-15 A (-48d) | 2022-09-01 → 2022-12-19 (+109d) | 1d → 88d |  | none → 74d |  |
| 1240 | Pop up Notificaciones | 2022-09-01 → 2022-07-15 A (-48d) | 2022-09-01 → 2022-12-19 (+109d) | 1d → 88d |  | none → 74d |  |
| 1241 | Contador de Notificaciones (Icono campanita) | 2022-09-01 → 2022-07-15 A (-48d) | 2022-09-01 → 2022-12-19 (+109d) | 1d → 88d |  | none → 74d |  |
| 1242 | Bandeja entrada de Notificaciones | 2022-09-01 → 2022-07-15 A (-48d) | 2022-09-01 → 2022-12-19 (+109d) | 1d → 88d |  | none → 74d |  |
| 1243 | **Administración de Municipios** | 2022-09-01 → 2022-07-15 A (-48d) | 2022-09-01 → 2022-12-19 (+109d) | 1d → 112d |  | none → 74d |  |
| 1244 | Pantalla principal | 2022-09-01 → 2022-07-15 A (-48d) | 2022-09-01 → 2022-12-19 (+109d) | 1d → 88d |  | none → 74d |  |
| 1245 | Insertar | 2022-09-01 → 2022-07-15 A (-48d) | 2022-09-01 → 2022-12-19 (+109d) | 1d → 88d |  | none → 74d |  |
| 1246 | Contactar Municipio | 2022-09-01 → 2022-07-15 A (-48d) | 2022-09-01 → 2022-12-19 (+109d) | 1d → 88d |  | none → 74d |  |
| 1247 | Ver Detalles | 2022-09-01 → 2022-07-15 A (-48d) | 2022-09-01 → 2022-12-19 (+109d) | 1d → 88d |  | none → 74d |  |
| 1248 | Configuración de Dashboard | 2022-09-01 → 2022-07-15 A (-48d) | 2022-09-01 → 2022-12-19 (+109d) | 1d → 88d |  | none → 74d |  |
| 1249 | Exportación de dashboard PDF | 2022-09-01 → 2022-07-15 A (-48d) | 2022-09-01 → 2022-12-19 (+109d) | 1d → 88d |  | none → 74d |  |
| 1250 | Exportación de dashboard Excel | 2022-09-01 → 2022-07-15 A (-48d) | 2022-09-01 → 2022-12-19 (+109d) | 1d → 88d |  | none → 74d |  |
| 1251 | Paginación Dashboard | 2022-09-01 → 2022-07-15 A (-48d) | 2022-09-01 → 2022-12-19 (+109d) | 1d → 88d |  | none → 74d |  |
| 1252 | Busqueda Dash board | 2022-09-01 → 2022-07-15 A (-48d) | 2022-09-01 → 2022-12-19 (+109d) | 1d → 88d |  | none → 74d |  |
| 1253 | Ventanas emergentes de validación | 2022-09-01 → 2022-07-15 A (-48d) | 2022-09-01 → 2022-12-19 (+109d) | 1d → 88d |  | none → 74d |  |
| 1254 | Modificar | 2022-09-01 → 2022-07-15 A (-48d) | 2022-09-01 → 2022-12-19 (+109d) | 1d → 88d |  | none → 74d |  |
| 1255 | Subida de Archivos | 2022-09-01 → 2022-07-15 A (-48d) | 2022-09-01 → 2022-12-19 (+109d) | 1d → 88d |  | none → 74d |  |
| 1256 | Descarga de PDF | 2022-09-01 → 2022-07-15 A (-48d) | 2022-09-01 → 2022-12-19 (+109d) | 1d → 88d |  | none → 74d |  |
| 1257 | **Administración de Avisos** | 2022-09-01 → 2022-07-15 A (-48d) | 2022-09-01 → 2022-12-19 (+109d) | 1d → 112d |  | none → 74d |  |

| ID | Task | Start | Finish | Duration | Complete | Total float |
| --- | --- | --- | --- | --- | --- | --- |
| 1258 | Pantalla principal | 2022-09-01 → 2022-07-15 A (-48d) | 2022-09-01 → 2022-12-19 (+109d) | 1d → 88d |  | none → 74d |
| 1259 | Agregar | 2022-09-01 → 2022-07-15 A (-48d) | 2022-09-01 → 2022-12-19 (+109d) | 1d → 88d |  | none → 74d |
| 1260 | Eliminar | 2022-09-01 → 2022-07-15 A (-48d) | 2022-09-01 → 2022-12-19 (+109d) | 1d → 88d |  | none → 74d |
| 1261 | Editar | 2022-09-01 → 2022-07-15 A (-48d) | 2022-09-01 → 2022-12-19 (+109d) | 1d → 88d |  | none → 74d |
| 1262 | Configuración de Dashboard | 2022-09-01 → 2022-07-15 A (-48d) | 2022-09-01 → 2022-12-19 (+109d) | 1d → 88d |  | none → 74d |
| 1263 | Exportación de dashboard PDF | 2022-09-01 → 2022-07-15 A (-48d) | 2022-09-01 → 2022-12-19 (+109d) | 1d → 88d |  | none → 74d |
| 1264 | Exportación de dashboard Excel | 2022-09-01 → 2022-07-15 A (-48d) | 2022-09-01 → 2022-12-19 (+109d) | 1d → 88d |  | none → 74d |
| 1265 | Paginación Dashboard | 2022-09-01 → 2022-07-15 A (-48d) | 2022-09-01 → 2022-12-19 (+109d) | 1d → 88d |  | none → 74d |
| 1266 | Busqueda Dash board | 2022-09-01 → 2022-07-15 A (-48d) | 2022-09-01 → 2022-12-19 (+109d) | 1d → 88d |  | none → 74d |
| 1267 | Ventanas emergentes de validación | 2022-09-01 → 2022-07-15 A (-48d) | 2022-09-01 → 2022-12-19 (+109d) | 1d → 88d |  | none → 74d |
| 1268 | **Administración de Eventos** | 2022-09-01 → 2022-07-15 A (-48d) | 2022-09-01 → 2022-12-19 (+109d) | 1d → 112d |  | none → 74d |
| 1269 | Pantalla principal | 2022-09-01 → 2022-07-15 A (-48d) | 2022-09-01 → 2022-12-19 (+109d) | 1d → 88d |  | none → 74d |
| 1270 | Agregar | 2022-09-01 → 2022-07-15 A (-48d) | 2022-09-01 → 2022-12-19 (+109d) | 1d → 88d |  | none → 74d |
| 1271 | Eliminar | 2022-09-01 → 2022-07-15 A (-48d) | 2022-09-01 → 2022-12-19 (+109d) | 1d → 88d |  | none → 74d |
| 1272 | Editar | 2022-09-01 → 2022-07-15 A (-48d) | 2022-09-01 → 2022-12-19 (+109d) | 1d → 88d |  | none → 74d |
| 1273 | Configuración de Dashboard | 2022-09-01 → 2022-07-15 A (-48d) | 2022-09-01 → 2022-12-19 (+109d) | 1d → 88d |  | none → 74d |
| 1274 | Exportación de dashboard PDF | 2022-09-01 → 2022-07-15 A (-48d) | 2022-09-01 → 2022-12-19 (+109d) | 1d → 88d |  | none → 74d |
| 1275 | Exportación de dashboard Excel | 2022-09-01 → 2022-07-15 A (-48d) | 2022-09-01 → 2022-12-19 (+109d) | 1d → 88d |  | none → 74d |
| 1276 | Paginación Dashboard | 2022-09-01 → 2022-07-15 A (-48d) | 2022-09-01 → 2022-12-19 (+109d) | 1d → 88d |  | none → 74d |
| 1277 | Busqueda Dash board | 2022-09-01 → 2022-07-15 A (-48d) | 2022-09-01 → 2022-12-19 (+109d) | 1d → 88d |  | none → 74d |
| 1278 | Ventanas emergentes de validación | 2022-09-01 → 2022-07-15 A (-48d) | 2022-09-01 → 2022-12-19 (+109d) | 1d → 88d |  | none → 74d |
| 1279 | **Administración de Conceptos** | 2022-09-01 → 2022-07-15 A (-48d) | 2022-09-01 → 2022-12-19 (+109d) | 1d → 112d |  | none → 74d |
| 1280 | Pantalla principal | 2022-09-01 → 2022-07-15 A (-48d) | 2022-09-01 → 2022-12-19 (+109d) | 1d → 88d |  | none → 74d |
| 1281 | Agregar | 2022-09-01 → 2022-07-15 A (-48d) | 2022-09-01 → 2022-12-19 (+109d) | 1d → 88d |  | none → 74d |
| 1282 | Eliminar | 2022-09-01 → 2022-07-15 A (-48d) | 2022-09-01 → 2022-12-19 (+109d) | 1d → 88d |  | none → 74d |
| 1283 | Editar | 2022-09-01 → 2022-07-15 A (-48d) | 2022-09-01 → 2022-12-19 (+109d) | 1d → 88d |  | none → 74d |
| 1284 | **Administración tasa interés BANXICO** | 2022-09-01 → 2022-07-15 A (-48d) | 2022-09-01 → 2022-12-19 (+109d) | 1d → 112d | 0% → 83% | none → 74d |
| 1285 | Pantalla principal | 2022-09-01 → 2022-07-15 A (-48d) | 2022-09-01 → 2022-12-19 (+109d) | 1d → 88d |  | none → 74d |
| 1286 | Insertar | 2022-09-01 → 2022-07-15 A (-48d) | 2022-09-01 → 2022-11-15 A (+75d) | 1d → 88d | 0% → 100% |  |
| 1287 | Modificar | 2022-09-01 → 2022-07-15 A (-48d) | 2022-09-01 → 2022-11-15 A (+75d) | 1d → 88d | 0% → 100% |  |
| 1288 | Eliminar | 2022-09-01 → 2022-07-15 A (-48d) | 2022-09-01 → 2022-11-15 A (+75d) | 1d → 88d | 0% → 100% |  |
| 1289 | Visualizar | 2022-09-01 → 2022-07-15 A (-48d) | 2022-09-01 → 2022-11-15 A (+75d) | 1d → 88d | 0% → 100% |  |
| 1290 | Job de Ejecucion automatica | 2022-09-01 → 2022-07-15 A (-48d) | 2022-09-01 → 2022-11-15 A (+75d) | 1d → 88d | 0% → 100% |  |
| 1291 | **Anticipo Participaciones** | 2022-09-01 → 2022-07-15 A (-48d) | 2022-09-01 → 2022-12-19 (+109d) | 1d → 112d |  | none → 74d |
| 1292 | Pantalla principal | 2022-09-01 → 2022-07-15 A (-48d) | 2022-09-01 → 2022-12-19 (+109d) | 1d → 88d |  | none → 74d |
| 1293 | Agregar | 2022-09-01 → 2022-07-15 A (-48d) | 2022-09-01 → 2022-12-19 (+109d) | 1d → 88d |  | none → 74d |
| 1294 | Eliminar | 2022-09-01 → 2022-07-15 A (-48d) | 2022-09-01 → 2022-12-19 (+109d) | 1d → 88d |  | none → 74d |
| 1295 | Editar | 2022-09-01 → 2022-07-15 A (-48d) | 2022-09-01 → 2022-12-19 (+109d) | 1d → 88d |  | none → 74d |
| 1296 | Configuración de Dashboard | 2022-09-01 → 2022-07-15 A (-48d) | 2022-09-01 → 2022-12-19 (+109d) | 1d → 88d |  | none → 74d |
| 1297 | Exportación de dashboard PDF | 2022-09-01 → 2022-07-15 A (-48d) | 2022-09-01 → 2022-12-19 (+109d) | 1d → 88d |  | none → 74d |
| 1298 | Exportación de dashboard Excel | 2022-09-01 → 2022-07-15 A (-48d) | 2022-09-01 → 2022-12-19 (+109d) | 1d → 88d |  | none → 74d |
| 1299 | Paginación Dashboard | 2022-09-01 → 2022-07-15 A (-48d) | 2022-09-01 → 2022-12-19 (+109d) | 1d → 88d |  | none → 74d |
| 1300 | Busqueda Dash board | 2022-09-01 → 2022-07-15 A (-48d) | 2022-09-01 → 2022-12-19 (+109d) | 1d → 88d |  | none → 74d |
| 1301 | Ventanas emergentes de validación | 2022-09-01 → 2022-07-15 A (-48d) | 2022-09-01 → 2022-12-19 (+109d) | 1d → 88d |  | none → 74d |
| 1302 | Carga masiva | 2022-09-01 → 2022-07-15 A (-48d) | 2022-09-01 → 2022-12-19 (+109d) | 1d → 88d |  | none → 74d |
| 1303 | Copiar información del mes anterior | 2022-09-01 → 2022-07-15 A (-48d) | 2022-09-01 → 2022-12-19 (+109d) | 1d → 88d |  | none → 74d |
| 1304 | Proceso de Ajuste | 2022-09-01 → 2022-07-15 A (-48d) | 2022-09-01 → 2022-12-19 (+109d) | 1d → 88d |  | none → 74d |
| 1305 | Proceso de Enviar | 2022-09-01 → 2022-07-15 A (-48d) | 2022-09-01 → 2022-12-19 (+109d) | 1d → 88d |  | none → 74d |
| 1306 | Track | 2022-09-01 → 2022-07-15 A (-48d) | 2022-09-01 → 2022-12-19 (+109d) | 1d → 88d |  | none → 74d |
| 1307 | **Solicitud de Recursos** | 2022-09-01 → 2022-07-15 A (-48d) | 2022-09-01 → 2022-12-19 (+109d) | 1d → 112d |  | none → 74d |
| 1312 | Configuración de Dashboard | 2022-09-01 → 2022-07-15 A (-48d) | 2022-09-01 → 2022-12-19 (+109d) | 1d → 88d |  | none → 74d |
| 1313 | Exportación de dashboard PDF | 2022-09-01 → 2022-07-15 A (-48d) | 2022-09-01 → 2022-12-19 (+109d) | 1d → 88d |  | none → 74d |
| 1314 | Exportación de dashboard Excel | 2022-09-01 → 2022-07-15 A (-48d) | 2022-09-01 → 2022-12-19 (+109d) | 1d → 88d |  | none → 74d |
| 1315 | Paginación Dashboard | 2022-09-01 → 2022-07-15 A (-48d) | 2022-09-01 → 2022-12-19 (+109d) | 1d → 88d |  | none → 74d |
| 1316 | Busqueda Dash board | 2022-09-01 → 2022-07-15 A (-48d) | 2022-09-01 → 2022-12-19 (+109d) | 1d → 88d |  | none → 74d |
| 1317 | Ventanas emergentes de validación | 2022-09-01 → 2022-07-15 A (-48d) | 2022-09-01 → 2022-12-19 (+109d) | 1d → 88d |  | none → 74d |
| 1318 | Carga de documento | 2022-09-01 → 2022-07-15 A (-48d) | 2022-09-01 → 2022-12-19 (+109d) | 1d → 88d |  | none → 74d |
| 1319 | Copiar información del mes anterior | 2022-09-01 → 2022-07-15 A (-48d) | 2022-09-01 → 2022-12-19 (+109d) | 1d → 88d |  | none → 74d |
| 1320 | Dashboard de Solicitud de Recursos sección Solicitudes Pendientes | 2022-09-01 → 2022-07-15 A (-48d) | 2022-09-01 → 2022-12-19 (+109d) | 1d → 88d |  | none → 74d |
| 1321 | Dashboard de Solicitud de Recursos sección Solicitudes en trámite | 2022-09-01 → 2022-07-15 A (-48d) | 2022-09-01 → 2022-12-19 (+109d) | 1d → 88d |  | none → 74d |
| 1322 | Track | 2022-09-01 → 2022-07-15 A (-48d) | 2022-09-01 → 2022-12-19 (+109d) | 1d → 88d |  | none → 74d |
| 1323 | **Dashboard Participaciones Federales** | 2022-09-01 → 2022-07-15 A (-48d) | 2022-09-01 → 2022-12-19 (+109d) | 1d → 112d |  | none → 74d |
| 1324 | Pantalla principal | 2022-09-01 → 2022-07-15 A (-48d) | 2022-09-01 → 2022-12-19 (+109d) | 1d → 88d |  | none → 74d |
| 1325 | Busqueda de Mes | 2022-09-01 → 2022-07-15 A (-48d) | 2022-09-01 → 2022-12-19 (+109d) | 1d → 88d |  | none → 74d |
| 1326 | Busqueda de Año | 2022-09-01 → 2022-07-15 A (-48d) | 2022-09-01 → 2022-12-19 (+109d) | 1d → 88d |  | none → 74d |
| 1327 | Busqueda general | 2022-09-01 → 2022-07-15 A (-48d) | 2022-09-01 → 2022-12-19 (+109d) | 1d → 88d |  | none → 74d |
| 1328 | Editar | 2022-09-01 → 2022-07-15 A (-48d) | 2022-09-01 → 2022-12-19 (+109d) | 1d → 88d |  | none → 74d |
| 1329 | Proceso de Autorizar | 2022-09-01 → 2022-07-15 A (-48d) | 2022-09-01 → 2022-12-19 (+109d) | 1d → 88d |  | none → 74d |
| 1330 | Proceso de Enviar | 2022-09-01 → 2022-07-15 A (-48d) | 2022-09-01 → 2022-12-19 (+109d) | 1d → 88d |  | none → 74d |
| 1331 | Track | 2022-09-01 → 2022-07-15 A (-48d) | 2022-09-01 → 2022-12-19 (+109d) | 1d → 88d |  | none → 74d |

| ID | Task | Start | Finish | Duration | Total float |
| --- | --- | --- | --- | --- | --- |
| 1332 | Ventanas emergentes de validación | 2022-09-01 → 2022-07-15 A (-48d) | 2022-09-01 → 2022-12-19 (+109d) | 1d → 88d | none → 74d |
| 1333 | **Dashboard ISN** | 2022-09-01 → 2022-07-15 A (-48d) | 2022-09-01 → 2022-12-19 (+109d) | 1d → 112d | none → 74d |
| 1334 | Pantalla principal | 2022-09-01 → 2022-07-15 A (-48d) | 2022-09-01 → 2022-12-19 (+109d) | 1d → 88d | none → 74d |
| 1335 | Busqueda de Mes | 2022-09-01 → 2022-07-15 A (-48d) | 2022-09-01 → 2022-12-19 (+109d) | 1d → 88d | none → 74d |
| 1336 | Busqueda de Año | 2022-09-01 → 2022-07-15 A (-48d) | 2022-09-01 → 2022-12-19 (+109d) | 1d → 88d | none → 74d |
| 1337 | Busqueda | 2022-09-01 → 2022-07-15 A (-48d) | 2022-09-01 → 2022-12-19 (+109d) | 1d → 88d | none → 74d |
| 1338 | Proceso de Autorización | 2022-09-01 → 2022-07-15 A (-48d) | 2022-09-01 → 2022-12-19 (+109d) | 1d → 88d | none → 74d |
| 1339 | Proceso de Envío | 2022-09-01 → 2022-07-15 A (-48d) | 2022-09-01 → 2022-12-19 (+109d) | 1d → 88d | none → 74d |
| 1340 | Track | 2022-09-01 → 2022-07-15 A (-48d) | 2022-09-01 → 2022-12-19 (+109d) | 1d → 88d | none → 74d |
| 1341 | Ventanas emergentes de validación | 2022-09-01 → 2022-07-15 A (-48d) | 2022-09-01 → 2022-12-19 (+109d) | 1d → 88d | none → 74d |
| 1342 | **Dashboard ICV** | 2022-09-01 → 2022-07-15 A (-48d) | 2022-09-01 → 2022-12-19 (+109d) | 1d → 112d | none → 74d |
| 1343 | Pantalla principal | 2022-09-01 → 2022-07-15 A (-48d) | 2022-09-01 → 2022-12-19 (+109d) | 1d → 88d | none → 74d |
| 1344 | Busqueda de Mes | 2022-09-01 → 2022-07-15 A (-48d) | 2022-09-01 → 2022-12-19 (+109d) | 1d → 88d | none → 74d |
| 1345 | Busqueda de Año | 2022-09-01 → 2022-07-15 A (-48d) | 2022-09-01 → 2022-12-19 (+109d) | 1d → 88d | none → 74d |
| 1346 | Busqueda | 2022-09-01 → 2022-07-15 A (-48d) | 2022-09-01 → 2022-12-19 (+109d) | 1d → 88d | none → 74d |
| 1347 | Proceso de Autorización | 2022-09-01 → 2022-07-15 A (-48d) | 2022-09-01 → 2022-12-19 (+109d) | 1d → 88d | none → 74d |
| 1348 | Proceso de Envío | 2022-09-01 → 2022-07-15 A (-48d) | 2022-09-01 → 2022-12-19 (+109d) | 1d → 88d | none → 74d |
| 1349 | Track | 2022-09-01 → 2022-07-15 A (-48d) | 2022-09-01 → 2022-12-19 (+109d) | 1d → 88d | none → 74d |
| 1350 | Ventanas emergentes de validación | 2022-09-01 → 2022-07-15 A (-48d) | 2022-09-01 → 2022-12-19 (+109d) | 1d → 88d | none → 74d |
| 1351 | **Dashboard Fondos FORTAMUN** | 2022-09-01 → 2022-07-15 A (-48d) | 2022-09-01 → 2022-12-19 (+109d) | 1d → 112d | none → 74d |
| 1352 | Pantalla principal | 2022-09-01 → 2022-07-15 A (-48d) | 2022-09-01 → 2022-12-19 (+109d) | 1d → 88d | none → 74d |
| 1353 | Busqueda de Mes | 2022-09-01 → 2022-07-15 A (-48d) | 2022-09-01 → 2022-12-19 (+109d) | 1d → 88d | none → 74d |
| 1354 | Busqueda de Año | 2022-09-01 → 2022-07-15 A (-48d) | 2022-09-01 → 2022-12-19 (+109d) | 1d → 88d | none → 74d |
| 1355 | Busqueda | 2022-09-01 → 2022-07-15 A (-48d) | 2022-09-01 → 2022-12-19 (+109d) | 1d → 88d | none → 74d |
| 1356 | Proceso de Autorización | 2022-09-01 → 2022-07-15 A (-48d) | 2022-09-01 → 2022-12-19 (+109d) | 1d → 88d | none → 74d |
| 1357 | Proceso de Envío | 2022-09-01 → 2022-07-15 A (-48d) | 2022-09-01 → 2022-12-19 (+109d) | 1d → 88d | none → 74d |
| 1358 | Track | 2022-09-01 → 2022-07-15 A (-48d) | 2022-09-01 → 2022-12-19 (+109d) | 1d → 88d | none → 74d |
| 1359 | Ventanas emergentes de validación | 2022-09-01 → 2022-07-15 A (-48d) | 2022-09-01 → 2022-12-19 (+109d) | 1d → 88d | none → 74d |
| 1360 | **Dashboard Fondos FISM** | 2022-09-01 → 2022-07-15 A (-48d) | 2022-09-01 → 2022-12-19 (+109d) | 1d → 112d | none → 74d |
| 1361 | Pantalla principal | 2022-09-01 → 2022-07-15 A (-48d) | 2022-09-01 → 2022-12-19 (+109d) | 1d → 88d | none → 74d |
| 1362 | Busqueda de Mes | 2022-09-01 → 2022-07-15 A (-48d) | 2022-09-01 → 2022-12-19 (+109d) | 1d → 88d | none → 74d |
| 1363 | Busqueda de Año | 2022-09-01 → 2022-07-15 A (-48d) | 2022-09-01 → 2022-12-19 (+109d) | 1d → 88d | none → 74d |
| 1364 | Busqueda | 2022-09-01 → 2022-07-15 A (-48d) | 2022-09-01 → 2022-12-19 (+109d) | 1d → 88d | none → 74d |
| 1365 | Proceso de Autorización | 2022-09-01 → 2022-07-15 A (-48d) | 2022-09-01 → 2022-12-19 (+109d) | 1d → 88d | none → 74d |
| 1366 | Proceso de Envío | 2022-09-01 → 2022-07-15 A (-48d) | 2022-09-01 → 2022-12-19 (+109d) | 1d → 88d | none → 74d |
| 1367 | Track | 2022-09-01 → 2022-07-15 A (-48d) | 2022-09-01 → 2022-12-19 (+109d) | 1d → 88d | none → 74d |
| 1368 | Ventanas emergentes de validación | 2022-09-01 → 2022-07-15 A (-48d) | 2022-09-01 → 2022-12-19 (+109d) | 1d → 88d | none → 74d |
| 1369 | **Administración de Fondo ultra crecimiento Zona metropolitana y no Metropolitana** | 2022-09-01 → 2022-07-15 A (-48d) | 2022-09-01 → 2022-12-19 (+109d) | 1d → 112d | none → 74d |
| 1370 | Pantalla principal | 2022-09-01 → 2022-07-15 A (-48d) | 2022-09-01 → 2022-12-19 (+109d) | 1d → 88d | none → 74d |
| 1371 | Filtro mes | 2022-09-01 → 2022-07-15 A (-48d) | 2022-09-01 → 2022-12-19 (+109d) | 1d → 88d | none → 74d |
| 1372 | Filtro año | 2022-09-01 → 2022-07-15 A (-48d) | 2022-09-01 → 2022-12-19 (+109d) | 1d → 88d | none → 74d |
| 1373 | Filtro busqueda | 2022-09-01 → 2022-07-15 A (-48d) | 2022-09-01 → 2022-12-19 (+109d) | 1d → 88d | none → 74d |
| 1374 | Configuración de Dashboard | 2022-09-01 → 2022-07-15 A (-48d) | 2022-09-01 → 2022-12-19 (+109d) | 1d → 88d | none → 74d |
| 1375 | Exportación de dashboard PDF | 2022-09-01 → 2022-07-15 A (-48d) | 2022-09-01 → 2022-12-19 (+109d) | 1d → 88d | none → 74d |
| 1376 | Exportación de dashboard Excel | 2022-09-01 → 2022-07-15 A (-48d) | 2022-09-01 → 2022-12-19 (+109d) | 1d → 88d | none → 74d |
| 1377 | Paginación Dashboard | 2022-09-01 → 2022-07-15 A (-48d) | 2022-09-01 → 2022-12-19 (+109d) | 1d → 88d | none → 74d |
| 1378 | Busqueda Dash board | 2022-09-01 → 2022-07-15 A (-48d) | 2022-09-01 → 2022-12-19 (+109d) | 1d → 88d | none → 74d |
| 1379 | Ventanas emergentes de Autorizar por municipio | 2022-09-01 → 2022-07-15 A (-48d) | 2022-09-01 → 2022-12-19 (+109d) | 1d → 88d | none → 74d |
| 1380 | Ventanas emergentes de Track por municipio | 2022-09-01 → 2022-07-15 A (-48d) | 2022-09-01 → 2022-12-19 (+109d) | 1d → 88d | none → 74d |
| 1381 | Ventanas emergentes de detalles por municipio | 2022-09-01 → 2022-07-15 A (-48d) | 2022-09-01 → 2022-12-19 (+109d) | 1d → 88d | none → 74d |
| 1382 | Ventanas emergentes de Adjuntar oficio por municipio | 2022-09-01 → 2022-07-15 A (-48d) | 2022-09-01 → 2022-12-19 (+109d) | 1d → 88d | none → 74d |
| 1383 | Ventana repositorio de oficios por municipio | 2022-09-01 → 2022-07-15 A (-48d) | 2022-09-01 → 2022-12-19 (+109d) | 1d → 88d | none → 74d |
| 1384 | boton borrar oficio | 2022-09-01 → 2022-07-15 A (-48d) | 2022-09-01 → 2022-12-19 (+109d) | 1d → 88d | none → 74d |
| 1385 | boton configurar oficio | 2022-09-01 → 2022-07-15 A (-48d) | 2022-09-01 → 2022-12-19 (+109d) | 1d → 88d | none → 74d |
| 1386 | **Administración de Fondo descentralizado Zona Metropolitana y no Metropolitana** | 2022-09-01 → 2022-07-15 A (-48d) | 2022-09-01 → 2022-12-19 (+109d) | 1d → 112d | none → 74d |
| 1387 | Pantalla principal | 2022-09-01 → 2022-07-15 A (-48d) | 2022-09-01 → 2022-12-19 (+109d) | 1d → 88d | none → 74d |
| 1388 | Filtro mes | 2022-09-01 → 2022-07-15 A (-48d) | 2022-09-01 → 2022-12-19 (+109d) | 1d → 88d | none → 74d |
| 1389 | Filtro año | 2022-09-01 → 2022-07-15 A (-48d) | 2022-09-01 → 2022-12-19 (+109d) | 1d → 88d | none → 74d |
| 1390 | Filtro busqueda | 2022-09-01 → 2022-07-15 A (-48d) | 2022-09-01 → 2022-12-19 (+109d) | 1d → 88d | none → 74d |
| 1391 | Configuración de Dashboard | 2022-09-01 → 2022-07-15 A (-48d) | 2022-09-01 → 2022-12-19 (+109d) | 1d → 88d | none → 74d |
| 1392 | Exportación de dashboard PDF | 2022-09-01 → 2022-07-15 A (-48d) | 2022-09-01 → 2022-12-19 (+109d) | 1d → 88d | none → 74d |
| 1393 | Exportación de dashboard Excel | 2022-09-01 → 2022-07-15 A (-48d) | 2022-09-01 → 2022-12-19 (+109d) | 1d → 88d | none → 74d |
| 1394 | Paginación Dashboard | 2022-09-01 → 2022-07-15 A (-48d) | 2022-09-01 → 2022-12-19 (+109d) | 1d → 88d | none → 74d |
| 1395 | Busqueda Dash board | 2022-09-01 → 2022-07-15 A (-48d) | 2022-09-01 → 2022-12-19 (+109d) | 1d → 88d | none → 74d |
| 1396 | Ventanas emergentes de Autorizar por municipio | 2022-09-01 → 2022-07-15 A (-48d) | 2022-09-01 → 2022-12-19 (+109d) | 1d → 88d | none → 74d |
| 1397 | Ventanas emergentes de Track por municipio | 2022-09-01 → 2022-07-15 A (-48d) | 2022-09-01 → 2022-12-19 (+109d) | 1d → 88d | none → 74d |
| 1398 | Ventanas emergentes de detalles por municipio | 2022-09-01 → 2022-07-15 A (-48d) | 2022-09-01 → 2022-12-19 (+109d) | 1d → 88d | none → 74d |
| 1399 | Ventanas emergentes de Adjuntar oficio por municipio | 2022-09-01 → 2022-07-15 A (-48d) | 2022-09-01 → 2022-12-19 (+109d) | 1d → 88d | none → 74d |
| 1400 | Ventana repositorio de oficios por municipio | 2022-09-01 → 2022-07-15 A (-48d) | 2022-09-01 → 2022-12-19 (+109d) | 1d → 88d | none → 74d |
| 1401 | boton borrar oficio | 2022-09-01 → 2022-07-15 A (-48d) | 2022-09-01 → 2022-12-19 (+109d) | 1d → 88d | none → 74d |

| ID | Task | Start | Finish | Duration | Total float |
| --- | --- | --- | --- | --- | --- |
| 1402 | boton configurar oficio | 2022-09-01 → 2022-07-15 A (-48d) | 2022-09-01 → 2022-12-19 (+109d) | 1d → 88d | none → 74d |
| 1403 | **Administración de Fondo de seguridad para municipios Metropolitanos y no Metropolitanos** | 2022-09-01 → 2022-07-15 A (-48d) | 2022-09-01 → 2022-12-19 (+109d) | 1d → 112d | none → 74d |
| 1404 | Pantalla principal | 2022-09-01 → 2022-07-15 A (-48d) | 2022-09-01 → 2022-12-19 (+109d) | 1d → 88d | none → 74d |
| 1405 | Filtro mes | 2022-09-01 → 2022-07-15 A (-48d) | 2022-09-01 → 2022-12-19 (+109d) | 1d → 88d | none → 74d |
| 1406 | Filtro año | 2022-09-01 → 2022-07-15 A (-48d) | 2022-09-01 → 2022-12-19 (+109d) | 1d → 88d | none → 74d |
| 1407 | Filtro busqueda | 2022-09-01 → 2022-07-15 A (-48d) | 2022-09-01 → 2022-12-19 (+109d) | 1d → 88d | none → 74d |
| 1408 | Configuración de Dashboard | 2022-09-01 → 2022-07-15 A (-48d) | 2022-09-01 → 2022-12-19 (+109d) | 1d → 88d | none → 74d |
| 1409 | Exportación de dashboard PDF | 2022-09-01 → 2022-07-15 A (-48d) | 2022-09-01 → 2022-12-19 (+109d) | 1d → 88d | none → 74d |
| 1410 | Exportación de dashboard Excel | 2022-09-01 → 2022-07-15 A (-48d) | 2022-09-01 → 2022-12-19 (+109d) | 1d → 88d | none → 74d |
| 1411 | Paginación Dashboard | 2022-09-01 → 2022-07-15 A (-48d) | 2022-09-01 → 2022-12-19 (+109d) | 1d → 88d | none → 74d |
| 1412 | Busqueda Dash board | 2022-09-01 → 2022-07-15 A (-48d) | 2022-09-01 → 2022-12-19 (+109d) | 1d → 88d | none → 74d |
| 1413 | Ventanas emergentes de Autorizar | 2022-09-01 → 2022-07-15 A (-48d) | 2022-09-01 → 2022-12-19 (+109d) | 1d → 88d | none → 74d |
| 1414 | Ventanas emergentes de Enviar | 2022-09-01 → 2022-07-15 A (-48d) | 2022-09-01 → 2022-12-19 (+109d) | 1d → 88d | none → 74d |
| 1415 | Ventanas emergentes de Track | 2022-09-01 → 2022-07-15 A (-48d) | 2022-09-01 → 2022-12-19 (+109d) | 1d → 88d | none → 74d |
| 1416 | **Administración de Fondo de desarrollo municipal Metropolitanos y no Metropolitanos** | 2022-09-01 → 2022-07-15 A (-48d) | 2022-09-01 → 2022-12-19 (+109d) | 1d → 112d | none → 74d |
| 1417 | Pantalla principal | 2022-09-01 → 2022-07-15 A (-48d) | 2022-09-01 → 2022-12-19 (+109d) | 1d → 88d | none → 74d |
| 1418 | Filtro mes | 2022-09-01 → 2022-07-15 A (-48d) | 2022-09-01 → 2022-12-19 (+109d) | 1d → 88d | none → 74d |
| 1419 | Filtro año | 2022-09-01 → 2022-07-15 A (-48d) | 2022-09-01 → 2022-12-19 (+109d) | 1d → 88d | none → 74d |
| 1420 | Filtro busqueda | 2022-09-01 → 2022-07-15 A (-48d) | 2022-09-01 → 2022-12-19 (+109d) | 1d → 88d | none → 74d |
| 1421 | Configuración de Dashboard | 2022-09-01 → 2022-07-15 A (-48d) | 2022-09-01 → 2022-12-19 (+109d) | 1d → 88d | none → 74d |
| 1422 | Exportación de dashboard PDF | 2022-09-01 → 2022-07-15 A (-48d) | 2022-09-01 → 2022-12-19 (+109d) | 1d → 88d | none → 74d |
| 1423 | Exportación de dashboard Excel | 2022-09-01 → 2022-07-15 A (-48d) | 2022-09-01 → 2022-12-19 (+109d) | 1d → 88d | none → 74d |
| 1424 | Paginación Dashboard | 2022-09-01 → 2022-07-15 A (-48d) | 2022-09-01 → 2022-12-19 (+109d) | 1d → 88d | none → 74d |
| 1425 | Busqueda Dash board | 2022-09-01 → 2022-07-15 A (-48d) | 2022-09-01 → 2022-12-19 (+109d) | 1d → 88d | none → 74d |
| 1426 | Ventanas emergentes de Autorizar | 2022-09-01 → 2022-07-15 A (-48d) | 2022-09-01 → 2022-12-19 (+109d) | 1d → 88d | none → 74d |
| 1427 | Ventanas emergentes de Enviar | 2022-09-01 → 2022-07-15 A (-48d) | 2022-09-01 → 2022-12-19 (+109d) | 1d → 88d | none → 74d |
| 1428 | Ventanas emergentes de Track | 2022-09-01 → 2022-07-15 A (-48d) | 2022-09-01 → 2022-12-19 (+109d) | 1d → 88d | none → 74d |
| 1429 | Módulo contacto con municipios | 2022-09-01 → 2022-07-15 A (-48d) | 2022-09-01 → 2022-12-19 (+109d) | 1d → 88d | none → 74d |
| 1430 | Generador de reportes | 2022-09-01 → 2022-07-15 A (-48d) | 2022-09-01 → 2022-12-19 (+109d) | 1d → 88d | none → 74d |
| 1431 | Generador de Estadísticas | 2022-09-01 → 2022-07-15 A (-48d) | 2022-09-01 → 2022-12-19 (+109d) | 1d → 88d | none → 74d |
| 1432 | Dashboard Calendario | 2022-09-01 → 2022-07-15 A (-48d) | 2022-09-01 → 2022-12-19 (+109d) | 1d → 88d | none → 74d |
| 1434 | **Módulo DCCP** | 2022-09-01 → 2022-11-15 A (+75d) | 2022-11-14 → 2022-12-15 (+31d) | 52.75d → 23d | none → 76d |
| 1435 | **Dashboard Perfil DCCP** | 2022-09-01 → 2022-11-15 A (+75d) | 2022-09-01 → 2022-12-15 (+105d) | 1d → 23d | none → 76d |
| 1436 | Bloqueo de Sesión | 2022-09-01 → 2022-11-15 A (+75d) | 2022-09-01 → 2022-12-15 (+105d) | 1d → 23d | none → 76d |
| 1437 | Perfil | 2022-09-01 → 2022-11-15 A (+75d) | 2022-09-01 → 2022-12-15 (+105d) | 1d → 23d | none → 76d |
| 1438 | Pop up Notificaciones | 2022-09-01 → 2022-11-15 A (+75d) | 2022-09-01 → 2022-12-15 (+105d) | 1d → 23d | none → 76d |
| 1439 | Contador de Notificaciones (Icono campanita) | 2022-09-01 → 2022-11-15 A (+75d) | 2022-09-01 → 2022-12-15 (+105d) | 1d → 23d | none → 76d |
| 1440 | Bandeja entrada de Notificaciones | 2022-09-01 → 2022-11-15 A (+75d) | 2022-09-01 → 2022-12-15 (+105d) | 1d → 23d | none → 76d |
| 1441 | Configuración de Consulta | 2022-09-01 → 2022-11-15 A (+75d) | 2022-09-01 → 2022-12-15 (+105d) | 1d → 23d | none → 76d |
| 1443 | **Módulo DAF** | 2022-09-01 → 2022-11-15 A (+75d) | 2022-11-14 → 2022-12-15 (+31d) | 52.75d → 23d | none → 76d |
| 1444 | **Dashboard Perfil DAF** | 2022-09-01 → 2022-11-15 A (+75d) | 2022-09-01 → 2022-12-15 (+105d) | 1d → 23d | none → 76d |
| 1445 | Pantalla Perfil | 2022-09-01 → 2022-11-15 A (+75d) | 2022-09-01 → 2022-12-15 (+105d) | 1d → 23d | none → 76d |
| 1446 | Pop up Notificaciones | 2022-09-01 → 2022-11-15 A (+75d) | 2022-09-01 → 2022-12-15 (+105d) | 1d → 23d | none → 76d |
| 1447 | Contador de Notificaciones (Icono campanita) | 2022-09-01 → 2022-11-15 A (+75d) | 2022-09-01 → 2022-12-15 (+105d) | 1d → 23d | none → 76d |
| 1448 | Bandeja entrada de Notificaciones | 2022-09-01 → 2022-11-15 A (+75d) | 2022-09-01 → 2022-12-15 (+105d) | 1d → 23d | none → 76d |
| 1449 | Carga de Speis | 2022-09-01 → 2022-11-15 A (+75d) | 2022-09-01 → 2022-12-15 (+105d) | 1d → 23d | none → 76d |
| 1450 | Generación de Estadísticas | 2022-09-01 → 2022-11-15 A (+75d) | 2022-09-01 → 2022-12-15 (+105d) | 1d → 23d | none → 76d |
| 1451 | Generacion de graficas | 2022-09-01 → 2022-11-15 A (+75d) | 2022-09-01 → 2022-12-15 (+105d) | 1d → 23d | none → 76d |
| 1453 | **Módulo DPCP** | 2022-09-01 → 2022-11-15 A (+75d) | 2022-11-14 → 2022-12-15 (+31d) | 52.75d → 23d | none → 76d |
| 1454 | **Dashboard Perfil DPCP** | 2022-09-01 → 2022-11-15 A (+75d) | 2022-09-01 → 2022-12-15 (+105d) | 1d → 23d | none → 76d |
| 1455 | Pantalla Perfil | 2022-09-01 → 2022-11-15 A (+75d) | 2022-09-01 → 2022-12-15 (+105d) | 1d → 23d | none → 76d |
| 1456 | Pop up Notificaciones | 2022-09-01 → 2022-11-15 A (+75d) | 2022-09-01 → 2022-12-15 (+105d) | 1d → 23d | none → 76d |
| 1457 | Contador de Notificaciones (Icono campanita) | 2022-09-01 → 2022-11-15 A (+75d) | 2022-09-01 → 2022-12-15 (+105d) | 1d → 23d | none → 76d |
| 1458 | Bandeja entrada de Notificaciones | 2022-09-01 → 2022-11-15 A (+75d) | 2022-09-01 → 2022-12-15 (+105d) | 1d → 23d | none → 76d |
| 1459 | Asignación de Presupuesto | 2022-09-01 → 2022-11-15 A (+75d) | 2022-09-01 → 2022-12-15 (+105d) | 1d → 23d | none → 76d |
| 1460 | Generación de Estadísticas | 2022-09-01 → 2022-11-15 A (+75d) | 2022-09-01 → 2022-12-15 (+105d) | 1d → 23d | none → 76d |
| 1461 | Generación de graficas | 2022-09-01 → 2022-11-15 A (+75d) | 2022-09-01 → 2022-12-15 (+105d) | 1d → 23d | none → 76d |
| 1463 | **Módulo Municipios** | 2022-09-01 A → 2022-11-15 A (+75d) | 2022-11-14 → 2022-12-15 (+31d) | 52.75d → 23d | none → 76d |
| 1464 | **Base** | 2022-09-01 A → 2022-11-15 A (+75d) | 2022-09-01 → 2022-12-15 (+105d) | 1d → 23d | none → 76d |
| 1465 | Buzon | 2022-09-01 → 2022-11-15 A (+75d) | 2022-09-01 → 2022-12-15 (+105d) | 1d → 23d | none → 76d |
| 1466 | Login | 2022-09-01 A → 2022-11-15 A (+75d) | 2022-09-01 A → 2022-12-15 A (+105d) | 1d → 23d |  |
| 1467 | Logout | 2022-09-01 A → 2022-11-15 A (+75d) | 2022-09-01 A → 2022-12-15 A (+105d) | 1d → 23d |  |
| 1468 | Bloqueo de Sesión | 2022-09-01 → 2022-11-15 A (+75d) | 2022-09-01 → 2022-12-15 (+105d) | 1d → 23d | none → 76d |
| 1469 | Perfil | 2022-09-01 → 2022-11-15 A (+75d) | 2022-09-01 → 2022-12-15 (+105d) | 1d → 23d | none → 76d |
| 1470 | **Dashboard Inicio** | 2022-09-01 → 2022-11-15 A (+75d) | 2022-09-01 → 2022-12-15 (+105d) | 1d → 23d | none → 76d |
| 1471 | Pantalla Principal | 2022-09-01 → 2022-11-15 A (+75d) | 2022-09-01 → 2022-12-15 (+105d) | 1d → 23d | none → 76d |
| 1472 | Configuración de Dashboard | 2022-09-01 → 2022-11-15 A (+75d) | 2022-09-01 → 2022-12-15 (+105d) | 1d → 23d | none → 76d |
| 1473 | Ventanas emergentes de validación | 2022-09-01 → 2022-11-15 A (+75d) | 2022-09-01 → 2022-12-15 (+105d) | 1d → 23d | none → 76d |
| 1474 | Ruleta imágenes | 2022-09-01 → 2022-11-15 A (+75d) | 2022-09-01 → 2022-12-15 (+105d) | 1d → 23d | none → 76d |
| 1475 | Mensaje de Bienvenida | 2022-09-01 → 2022-11-15 A (+75d) | 2022-09-01 → 2022-12-15 (+105d) | 1d → 23d | none → 76d |

| ID | Task | Start | Finish | Duration | Total float |
| --- | --- | --- | --- | --- | --- |
| 1476 | **Mis Cuentas** | 2022-09-01 → 2022-11-15 A (+75d) | 2022-09-01 → 2022-12-15 (+105d) | 1d → 23d | none → 76d |
| 1477 | Pantalla Principal | 2022-09-01 → 2022-11-15 A (+75d) | 2022-09-01 → 2022-12-15 (+105d) | 1d → 23d | none → 76d |
| 1478 | Agregar | 2022-09-01 → 2022-11-15 A (+75d) | 2022-09-01 → 2022-12-15 (+105d) | 1d → 23d | none → 76d |
| 1479 | Editar | 2022-09-01 → 2022-11-15 A (+75d) | 2022-09-01 → 2022-12-15 (+105d) | 1d → 23d | none → 76d |
| 1480 | Eliminar | 2022-09-01 → 2022-11-15 A (+75d) | 2022-09-01 → 2022-12-15 (+105d) | 1d → 23d | none → 76d |
| 1481 | Configuración de Dashboard | 2022-09-01 → 2022-11-15 A (+75d) | 2022-09-01 → 2022-12-15 (+105d) | 1d → 23d | none → 76d |
| 1482 | Exportación de dashboard PDF | 2022-09-01 → 2022-11-15 A (+75d) | 2022-09-01 → 2022-12-15 (+105d) | 1d → 23d | none → 76d |
| 1483 | Exportación de dashboard Excel | 2022-09-01 → 2022-11-15 A (+75d) | 2022-09-01 → 2022-12-15 (+105d) | 1d → 23d | none → 76d |
| 1484 | Paginación Dashboard | 2022-09-01 → 2022-11-15 A (+75d) | 2022-09-01 → 2022-12-15 (+105d) | 1d → 23d | none → 76d |
| 1485 | Busqueda Dash board | 2022-09-01 → 2022-11-15 A (+75d) | 2022-09-01 → 2022-12-15 (+105d) | 1d → 23d | none → 76d |
| 1486 | Ventanas emergentes de validación | 2022-09-01 → 2022-11-15 A (+75d) | 2022-09-01 → 2022-12-15 (+105d) | 1d → 23d | none → 76d |
| 1487 | **Solicitud de Recursos** | 2022-09-01 → 2022-11-15 A (+75d) | 2022-09-01 → 2022-12-15 (+105d) | 1d → 23d | none → 76d |
| 1488 | Pantalla Principal | 2022-09-01 → 2022-11-15 A (+75d) | 2022-09-01 → 2022-12-15 (+105d) | 1d → 23d | none → 76d |
| 1489 | Agregar | 2022-09-01 → 2022-11-15 A (+75d) | 2022-09-01 → 2022-12-15 (+105d) | 1d → 23d | none → 76d |
| 1490 | Editar | 2022-09-01 → 2022-11-15 A (+75d) | 2022-09-01 → 2022-12-15 (+105d) | 1d → 23d | none → 76d |
| 1491 | Eliminar | 2022-09-01 → 2022-11-15 A (+75d) | 2022-09-01 → 2022-12-15 (+105d) | 1d → 23d | none → 76d |
| 1492 | Configuración de Dashboard | 2022-09-01 → 2022-11-15 A (+75d) | 2022-09-01 → 2022-12-15 (+105d) | 1d → 23d | none → 76d |
| 1493 | Exportación de dashboard PDF | 2022-09-01 → 2022-11-15 A (+75d) | 2022-09-01 → 2022-12-15 (+105d) | 1d → 23d | none → 76d |
| 1494 | Exportación de dashboard Excel | 2022-09-01 → 2022-11-15 A (+75d) | 2022-09-01 → 2022-12-15 (+105d) | 1d → 23d | none → 76d |
| 1495 | Paginación Dashboard | 2022-09-01 → 2022-11-15 A (+75d) | 2022-09-01 → 2022-12-15 (+105d) | 1d → 23d | none → 76d |
| 1496 | Busqueda Dash board | 2022-09-01 → 2022-11-15 A (+75d) | 2022-09-01 → 2022-12-15 (+105d) | 1d → 23d | none → 76d |
| 1497 | Ventanas emergentes de validación | 2022-09-01 → 2022-11-15 A (+75d) | 2022-09-01 → 2022-12-15 (+105d) | 1d → 23d | none → 76d |
| 1498 | Boton Detalles | 2022-09-01 → 2022-11-15 A (+75d) | 2022-09-01 → 2022-12-15 (+105d) | 1d → 23d | none → 76d |
| 1499 | **Dashboard Ayuda** | 2022-09-01 → 2022-11-15 A (+75d) | 2022-09-01 → 2022-12-15 (+105d) | 1d → 23d | none → 76d |
| 1500 | Pantalla principal | 2022-09-01 → 2022-11-15 A (+75d) | 2022-09-01 → 2022-12-15 (+105d) | 1d → 23d | none → 76d |
| 1501 | Configuracion de Enlaces | 2022-09-01 → 2022-11-15 A (+75d) | 2022-09-01 → 2022-12-15 (+105d) | 1d → 23d | none → 76d |
| 1502 | **Recepcion de Recursos Participaciones Federales** | 2022-09-01 → 2022-11-15 A (+75d) | 2022-09-01 → 2022-12-15 (+105d) | 1d → 23d | none → 76d |
| 1503 | Pantalla Principal | 2022-09-01 → 2022-11-15 A (+75d) | 2022-09-01 → 2022-12-15 (+105d) | 1d → 23d | none → 76d |
| 1504 | Agregar | 2022-09-01 → 2022-11-15 A (+75d) | 2022-09-01 → 2022-12-15 (+105d) | 1d → 23d | none → 76d |
| 1505 | Editar | 2022-09-01 → 2022-11-15 A (+75d) | 2022-09-01 → 2022-12-15 (+105d) | 1d → 23d | none → 76d |
| 1506 | Eliminar | 2022-09-01 → 2022-11-15 A (+75d) | 2022-09-01 → 2022-12-15 (+105d) | 1d → 23d | none → 76d |
| 1507 | Configuración de Dashboard | 2022-09-01 → 2022-11-15 A (+75d) | 2022-09-01 → 2022-12-15 (+105d) | 1d → 23d | none → 76d |
| 1508 | Exportación de dashboard PDF | 2022-09-01 → 2022-11-15 A (+75d) | 2022-09-01 → 2022-12-15 (+105d) | 1d → 23d | none → 76d |
| 1509 | Exportación de dashboard Excel | 2022-09-01 → 2022-11-15 A (+75d) | 2022-09-01 → 2022-12-15 (+105d) | 1d → 23d | none → 76d |
| 1510 | Paginación Dashboard | 2022-09-01 → 2022-11-15 A (+75d) | 2022-09-01 → 2022-12-15 (+105d) | 1d → 23d | none → 76d |
| 1511 | Busqueda Dash board | 2022-09-01 → 2022-11-15 A (+75d) | 2022-09-01 → 2022-12-15 (+105d) | 1d → 23d | none → 76d |
| 1512 | Ventanas emergentes de validación | 2022-09-01 → 2022-11-15 A (+75d) | 2022-09-01 → 2022-12-15 (+105d) | 1d → 23d | none → 76d |
| 1513 | **Recepcion de Recursos Participaciones Estatales** | 2022-09-01 → 2022-11-15 A (+75d) | 2022-09-01 → 2022-12-15 (+105d) | 1d → 23d | none → 76d |
| 1514 | Pantalla Principal | 2022-09-01 → 2022-11-15 A (+75d) | 2022-09-01 → 2022-12-15 (+105d) | 1d → 23d | none → 76d |
| 1515 | Agregar | 2022-09-01 → 2022-11-15 A (+75d) | 2022-09-01 → 2022-12-15 (+105d) | 1d → 23d | none → 76d |
| 1516 | Editar | 2022-09-01 → 2022-11-15 A (+75d) | 2022-09-01 → 2022-12-15 (+105d) | 1d → 23d | none → 76d |
| 1517 | Eliminar | 2022-09-01 → 2022-11-15 A (+75d) | 2022-09-01 → 2022-12-15 (+105d) | 1d → 23d | none → 76d |
| 1518 | Configuración de Dashboard | 2022-09-01 → 2022-11-15 A (+75d) | 2022-09-01 → 2022-12-15 (+105d) | 1d → 23d | none → 76d |
| 1519 | Exportación de dashboard PDF | 2022-09-01 → 2022-11-15 A (+75d) | 2022-09-01 → 2022-12-15 (+105d) | 1d → 23d | none → 76d |
| 1520 | Exportación de dashboard Excel | 2022-09-01 → 2022-11-15 A (+75d) | 2022-09-01 → 2022-12-15 (+105d) | 1d → 23d | none → 76d |
| 1521 | Paginación Dashboard | 2022-09-01 → 2022-11-15 A (+75d) | 2022-09-01 → 2022-12-15 (+105d) | 1d → 23d | none → 76d |
| 1522 | Busqueda Dash board | 2022-09-01 → 2022-11-15 A (+75d) | 2022-09-01 → 2022-12-15 (+105d) | 1d → 23d | none → 76d |
| 1523 | Ventanas emergentes de validación | 2022-09-01 → 2022-11-15 A (+75d) | 2022-09-01 → 2022-12-15 (+105d) | 1d → 23d | none → 76d |
| 1524 | **Recepcion de Recursos Aportaciones Federales** | 2022-09-01 → 2022-11-15 A (+75d) | 2022-09-01 → 2022-12-15 (+105d) | 1d → 23d | none → 76d |
| 1525 | Pantalla Principal | 2022-09-01 → 2022-11-15 A (+75d) | 2022-09-01 → 2022-12-15 (+105d) | 1d → 23d | none → 76d |
| 1526 | Agregar | 2022-09-01 → 2022-11-15 A (+75d) | 2022-09-01 → 2022-12-15 (+105d) | 1d → 23d | none → 76d |
| 1527 | Editar | 2022-09-01 → 2022-11-15 A (+75d) | 2022-09-01 → 2022-12-15 (+105d) | 1d → 23d | none → 76d |
| 1528 | Eliminar | 2022-09-01 → 2022-11-15 A (+75d) | 2022-09-01 → 2022-12-15 (+105d) | 1d → 23d | none → 76d |
| 1529 | Configuración de Dashboard | 2022-09-01 → 2022-11-15 A (+75d) | 2022-09-01 → 2022-12-15 (+105d) | 1d → 23d | none → 76d |
| 1530 | Exportación de dashboard PDF | 2022-09-01 → 2022-11-15 A (+75d) | 2022-09-01 → 2022-12-15 (+105d) | 1d → 23d | none → 76d |
| 1531 | Exportación de dashboard Excel | 2022-09-01 → 2022-11-15 A (+75d) | 2022-09-01 → 2022-12-15 (+105d) | 1d → 23d | none → 76d |
| 1532 | Paginación Dashboard | 2022-09-01 → 2022-11-15 A (+75d) | 2022-09-01 → 2022-12-15 (+105d) | 1d → 23d | none → 76d |
| 1533 | Busqueda Dash board | 2022-09-01 → 2022-11-15 A (+75d) | 2022-09-01 → 2022-12-15 (+105d) | 1d → 23d | none → 76d |
| 1534 | Ventanas emergentes de validación | 2022-09-01 → 2022-11-15 A (+75d) | 2022-09-01 → 2022-12-15 (+105d) | 1d → 23d | none → 76d |
| 1535 | **Recepcion de Recursos Aportaciones Estatales** | 2022-09-01 → 2022-11-15 A (+75d) | 2022-09-01 → 2022-12-15 (+105d) | 1d → 23d | none → 76d |
| 1536 | Pantalla Principal | 2022-09-01 → 2022-11-15 A (+75d) | 2022-09-01 → 2022-12-15 (+105d) | 1d → 23d | none → 76d |
| 1537 | Agregar | 2022-09-01 → 2022-11-15 A (+75d) | 2022-09-01 → 2022-12-15 (+105d) | 1d → 23d | none → 76d |
| 1538 | Editar | 2022-09-01 → 2022-11-15 A (+75d) | 2022-09-01 → 2022-12-15 (+105d) | 1d → 23d | none → 76d |
| 1539 | Eliminar | 2022-09-01 → 2022-11-15 A (+75d) | 2022-09-01 → 2022-12-15 (+105d) | 1d → 23d | none → 76d |
| 1540 | Configuración de Dashboard | 2022-09-01 → 2022-11-15 A (+75d) | 2022-09-01 → 2022-12-15 (+105d) | 1d → 23d | none → 76d |
| 1541 | Exportación de dashboard PDF | 2022-09-01 → 2022-11-15 A (+75d) | 2022-09-01 → 2022-12-15 (+105d) | 1d → 23d | none → 76d |
| 1542 | Exportación de dashboard Excel | 2022-09-01 → 2022-11-15 A (+75d) | 2022-09-01 → 2022-12-15 (+105d) | 1d → 23d | none → 76d |
| 1543 | Paginación Dashboard | 2022-09-01 → 2022-11-15 A (+75d) | 2022-09-01 → 2022-12-15 (+105d) | 1d → 23d | none → 76d |
| 1544 | Busqueda Dash board | 2022-09-01 → 2022-11-15 A (+75d) | 2022-09-01 → 2022-12-15 (+105d) | 1d → 23d | none → 76d |
| 1545 | Ventanas emergentes de validación | 2022-09-01 → 2022-11-15 A (+75d) | 2022-09-01 → 2022-12-15 (+105d) | 1d → 23d | none → 76d |

| ID | Task | Start | Finish | Duration | Total float |
| --- | --- | --- | --- | --- | --- |
| 1547 | **Módulo OPD** | 2022-09-01 → 2022-11-15 A (+75d) | 2022-11-14 → 2022-12-15 (+31d) | 52.75d → 23d | none → 76d |
| 1548 | **Base** | 2022-09-01 → 2022-11-15 A (+75d) | 2022-09-01 → 2022-12-15 (+105d) | 1d → 23d | none → 76d |
| 1549 | Perfil | 2022-09-01 → 2022-11-15 A (+75d) | 2022-09-01 → 2022-12-15 (+105d) | 1d → 23d | none → 76d |
| 1550 | Pop up Notificaciones | 2022-09-01 → 2022-11-15 A (+75d) | 2022-09-01 → 2022-12-15 (+105d) | 1d → 23d | none → 76d |
| 1551 | Contador de Notificaciones (Icono campanita) | 2022-09-01 → 2022-11-15 A (+75d) | 2022-09-01 → 2022-12-15 (+105d) | 1d → 23d | none → 76d |
| 1552 | Bandeja entrada de Notificaciones | 2022-09-01 → 2022-11-15 A (+75d) | 2022-09-01 → 2022-12-15 (+105d) | 1d → 23d | none → 76d |
| 1553 | **Dashboard mis cuentas** | 2022-09-01 → 2022-11-15 A (+75d) | 2022-09-01 → 2022-12-15 (+105d) | 1d → 23d | none → 76d |
| 1554 | Pantalla Principal | 2022-09-01 → 2022-11-15 A (+75d) | 2022-09-01 → 2022-12-15 (+105d) | 1d → 23d | none → 76d |
| 1555 | Configuración de Dashboard | 2022-09-01 → 2022-11-15 A (+75d) | 2022-09-01 → 2022-12-15 (+105d) | 1d → 23d | none → 76d |
| 1556 | Exportación de dashboard PDF | 2022-09-01 → 2022-11-15 A (+75d) | 2022-09-01 → 2022-12-15 (+105d) | 1d → 23d | none → 76d |
| 1557 | Exportación de dashboard Excel | 2022-09-01 → 2022-11-15 A (+75d) | 2022-09-01 → 2022-12-15 (+105d) | 1d → 23d | none → 76d |
| 1558 | Paginación Dashboard | 2022-09-01 → 2022-11-15 A (+75d) | 2022-09-01 → 2022-12-15 (+105d) | 1d → 23d | none → 76d |
| 1559 | Busqueda Dashboard | 2022-09-01 → 2022-11-15 A (+75d) | 2022-09-01 → 2022-12-15 (+105d) | 1d → 23d | none → 76d |
| 1560 | Agregar | 2022-09-01 → 2022-11-15 A (+75d) | 2022-09-01 → 2022-12-15 (+105d) | 1d → 23d | none → 76d |
| 1561 | Editar | 2022-09-01 → 2022-11-15 A (+75d) | 2022-09-01 → 2022-12-15 (+105d) | 1d → 23d | none → 76d |
| 1562 | Eliminar | 2022-09-01 → 2022-11-15 A (+75d) | 2022-09-01 → 2022-12-15 (+105d) | 1d → 23d | none → 76d |
| 1563 | Ventanas emergentes de validación | 2022-09-01 → 2022-11-15 A (+75d) | 2022-09-01 → 2022-12-15 (+105d) | 1d → 23d | none → 76d |
| 1564 | **Dashboard Facturación** | 2022-09-01 → 2022-11-15 A (+75d) | 2022-09-01 → 2022-12-15 (+105d) | 1d → 23d | none → 76d |
| 1565 | Pantalla Principal | 2022-09-01 → 2022-11-15 A (+75d) | 2022-09-01 → 2022-12-15 (+105d) | 1d → 23d | none → 76d |
| 1566 | Configuración de Dashboard | 2022-09-01 → 2022-11-15 A (+75d) | 2022-09-01 → 2022-12-15 (+105d) | 1d → 23d | none → 76d |
| 1567 | Exportación de dashboard PDF | 2022-09-01 → 2022-11-15 A (+75d) | 2022-09-01 → 2022-12-15 (+105d) | 1d → 23d | none → 76d |
| 1568 | Exportación de dashboard Excel | 2022-09-01 → 2022-11-15 A (+75d) | 2022-09-01 → 2022-12-15 (+105d) | 1d → 23d | none → 76d |
| 1569 | Paginación Dashboard | 2022-09-01 → 2022-11-15 A (+75d) | 2022-09-01 → 2022-12-15 (+105d) | 1d → 23d | none → 76d |
| 1570 | Busqueda Dashboard | 2022-09-01 → 2022-11-15 A (+75d) | 2022-09-01 → 2022-12-15 (+105d) | 1d → 23d | none → 76d |
| 1571 | Ventanas de visualización de detalle | 2022-09-01 → 2022-11-15 A (+75d) | 2022-09-01 → 2022-12-15 (+105d) | 1d → 23d | none → 76d |
| 1572 | Busqueda por Año | 2022-09-01 → 2022-11-15 A (+75d) | 2022-09-01 → 2022-12-15 (+105d) | 1d → 23d | none → 76d |
| 1573 | **Dashboard Solicitud de recursos** | 2022-09-01 → 2022-11-15 A (+75d) | 2022-09-01 → 2022-12-15 (+105d) | 1d → 23d | none → 76d |
| 1574 | Pantalla Principal | 2022-09-01 → 2022-11-15 A (+75d) | 2022-09-01 → 2022-12-15 (+105d) | 1d → 23d | none → 76d |
| 1575 | Configuración de Dashboard | 2022-09-01 → 2022-11-15 A (+75d) | 2022-09-01 → 2022-12-15 (+105d) | 1d → 23d | none → 76d |
| 1576 | Exportación de dashboard PDF | 2022-09-01 → 2022-11-15 A (+75d) | 2022-09-01 → 2022-12-15 (+105d) | 1d → 23d | none → 76d |
| 1577 | Exportación de dashboard Excel | 2022-09-01 → 2022-11-15 A (+75d) | 2022-09-01 → 2022-12-15 (+105d) | 1d → 23d | none → 76d |
| 1578 | Paginación Dashboard | 2022-09-01 → 2022-11-15 A (+75d) | 2022-09-01 → 2022-12-15 (+105d) | 1d → 23d | none → 76d |
| 1579 | **Busqueda Dashboard** | 2022-09-01 → 2022-11-15 A (+75d) | 2022-09-01 → 2022-12-15 (+105d) | 1d → 23d | none → 76d |
| 1580 | Pantalla Principal | 2022-09-01 → 2022-11-15 A (+75d) | 2022-09-01 → 2022-12-15 (+105d) | 1d → 23d | none → 76d |
| 1581 | Agregar | 2022-09-01 → 2022-11-15 A (+75d) | 2022-09-01 → 2022-12-15 (+105d) | 1d → 23d | none → 76d |
| 1582 | Editar | 2022-09-01 → 2022-11-15 A (+75d) | 2022-09-01 → 2022-12-15 (+105d) | 1d → 23d | none → 76d |
| 1583 | Eliminar | 2022-09-01 → 2022-11-15 A (+75d) | 2022-09-01 → 2022-12-15 (+105d) | 1d → 23d | none → 76d |
| 1584 | Ventanas emergentes de validación | 2022-09-01 → 2022-11-15 A (+75d) | 2022-09-01 → 2022-12-15 (+105d) | 1d → 23d | none → 76d |
| 1585 | Busqueda por Año | 2022-09-01 → 2022-11-15 A (+75d) | 2022-09-01 → 2022-12-15 (+105d) | 1d → 23d | none → 76d |
| 1586 | Carga de documentos | 2022-09-01 → 2022-11-15 A (+75d) | 2022-09-01 → 2022-12-15 (+105d) | 1d → 23d | none → 76d |
| 1587 | PDF generado por la solicitud de recursos | 2022-09-01 → 2022-11-15 A (+75d) | 2022-09-01 → 2022-12-15 (+105d) | 1d → 23d | none → 76d |
| 1588 | **Dashboard menu preguntas frecuentes** | 2022-09-01 → 2022-11-15 A (+75d) | 2022-09-01 → 2022-12-15 (+105d) | 1d → 23d | none → 76d |
| 1589 | Pantalla Principal | 2022-09-01 → 2022-11-15 A (+75d) | 2022-09-01 → 2022-12-15 (+105d) | 1d → 23d | none → 76d |
| 1590 | Configuracion de dashboard | 2022-09-01 → 2022-11-15 A (+75d) | 2022-09-01 → 2022-12-15 (+105d) | 1d → 23d | none → 76d |
| 1591 | **Dashboard Recepción de recursos** | 2022-09-01 → 2022-11-15 A (+75d) | 2022-09-01 → 2022-12-15 (+105d) | 1d → 23d | none → 76d |
| 1592 | Pantalla Principal | 2022-09-01 → 2022-11-15 A (+75d) | 2022-09-01 → 2022-12-15 (+105d) | 1d → 23d | none → 76d |
| 1593 | Configuracion de dashboard | 2022-09-01 → 2022-11-15 A (+75d) | 2022-09-01 → 2022-12-15 (+105d) | 1d → 23d | none → 76d |
| 1594 | Exportación de dashboard PDF | 2022-09-01 → 2022-11-15 A (+75d) | 2022-09-01 → 2022-12-15 (+105d) | 1d → 23d | none → 76d |
| 1595 | Exportación de dashboard Excel | 2022-09-01 → 2022-11-15 A (+75d) | 2022-09-01 → 2022-12-15 (+105d) | 1d → 23d | none → 76d |
| 1596 | Paginación Dashboard | 2022-09-01 → 2022-11-15 A (+75d) | 2022-09-01 → 2022-12-15 (+105d) | 1d → 23d | none → 76d |
| 1597 | Busqueda Dashboard | 2022-09-01 → 2022-11-15 A (+75d) | 2022-09-01 → 2022-12-15 (+105d) | 1d → 23d | none → 76d |
| 1598 | Subida de Archivo | 2022-09-01 → 2022-11-15 A (+75d) | 2022-09-01 → 2022-12-15 (+105d) | 1d → 23d | none → 76d |
| 1599 | **Dashboard Recepción de recursos sección participaciones estatales** | 2022-09-01 → 2022-11-15 A (+75d) | 2022-09-01 → 2022-12-15 (+105d) | 1d → 23d | none → 76d |
| 1600 | Pantalla Principal | 2022-09-01 → 2022-11-15 A (+75d) | 2022-09-01 → 2022-12-15 (+105d) | 1d → 23d | none → 76d |
| 1601 | Configuracion de dashboard | 2022-09-01 → 2022-11-15 A (+75d) | 2022-09-01 → 2022-12-15 (+105d) | 1d → 23d | none → 76d |
| 1602 | Exportación de dashboard PDF | 2022-09-01 → 2022-11-15 A (+75d) | 2022-09-01 → 2022-12-15 (+105d) | 1d → 23d | none → 76d |
| 1603 | Exportación de dashboard Excel | 2022-09-01 → 2022-11-15 A (+75d) | 2022-09-01 → 2022-12-15 (+105d) | 1d → 23d | none → 76d |
| 1604 | Paginación Dashboard | 2022-09-01 → 2022-11-15 A (+75d) | 2022-09-01 → 2022-12-15 (+105d) | 1d → 23d | none → 76d |
| 1605 | Busqueda Dashboard | 2022-09-01 → 2022-11-15 A (+75d) | 2022-09-01 → 2022-12-15 (+105d) | 1d → 23d | none → 76d |
| 1606 | Subida de Archivo | 2022-09-01 → 2022-11-15 A (+75d) | 2022-09-01 → 2022-12-15 (+105d) | 1d → 23d | none → 76d |
| 1607 | **Dashboard Recepción de recursos sección aportaciones federales** | 2022-09-01 → 2022-11-15 A (+75d) | 2022-09-01 → 2022-12-15 (+105d) | 1d → 23d | none → 76d |
| 1608 | Pantalla Principal | 2022-09-01 → 2022-11-15 A (+75d) | 2022-09-01 → 2022-12-15 (+105d) | 1d → 23d | none → 76d |
| 1609 | Configuracion de dashboard | 2022-09-01 → 2022-11-15 A (+75d) | 2022-09-01 → 2022-12-15 (+105d) | 1d → 23d | none → 76d |
| 1610 | Exportación de dashboard PDF | 2022-09-01 → 2022-11-15 A (+75d) | 2022-09-01 → 2022-12-15 (+105d) | 1d → 23d | none → 76d |
| 1611 | Exportación de dashboard Excel | 2022-09-01 → 2022-11-15 A (+75d) | 2022-09-01 → 2022-12-15 (+105d) | 1d → 23d | none → 76d |
| 1612 | Paginación Dashboard | 2022-09-01 → 2022-11-15 A (+75d) | 2022-09-01 → 2022-12-15 (+105d) | 1d → 23d | none → 76d |
| 1613 | Busqueda Dashboard | 2022-09-01 → 2022-11-15 A (+75d) | 2022-09-01 → 2022-12-15 (+105d) | 1d → 23d | none → 76d |
| 1614 | Subida de Archivo | 2022-09-01 → 2022-11-15 A (+75d) | 2022-09-01 → 2022-12-15 (+105d) | 1d → 23d | none → 76d |
| 1615 | **Dashboard Recepción de recursos sección aportaciones estatales** | 2022-09-01 → 2022-11-15 A (+75d) | 2022-09-01 → 2022-12-15 (+105d) | 1d → 23d | none → 76d |
| 1616 | Pantalla Principal | 2022-09-01 → 2022-11-15 A (+75d) | 2022-09-01 → 2022-12-15 (+105d) | 1d → 23d | none → 76d |

| ID | Task | Start | Finish | Duration | Total float |
| --- | --- | --- | --- | --- | --- |
| 1617 | Configuracion de dashboard | 2022-09-01 → 2022-11-15 A (+75d) | 2022-09-01 → 2022-12-15 (+105d) | 1d → 23d | none → 76d |
| 1618 | Exportación de dashboard PDF | 2022-09-01 → 2022-11-15 A (+75d) | 2022-09-01 → 2022-12-15 (+105d) | 1d → 23d | none → 76d |
| 1619 | Exportación de dashboard Excel | 2022-09-01 → 2022-11-15 A (+75d) | 2022-09-01 → 2022-12-15 (+105d) | 1d → 23d | none → 76d |
| 1620 | Paginación Dashboard | 2022-09-01 → 2022-11-15 A (+75d) | 2022-09-01 → 2022-12-15 (+105d) | 1d → 23d | none → 76d |
| 1621 | Busqueda Dashboard | 2022-09-01 → 2022-11-15 A (+75d) | 2022-09-01 → 2022-12-15 (+105d) | 1d → 23d | none → 76d |
| 1622 | Subida de Archivo | 2022-09-01 → 2022-11-15 A (+75d) | 2022-09-01 → 2022-12-15 (+105d) | 1d → 23d | none → 76d |
| 1643 | Fin | 2022-11-16 → 2022-08-18 (-90d) | 2022-11-16 → 2022-08-18 (-90d) |  | none → 162d |

## Version 3 (data date 2022-06-15, saved 2022-09-22, file PROJECT PDRMyE 3.0.mpp)

Note of the change: Create PROJECT PDRMyE 3.0.mpp

Last finish 2023-03-31 → 2022-12-15 (-106d). Complete tasks 171 → 367.

Added:

| ID | Task | Duration | Start | Finish | Constraint |
| --- | --- | --- | --- | --- | --- |
| 115 | Contador de Notificaciones (Icono campanita) | 1d | 2022-10-17 A | 2022-10-17 A | start no earlier than 2022-10-17 |
| 254 | Pantalla Principal | 1d | 2022-10-28 A | 2022-10-28 A |  |
| 1034 | Pantalla Principal | 1d | 2022-10-28 A | 2022-10-28 A |  |

Changed:

| ID | Task | Start | Finish | Duration | Complete | Total float | Predecessors | Other |
| --- | --- | --- | --- | --- | --- | --- | --- | --- |
| 1 | **Proyecto PDRMyE** | 2022-08-18 → 2022-06-15 A (-64d) | 2022-08-18 → 2022-12-15 (+119d) | 0d → 121.81d | 0% → 25% | 162d → 0d |  |  |
| 2 | Inicio | 2022-08-18 → 2022-06-15 (-64d) | 2022-08-18 → 2022-06-15 (-64d) |  |  | 190d → none |  |  |
| 3 | **Fase 1 Inicio y Planificación** |  |  | 46d → 43.12d |  |  |  |  |
| 4 | **Levantamiento de Generalidades Técnicas** |  |  | 24d → 22.5d |  |  |  |  |
| 5 | **sprint 1** |  |  | 24d → 22.5d |  |  |  |  |
| 6 | Reunion CPH |  |  |  |  |  |  | resources none → Adolfo; Juanita; Gonzalo; Rodolfo |
| 7 | Reunion DAMOP |  |  |  |  |  |  | resources none → Adolfo; Juanita; Gonzalo; Rodolfo |
| 8 | Reunion CPH |  |  |  |  |  |  | resources none → Adolfo; Juanita; Gonzalo; Rodolfo |
| 9 | Reunion CPH |  |  |  |  |  |  | resources none → Adolfo; Juanita; Gonzalo; Rodolfo |
| 10 | Reunion CPH |  |  |  |  |  |  | resources none → Adolfo; Juanita; Gonzalo; Rodolfo |
| 11 | Reunion DAMOP |  |  |  |  |  |  | resources none → Adolfo; Juanita; Gonzalo; Rodolfo |
| 12 | Reunion DAMOP |  |  |  |  |  |  | resources none → Adolfo; Juanita; Gonzalo; Rodolfo |
| 13 | Reunion DAMOP |  |  |  |  |  |  | resources none → Adolfo; Juanita; Gonzalo; Rodolfo |
| 14 | Reunion DAMOP |  |  |  |  |  |  | resources none → Adolfo; Juanita; Gonzalo; Rodolfo |
| 15 | Reunion DAF |  |  |  |  |  |  | resources none → Adolfo; Juanita; Gonzalo; Rodolfo |
| 16 | Reunion DCCP |  |  |  |  |  |  | resources none → Adolfo; Juanita; Gonzalo; Rodolfo |
| 17 | Reunion DPCP |  |  |  |  |  |  | resources none → Adolfo; Juanita; Gonzalo; Rodolfo |
| 18 | **Objeto y Proyección del Alcance** |  |  | 43d → 40.31d |  |  |  |  |
| 19 | **sprint 2** |  |  | 11d → 10.31d |  |  | none → 5 |  |
| 20 | Estructura de trabajo y organigrama |  |  |  |  |  |  | resources none → Adolfo; Juanita; Gonzalo; Rodolfo |
| 21 | Muestra de avances |  |  |  |  |  |  | resources none → Adolfo; Juanita; Gonzalo; Rodolfo |
| 22 | Avance de Maqueta para Plataforma de Distribuciones |  |  |  |  |  |  | resources none → Adolfo; Juanita; Gonzalo; Rodolfo |
| 23 | Revision de cambios a maqueta |  |  |  |  |  |  | resources none → Adolfo; Juanita; Gonzalo; Rodolfo |
| 24 | Reunion_AVANCES_Semanal |  |  |  |  |  |  | resources none → Adolfo; Juanita; Gonzalo; Rodolfo |
| 25 | Reunión sobre Seguridad de la Plataforma |  |  |  |  |  |  | resources none → Adolfo; Juanita; Gonzalo; Rodolfo |
| 26 | Retroalimentacion DAMOP |  |  |  |  |  |  | resources none → Adolfo; Juanita; Gonzalo; Rodolfo |
| 27 | Retroalimentacion DAF |  |  |  |  |  |  | resources none → Adolfo; Juanita; Gonzalo; Rodolfo |
| 28 | Retroalimentacion DCCP |  |  |  |  |  |  | resources none → Adolfo; Juanita; Gonzalo; Rodolfo |
| 29 | Retroalimentacion DPCP |  |  |  |  |  |  | resources none → Adolfo; Juanita; Gonzalo; Rodolfo |
| 30 | Reunion_AVANCES_Semanal |  |  |  |  |  |  | resources none → Adolfo; Juanita; Gonzalo; Rodolfo |
| 31 | **sprint 3** |  |  | 32d → 30d |  |  | none → 19 |  |
| 32 | Edicion de maquetas CPH, DPCP, DAMOP, DCCP, DAF, Municipios |  |  |  |  |  |  | resources none → Adolfo; Juanita; Gonzalo; Rodolfo |
| 33 | Reunion_AVANCES_Semanal |  |  |  |  |  |  | resources none → Adolfo; Juanita; Gonzalo; Rodolfo |
| 34 | Definir la arquitectura que se utilizara |  |  |  |  |  |  | resources none → Adolfo; Juanita; Gonzalo; Rodolfo |
| 35 | Presentacion de Propuesta Arquitectura de Micro sitios |  |  |  |  |  |  | resources none → Adolfo; Juanita; Gonzalo; Rodolfo |
| 36 | Aprobacion de Propuesta de Arquitectura de Micro sitios |  |  |  |  |  |  | resources none → Adolfo; Juanita; Gonzalo; Rodolfo |
| 37 | Presentación de Maqueta PDRMyE |  |  |  |  |  |  | resources none → Adolfo; Juanita; Gonzalo; Rodolfo |
| 38 | Gerente de Proyecto Reviso maqueta de CPH |  |  |  |  |  |  | resources none → Adolfo; Juanita; Gonzalo; Rodolfo |
| 39 | Reunion_AVANCES_Semanal |  |  |  |  |  |  | resources none → Adolfo; Juanita; Gonzalo; Rodolfo |
| 40 | Retroalimentacion de maquetado con CPH |  |  |  |  |  |  | resources none → Adolfo; Juanita; Gonzalo; Rodolfo |
| 41 | Propuesta de arquitectura de micro sitios |  |  |  |  |  |  | resources none → Adolfo; Juanita; Gonzalo; Rodolfo |
| 42 | Retroalimentacion de maquetado con DAMOP |  |  |  |  |  |  | resources none → Adolfo; Juanita; Gonzalo; Rodolfo |
| 43 | Retroalimentacion de maquetado con DCCP |  |  |  |  |  |  | resources none → Adolfo; Juanita; Gonzalo; Rodolfo |
| 44 | Reunion_AVANCES_Semanal |  |  |  |  |  |  | resources none → Adolfo; Juanita; Gonzalo; Rodolfo |
| 45 | Revisioin de avances de maquetas |  |  |  |  |  |  | resources none → Adolfo; Juanita; Gonzalo; Rodolfo |
| 46 | Revisioin de avances de maquetas CPH y DAMOP |  |  |  |  |  |  | resources none → Adolfo; Juanita; Gonzalo; Rodolfo |
| 47 | Reunion_AVANCES_Semanal |  |  |  |  |  |  | resources none → Adolfo; Juanita; Gonzalo; Rodolfo |
| 48 | Aclaracion dudas con la maqueta de firma electronica |  |  |  |  |  |  | resources none → Adolfo; Juanita; Gonzalo; Rodolfo |
| 49 | Retroalimentacion de maquetado con DAMOP |  |  |  |  |  |  | resources none → Adolfo; Juanita; Gonzalo; Rodolfo |
| 50 | Retroalimentacion de maquetado con DAMOP |  |  |  |  |  |  | resources none → Adolfo; Juanita; Gonzalo; Rodolfo |
| 51 | Revision de maqueta de firma electronica |  |  |  |  |  |  | resources none → Adolfo; Juanita; Gonzalo; Rodolfo |
| 52 | Reunion_AVANCES_Semanal |  |  |  |  |  |  | resources none → Adolfo; Juanita; Gonzalo; Rodolfo |
| 53 | reunión demostración plataforma Ing. Marisol |  |  |  |  |  |  | resources none → Adolfo; Juanita; Gonzalo; Rodolfo |
| 54 | Avance de Maqueta Exportacion de Dashboard en PDF |  |  |  |  |  |  | resources none → Adolfo; Juanita; Gonzalo; Rodolfo |
| 55 | Avance de Maqueta Exportacion de Dashboard en Excel |  |  |  |  |  |  | resources none → Adolfo; Juanita; Gonzalo; Rodolfo |
| 56 | Avance de Maqueta Paginacion de Dashboard |  |  |  |  |  |  | resources none → Adolfo; Juanita; Gonzalo; Rodolfo |
| 57 | Levantamiento de Generalidades Técnicas MUNICIPIOS |  |  |  |  |  |  | resources none → Adolfo; Juanita; Gonzalo; Rodolfo |
| 58 | Levantamiento de Generalidades Técnicas OPDs |  |  |  |  |  |  | resources none → Adolfo; Juanita; Gonzalo; Rodolfo |
| 59 | Avance de Maqueta |  |  |  |  |  |  | resources none → Adolfo; Juanita; Gonzalo; Rodolfo |
| 60 | Configuración de Maqueta Municipios |  |  |  |  |  |  | resources none → Adolfo; Juanita; Gonzalo; Rodolfo |
| 61 | Reunion_AVANCES_Semanal |  |  |  |  |  |  | resources none → Adolfo; Juanita; Gonzalo; Rodolfo |
| 62 | Levantamiento de Generalidades Técnicas OPDs |  |  |  |  |  |  | resources none → Adolfo; Juanita; Gonzalo; Rodolfo |
| 63 | Levantamiento de Generalidades Técnicas OPDs |  |  |  |  |  |  | resources none → Adolfo; Juanita; Gonzalo; Rodolfo |
| 64 | **Fase 2 Diseño y Desarrollo** | 2022-07-15 A → 2022-08-18 A (+34d) | 2023-02-23 → 2022-12-15 (-70d) | 160d → 77.88d | 10% → 24% | 26d → 0.81d | 3 → none |  |
| 65 | **Diseño y Desarrollo BACK** | 2022-07-15 A → 2022-08-19 A (+35d) | 2023-01-20 → 2022-12-15 (-36d) | 136d → 76.94d | 16% → 28% | 50d → 0.81d |  |  |
| 66 | **sprint 4** | 2022-07-15 A → 2022-08-19 A (+35d) | 2022-12-07 → 2022-10-12 (-56d) | 104d → 34.75d |  | 82d → 43d | none → 31 |  |
| 67 | **Módulo de Administración** | 2022-08-19 A | 2022-12-07 → 2022-10-12 (-56d) | 79d → 34.75d |  | none → 43d |  |  |
| 68 | **Base** |  | 2022-09-12 → 2022-09-13 (+1d) | 17d → 16.25d |  | 144d → 61.5d |  |  |
| 71 | Bloqueo de Sesión |  | 2022-09-05 → 2022-09-06 (+1d) |  |  | 149d → 66.44d |  |  |
| 72 | Perfil |  | 2022-09-12 → 2022-09-13 (+1d) |  |  | 144d → 61.5d |  |  |

| ID | Task | Start | Finish | Duration | Complete | Total float | Predecessors |
| --- | --- | --- | --- | --- | --- | --- | --- |
| 73 | **Administración de Usuarios** |  | 2022-09-27 → 2022-09-28 (+1d) | 10d → 8.5d |  | 133d → 52.38d |  |
| 74 | Agregar |  | 2022-09-14 → 2022-09-15 (+1d) |  |  | 142d → 59.88d |  |
| 75 | Pantalla Principal |  | 2022-09-15 → 2022-09-19 (+4d) |  |  | 141d → 58.94d |  |
| 76 | Editar |  | 2022-09-16 → 2022-09-20 (+4d) |  |  | 140d → 58d |  |
| 77 | Eliminar |  | 2022-09-19 → 2022-09-20 (+1d) |  |  | 139d → 58d |  |
| 78 | Configuración de Dashboard |  | 2022-09-20 → 2022-09-21 (+1d) |  |  | 138d → 57.06d |  |
| 79 | Exportación de dashboard PDF |  | 2022-09-21 → 2022-09-22 (+1d) |  |  | 137d → 56.12d |  |
| 80 | Exportación de dashboard Excel |  | 2022-09-22 → 2022-09-23 (+1d) |  |  | 136d → 55.19d |  |
| 82 | Busqueda Dash board |  | 2022-09-26 → 2022-09-27 (+1d) |  |  | 134d → 53.31d |  |
| 83 | Ventanas emergentes de validación |  | 2022-09-27 → 2022-09-28 (+1d) |  |  | 133d → 52.38d |  |
| 84 | **Administración de Roles y Permisos** | 2022-09-28 A | 2022-11-02 → 2022-10-12 (-21d) | 26d → 9.44d |  | none → 43d |  |
| 85 | Pantalla Principal | 2022-07-15 A → 2022-09-28 A (+75d) | 2022-09-28 → 2022-09-29 (+1d) |  |  | 132d → 51.44d |  |
| 86 | Agregar | 2022-07-15 A → 2022-09-29 A (+76d) | 2022-09-28 → 2022-09-30 (+2d) |  |  | 132d → 50.5d |  |
| 87 | Editar | 2022-07-15 A → 2022-09-30 A (+77d) | 2022-09-28 → 2022-10-03 (+5d) |  |  | 132d → 49.56d |  |
| 88 | Eliminar | 2022-07-15 A → 2022-10-03 A (+80d) | 2022-09-28 → 2022-10-04 (+6d) |  |  | 132d → 48.62d |  |
| 89 | Configuración de Dashboard | 2022-07-15 A → 2022-10-04 A (+81d) | 2022-09-28 → 2022-10-05 (+7d) |  |  | 132d → 47.69d |  |
| 90 | Exportación de dashboard PDF | 2022-07-15 A → 2022-10-05 A (+82d) | 2022-09-28 → 2022-10-06 (+8d) |  |  | 132d → 46.75d |  |
| 91 | Exportación de dashboard Excel | 2022-07-15 A → 2022-10-06 A (+83d) | 2022-09-28 → 2022-10-07 (+9d) |  |  | 132d → 45.81d |  |
| 92 | Paginación Dashboard | 2022-07-15 A → 2022-10-07 A (+84d) | 2022-09-28 → 2022-10-10 (+12d) |  |  | 132d → 44.88d |  |
| 93 | Busqueda Dash board | 2022-07-15 A → 2022-10-10 A (+87d) | 2022-09-28 → 2022-10-11 (+13d) |  |  | 132d → 43.94d |  |
| 94 | Ventanas emergentes de validación | 2022-07-15 A → 2022-10-11 A (+88d) | 2022-09-28 → 2022-10-12 (+14d) |  |  | 132d → 43d |  |
| 95 | **sprint 5** | 2022-08-18 → 2022-10-11 A (+54d) | 2022-12-19 → 2022-11-16 (-33d) | 88d → 24.44d | 19% → 41% | none → 19.56d | none → 31 |
| 96 | **Módulo CPH** | 2022-07-15 A → 2022-10-11 A (+88d) | 2022-11-15 → 2022-11-16 (+1d) | 88d → 24.44d | 19% → 41% | none → 19.56d |  |
| 97 | **Coeficientes** | 2022-07-15 → 2022-10-11 (+88d) | 2022-11-15 → 2022-10-21 (-25d) | 88d → 8.44d |  | none → 0d |  |
| 98 | Pantalla principal | 2022-07-15 → 2022-10-11 (+88d) | 2022-11-15 → 2022-10-12 (-34d) | 88d → 1d |  |  |  |
| 99 | Agregar | 2022-07-15 → 2022-10-13 (+90d) | 2022-11-15 → 2022-10-13 (-33d) | 88d → 1d |  |  |  |
| 100 | Eliminar | 2022-07-15 → 2022-10-14 (+91d) | 2022-11-15 → 2022-10-14 (-32d) | 88d → 1d |  |  |  |
| 101 | Editar | 2022-07-15 → 2022-10-15 (+92d) | 2022-11-15 → 2022-10-15 (-31d) | 88d → 1d |  |  |  |
| 102 | Configuración de Dashboard | 2022-07-15 → 2022-10-16 (+93d) | 2022-11-15 → 2022-10-16 (-30d) | 88d → 1d |  |  |  |
| 103 | Exportación de dashboard PDF | 2022-07-15 → 2022-10-17 (+94d) | 2022-11-15 → 2022-10-17 (-29d) | 88d → 1d |  |  |  |
| 104 | Exportación de dashboard Excel | 2022-07-15 → 2022-10-18 (+95d) | 2022-11-15 → 2022-10-18 (-28d) | 88d → 1d |  |  |  |
| 105 | Paginación Dashboard | 2022-07-15 → 2022-10-19 (+96d) | 2022-11-15 → 2022-10-19 (-27d) | 88d → 1d |  |  |  |
| 106 | Busqueda Dash board | 2022-07-15 → 2022-10-20 (+97d) | 2022-11-15 → 2022-10-20 (-26d) | 88d → 1d |  |  |  |
| 107 | Ventanas emergentes de validación | 2022-07-15 → 2022-10-21 (+98d) | 2022-11-15 → 2022-10-21 (-25d) | 88d → 1d |  |  |  |
| 108 | **Bienvenida** | 2022-07-15 → 2022-10-11 (+88d) | 2022-11-15 → 2022-10-11 (-35d) | 88d → 0.94d |  | none → 0d |  |
| 109 | Configuracion de bienvenida | 2022-07-15 → 2022-10-11 (+88d) | 2022-11-15 → 2022-10-11 (-35d) | 88d → 1d |  |  |  |
| 110 | **Base** | 2022-07-15 A → 2022-10-11 A (+88d) | 2022-11-15 → 2022-10-17 (-29d) | 88d → 4.69d | 0% → 20% | 98d → 39.31d |  |
| 111 | Perfil | 2022-07-15 A → 2022-10-11 A (+88d) | 2022-11-15 → 2022-10-12 (-34d) | 88d → 1d |  | 98d → 43d |  |
| 112 | Pop up Notificaciones | 2022-07-15 A → 2022-10-12 A (+89d) | 2022-11-15 → 2022-10-13 (-33d) | 88d → 1d |  | 98d → 42.06d |  |
| 113 | Contador de Notificaciones (Icono campanita) | 2022-07-15 A → 2022-10-13 A (+90d) | 2022-11-15 → 2022-10-14 (-32d) | 88d → 1d |  | 98d → 41.12d |  |
| 114 | Bandeja entrada de Notificaciones | 2022-07-15 A → 2022-10-14 A (+91d) | 2022-11-15 → 2022-10-17 (-29d) | 88d → 1d |  | 98d → 40.19d |  |
| 116 | **Administración de Municipios** | 2022-07-15 A → 2022-10-12 A (+89d) | 2022-11-15 → 2022-10-24 (-22d) | 88d → 7.56d | 30% → 40% | 98d → 35.5d |  |
| 117 | Pantalla Principal | 2022-07-15 A → 2022-10-12 A (+89d) | 2022-11-15 → 2022-10-12 A (-34d) | 88d → 1d | 0% → 100% | 98d → none |  |
| 118 | Agregar | 2022-07-15 A → 2022-10-13 A (+90d) | 2022-11-15 A → 2022-10-13 A (-33d) | 88d → 1d |  |  |  |
| 119 | Editar | 2022-07-15 A → 2022-10-14 A (+91d) | 2022-11-15 A → 2022-10-14 A (-32d) | 88d → 1d |  |  |  |
| 120 | Eliminar | 2022-07-15 A → 2022-10-15 A (+92d) | 2022-11-15 A → 2022-10-17 A (-29d) | 88d → 1d |  |  |  |
| 121 | Configuración de Dashboard | 2022-07-15 A → 2022-10-16 A (+93d) | 2022-11-15 → 2022-10-18 (-28d) | 88d → 1d |  | 98d → 39.25d |  |
| 122 | Exportación de dashboard PDF | 2022-07-15 A → 2022-10-17 A (+94d) | 2022-11-15 → 2022-10-18 (-28d) | 88d → 1d |  | 98d → 39.25d |  |
| 123 | Exportación de dashboard Excel | 2022-07-15 A → 2022-10-18 A (+95d) | 2022-11-15 → 2022-10-19 (-27d) | 88d → 1d |  | 98d → 38.31d |  |
| 124 | Paginación Dashboard | 2022-07-15 A → 2022-10-19 A (+96d) | 2022-11-15 → 2022-10-20 (-26d) | 88d → 1d |  | 98d → 37.38d |  |
| 125 | Busqueda Dash board | 2022-07-15 A → 2022-10-20 A (+97d) | 2022-11-15 → 2022-10-21 (-25d) | 88d → 1d |  | 98d → 36.44d |  |
| 126 | Ventanas emergentes de validación | 2022-07-15 A → 2022-10-21 A (+98d) | 2022-11-15 → 2022-10-24 (-22d) | 88d → 1d |  | 98d → 35.5d |  |
| 127 | **Administración de Fondos** | 2022-07-15 A → 2022-10-13 A (+90d) | 2022-11-15 → 2022-10-26 A (-20d) | 88d → 9.38d | 0% → 100% | 98d → none |  |
| 128 | Pantalla Principal | 2022-07-15 A → 2022-10-13 A (+90d) | 2022-11-15 → 2022-10-13 A (-33d) | 88d → 1d | 0% → 100% | 98d → none |  |
| 129 | Agregar | 2022-07-15 A → 2022-10-14 A (+91d) | 2022-11-15 → 2022-10-14 A (-32d) | 88d → 1d | 0% → 100% | 98d → none |  |
| 130 | Editar | 2022-07-15 A → 2022-10-17 A (+94d) | 2022-11-15 → 2022-10-17 A (-29d) | 88d → 1d | 0% → 100% | 98d → none |  |
| 131 | Eliminar | 2022-07-15 A → 2022-10-18 A (+95d) | 2022-11-15 → 2022-10-18 A (-28d) | 88d → 1d | 0% → 100% | 98d → none |  |
| 132 | Configuración de Dashboard | 2022-07-15 A → 2022-10-19 A (+96d) | 2022-11-15 → 2022-10-19 A (-27d) | 88d → 1d | 0% → 100% | 98d → none |  |
| 133 | Exportación de dashboard PDF | 2022-07-15 A → 2022-10-20 A (+97d) | 2022-11-15 → 2022-10-20 A (-26d) | 88d → 1d | 0% → 100% | 98d → none |  |
| 134 | Exportación de dashboard Excel | 2022-07-15 A → 2022-10-21 A (+98d) | 2022-11-15 → 2022-10-21 A (-25d) | 88d → 1d | 0% → 100% | 98d → none |  |
| 135 | Paginación Dashboard | 2022-07-15 A → 2022-10-24 A (+101d) | 2022-11-15 → 2022-10-24 A (-22d) | 88d → 1d | 0% → 100% | 98d → none |  |
| 136 | Busqueda Dash board | 2022-07-15 A → 2022-10-25 A (+102d) | 2022-11-15 → 2022-10-25 A (-21d) | 88d → 1d | 0% → 100% | 98d → none |  |
| 137 | Ventanas emergentes de validación | 2022-07-15 A → 2022-10-26 A (+103d) | 2022-11-15 → 2022-10-26 A (-20d) | 88d → 1d | 0% → 100% | 98d → none |  |
| 138 | **Administración de Presupuesto** | 2022-07-15 A → 2022-10-14 A (+91d) | 2022-11-15 → 2022-10-28 (-18d) | 88d → 9.44d |  | 98d → 31.75d |  |
| 139 | Pantalla Principal | 2022-07-15 A → 2022-10-14 A (+91d) | 2022-11-15 → 2022-10-17 (-29d) | 88d → 1d |  | 98d → 40.19d |  |
| 140 | Agregar | 2022-07-15 A → 2022-10-17 A (+94d) | 2022-11-15 → 2022-10-18 (-28d) | 88d → 1d |  | 98d → 39.25d |  |
| 141 | Editar | 2022-07-15 A → 2022-10-18 A (+95d) | 2022-11-15 → 2022-10-19 (-27d) | 88d → 1d |  | 98d → 38.31d |  |
| 142 | Eliminar | 2022-07-15 A → 2022-10-19 A (+96d) | 2022-11-15 → 2022-10-20 (-26d) | 88d → 1d |  | 98d → 37.38d |  |
| 143 | Configuración de Dashboard | 2022-07-15 A → 2022-10-20 A (+97d) | 2022-11-15 → 2022-10-21 (-25d) | 88d → 1d |  | 98d → 36.44d |  |
| 144 | Exportación de dashboard PDF | 2022-07-15 A → 2022-10-21 A (+98d) | 2022-11-15 → 2022-10-24 (-22d) | 88d → 1d |  | 98d → 35.5d |  |

| ID | Task | Start | Finish | Duration | Complete | Total float |
| --- | --- | --- | --- | --- | --- | --- |
| 145 | Exportación de dashboard Excel | 2022-07-15 A → 2022-10-24 A (+101d) | 2022-11-15 → 2022-10-25 (-21d) | 88d → 1d |  | 98d → 34.56d |
| 146 | Paginación Dashboard | 2022-07-15 A → 2022-10-25 A (+102d) | 2022-11-15 → 2022-10-26 (-20d) | 88d → 1d |  | 98d → 33.62d |
| 147 | Busqueda Dash board | 2022-07-15 A → 2022-10-26 A (+103d) | 2022-11-15 → 2022-10-27 (-19d) | 88d → 1d |  | 98d → 32.69d |
| 148 | Ventanas emergentes de validación | 2022-07-15 A → 2022-10-27 A (+104d) | 2022-11-15 → 2022-10-28 (-18d) | 88d → 1d |  | 98d → 31.75d |
| 149 | **Administración de UMA** | 2022-07-15 A → 2022-10-17 A (+94d) | 2022-11-15 → 2022-10-28 A (-18d) | 88d → 9.38d | 30% → 100% | 98d → none |
| 150 | Pantalla Principal | 2022-07-15 A → 2022-10-17 A (+94d) | 2022-11-15 → 2022-10-17 A (-29d) | 88d → 1d | 0% → 100% | 98d → none |
| 151 | Agregar | 2022-07-15 A → 2022-10-18 A (+95d) | 2022-11-15 A → 2022-10-18 A (-28d) | 88d → 1d |  |  |
| 152 | Editar | 2022-07-15 A → 2022-10-19 A (+96d) | 2022-11-15 A → 2022-10-19 A (-27d) | 88d → 1d |  |  |
| 153 | Eliminar | 2022-07-15 A → 2022-10-20 A (+97d) | 2022-11-15 A → 2022-10-20 A (-26d) | 88d → 1d |  |  |
| 154 | Configuración de Dashboard | 2022-07-15 A → 2022-10-21 A (+98d) | 2022-11-15 → 2022-10-21 A (-25d) | 88d → 1d | 0% → 100% | 98d → none |
| 155 | Exportación de dashboard PDF | 2022-07-15 A → 2022-10-24 A (+101d) | 2022-11-15 → 2022-10-24 A (-22d) | 88d → 1d | 0% → 100% | 98d → none |
| 156 | Exportación de dashboard Excel | 2022-07-15 A → 2022-10-25 A (+102d) | 2022-11-15 → 2022-10-25 A (-21d) | 88d → 1d | 0% → 100% | 98d → none |
| 157 | Paginación Dashboard | 2022-07-15 A → 2022-10-26 A (+103d) | 2022-11-15 → 2022-10-26 A (-20d) | 88d → 1d | 0% → 100% | 98d → none |
| 158 | Busqueda Dashboard | 2022-07-15 A → 2022-10-27 A (+104d) | 2022-11-15 → 2022-10-27 A (-19d) | 88d → 1d | 0% → 100% | 98d → none |
| 159 | Ventanas emergentes de validación | 2022-07-15 A → 2022-10-28 A (+105d) | 2022-11-15 → 2022-10-28 A (-18d) | 88d → 1d | 0% → 100% | 98d → none |
| 160 | **Administración de Inflación** | 2022-07-15 A → 2022-10-17 A (+94d) | 2022-11-15 → 2022-11-01 A (-14d) | 88d → 11.25d | 42% → 100% | 98d → none |
| 161 | Pantalla Principal | 2022-07-15 A → 2022-10-17 A (+94d) | 2022-11-15 → 2022-10-17 A (-29d) | 88d → 1d | 0% → 100% | 98d → none |
| 162 | Plantilla Carga Masiva Inflación | 2022-07-15 A → 2022-10-18 A (+95d) | 2022-11-15 A → 2022-10-18 A (-28d) | 88d → 1d |  |  |
| 163 | Api Plantilla caga masiva Municipio - Inflación | 2022-07-15 A → 2022-10-19 A (+96d) | 2022-11-15 A → 2022-10-19 A (-27d) | 88d → 1d |  |  |
| 164 | Agregar | 2022-07-15 A → 2022-10-20 A (+97d) | 2022-11-15 A → 2022-10-20 A (-26d) | 88d → 1d |  |  |
| 165 | Editar | 2022-07-15 A → 2022-10-21 A (+98d) | 2022-11-15 A → 2022-10-21 A (-25d) | 88d → 1d |  |  |
| 166 | Eliminar | 2022-07-15 A → 2022-10-24 A (+101d) | 2022-11-15 A → 2022-10-24 A (-22d) | 88d → 1d |  |  |
| 167 | Configuración de Dashboard | 2022-07-15 A → 2022-10-25 A (+102d) | 2022-11-15 → 2022-10-25 A (-21d) | 88d → 1d | 0% → 100% | 98d → none |
| 168 | Exportación de dashboard PDF | 2022-07-15 A → 2022-10-26 A (+103d) | 2022-11-15 → 2022-10-26 A (-20d) | 88d → 1d | 0% → 100% | 98d → none |
| 169 | Exportación de dashboard Excel | 2022-07-15 A → 2022-10-27 A (+104d) | 2022-11-15 → 2022-10-27 A (-19d) | 88d → 1d | 0% → 100% | 98d → none |
| 170 | Paginación Dashboard | 2022-07-15 A → 2022-10-28 A (+105d) | 2022-11-15 → 2022-10-28 A (-18d) | 88d → 1d | 0% → 100% | 98d → none |
| 171 | Busqueda Dash board | 2022-07-15 A → 2022-10-31 A (+108d) | 2022-11-15 → 2022-10-31 A (-15d) | 88d → 1d | 0% → 100% | 98d → none |
| 172 | Ventanas emergentes de validación | 2022-07-15 A → 2022-11-01 A (+109d) | 2022-11-15 → 2022-11-01 A (-14d) | 88d → 1d | 0% → 100% | 98d → none |
| 173 | **Administración de Crecimiento** | 2022-07-15 A → 2022-10-18 A (+95d) | 2022-11-15 → 2022-11-02 A (-13d) | 88d → 11.25d | 42% → 100% | 98d → none |
| 174 | Pantalla Principal | 2022-07-15 A → 2022-10-18 A (+95d) | 2022-11-15 → 2022-10-18 A (-28d) | 88d → 1d | 0% → 100% | 98d → none |
| 175 | Plantilla Carga Masiva Crecimiento | 2022-07-15 A → 2022-10-19 A (+96d) | 2022-11-15 A → 2022-10-19 A (-27d) | 88d → 1d |  |  |
| 176 | Api Plantilla caga masiva Municipio - Crecimiento | 2022-07-15 A → 2022-10-20 A (+97d) | 2022-11-15 A → 2022-10-20 A (-26d) | 88d → 1d |  |  |
| 177 | Agregar | 2022-07-15 A → 2022-10-21 A (+98d) | 2022-11-15 A → 2022-10-21 A (-25d) | 88d → 1d |  |  |
| 178 | Editar | 2022-07-15 A → 2022-10-24 A (+101d) | 2022-11-15 A → 2022-10-24 A (-22d) | 88d → 1d |  |  |
| 179 | Eliminar | 2022-07-15 A → 2022-10-25 A (+102d) | 2022-11-15 A → 2022-10-25 A (-21d) | 88d → 1d |  |  |
| 180 | Configuración de Dashboard | 2022-07-15 A → 2022-10-26 A (+103d) | 2022-11-15 → 2022-10-26 A (-20d) | 88d → 1d | 0% → 100% | 98d → none |
| 181 | Exportación de dashboard PDF | 2022-07-15 A → 2022-10-27 A (+104d) | 2022-11-15 → 2022-10-27 A (-19d) | 88d → 1d | 0% → 100% | 98d → none |
| 182 | Exportación de dashboard Excel | 2022-07-15 A → 2022-10-28 A (+105d) | 2022-11-15 → 2022-10-28 A (-18d) | 88d → 1d | 0% → 100% | 98d → none |
| 183 | Paginación Dashboard | 2022-07-15 A → 2022-10-31 A (+108d) | 2022-11-15 → 2022-10-31 A (-15d) | 88d → 1d | 0% → 100% | 98d → none |
| 184 | Busqueda Dash board | 2022-07-15 A → 2022-11-01 A (+109d) | 2022-11-15 → 2022-11-01 A (-14d) | 88d → 1d | 0% → 100% | 98d → none |
| 185 | Ventanas emergentes de validación | 2022-07-15 A → 2022-11-02 A (+110d) | 2022-11-15 → 2022-11-02 A (-13d) | 88d → 1d | 0% → 100% | 98d → none |
| 186 | **Administración de Facturación** | 2022-07-15 A → 2022-10-19 A (+96d) | 2022-11-15 → 2022-10-31 A (-15d) | 88d → 8.44d | 30% → 100% | 98d → none |
| 187 | Pantalla Principal | 2022-07-15 A → 2022-10-19 A (+96d) | 2022-11-15 → 2022-10-19 A (-27d) | 88d → 1d | 0% → 100% | 98d → none |
| 188 | Agregar | 2022-07-15 A → 2022-10-20 A (+97d) | 2022-11-15 A → 2022-10-20 A (-26d) | 88d → 1d |  |  |
| 189 | Editar | 2022-07-15 A → 2022-10-21 A (+98d) | 2022-11-15 A → 2022-10-21 A (-25d) | 88d → 1d |  |  |
| 190 | Eliminar | 2022-07-15 A → 2022-10-24 A (+101d) | 2022-11-15 A → 2022-10-24 A (-22d) | 88d → 1d |  |  |
| 191 | Configuración de Dashboard | 2022-07-15 A → 2022-10-25 A (+102d) | 2022-11-15 → 2022-10-25 A (-21d) | 88d → 1d | 0% → 100% | 98d → none |
| 192 | Exportación de dashboard PDF | 2022-07-15 A → 2022-10-26 A (+103d) | 2022-11-15 → 2022-10-26 A (-20d) | 88d → 1d | 0% → 100% | 98d → none |
| 193 | Exportación de dashboard Excel | 2022-07-15 A → 2022-10-27 A (+104d) | 2022-11-15 → 2022-10-27 A (-19d) | 88d → 1d | 0% → 100% | 98d → none |
| 194 | Paginación Dashboard | 2022-07-15 A → 2022-10-28 A (+105d) | 2022-11-15 → 2022-10-28 A (-18d) | 88d → 1d | 0% → 100% | 98d → none |
| 195 | Busqueda Dash board | 2022-07-15 A → 2022-10-29 A (+106d) | 2022-11-15 → 2022-10-31 A (-15d) | 88d → 1d | 0% → 100% | 98d → none |
| 196 | Ventanas emergentes de validación | 2022-07-15 A → 2022-10-30 A (+107d) | 2022-11-15 → 2022-10-31 A (-15d) | 88d → 1d | 0% → 100% | 98d → none |
| 197 | **Administración de Recaudación** | 2022-07-15 A → 2022-10-20 A (+97d) | 2022-11-15 → 2022-11-04 A (-11d) | 88d → 11.25d | 42% → 100% | 98d → none |
| 198 | Pantalla Principal | 2022-07-15 A → 2022-10-20 A (+97d) | 2022-11-15 → 2022-10-20 A (-26d) | 88d → 1d | 0% → 100% | 98d → none |
| 199 | Plantilla Carga Masiva Recaudación | 2022-07-15 A → 2022-10-21 A (+98d) | 2022-11-15 A → 2022-10-21 A (-25d) | 88d → 1d |  |  |
| 200 | Api Plantilla caga masiva Municipio - Recaudación | 2022-07-15 A → 2022-10-24 A (+101d) | 2022-11-15 A → 2022-10-24 A (-22d) | 88d → 1d |  |  |
| 201 | Agregar | 2022-07-15 A → 2022-10-25 A (+102d) | 2022-11-15 A → 2022-10-25 A (-21d) | 88d → 1d |  |  |
| 202 | Editar | 2022-07-15 A → 2022-10-26 A (+103d) | 2022-11-15 A → 2022-10-26 A (-20d) | 88d → 1d |  |  |
| 203 | Eliminar | 2022-07-15 A → 2022-10-27 A (+104d) | 2022-11-15 A → 2022-10-27 A (-19d) | 88d → 1d |  |  |
| 204 | Configuración de Dashboard | 2022-07-15 A → 2022-10-28 A (+105d) | 2022-11-15 → 2022-10-28 A (-18d) | 88d → 1d | 0% → 100% | 98d → none |
| 205 | Exportación de dashboard PDF | 2022-07-15 A → 2022-10-31 A (+108d) | 2022-11-15 → 2022-10-31 A (-15d) | 88d → 1d | 0% → 100% | 98d → none |
| 206 | Exportación de dashboard Excel | 2022-07-15 A → 2022-11-01 A (+109d) | 2022-11-15 → 2022-11-01 A (-14d) | 88d → 1d | 0% → 100% | 98d → none |
| 207 | Paginación Dashboard | 2022-07-15 A → 2022-11-02 A (+110d) | 2022-11-15 → 2022-11-02 A (-13d) | 88d → 1d | 0% → 100% | 98d → none |
| 208 | Busqueda Dash board | 2022-07-15 A → 2022-11-03 A (+111d) | 2022-11-15 → 2022-11-03 A (-12d) | 88d → 1d | 0% → 100% | 98d → none |
| 209 | Ventanas emergentes de validación | 2022-07-15 A → 2022-11-04 A (+112d) | 2022-11-15 → 2022-11-04 A (-11d) | 88d → 1d | 0% → 100% | 98d → none |
| 210 | **Administración de Población** | 2022-07-15 A → 2022-10-21 A (+98d) | 2022-11-15 → 2022-11-03 A (-12d) | 88d → 9.38d | 30% → 100% | 98d → none |
| 211 | Pantalla Principal | 2022-07-15 A → 2022-10-21 A (+98d) | 2022-11-15 → 2022-10-21 A (-25d) | 88d → 1d | 0% → 100% | 98d → none |
| 212 | Agregar | 2022-07-15 A → 2022-10-24 A (+101d) | 2022-11-15 A → 2022-10-24 A (-22d) | 88d → 1d |  |  |
| 213 | Editar | 2022-07-15 A → 2022-10-25 A (+102d) | 2022-11-15 A → 2022-10-25 A (-21d) | 88d → 1d |  |  |
| 214 | Eliminar | 2022-07-15 A → 2022-10-26 A (+103d) | 2022-11-15 A → 2022-10-26 A (-20d) | 88d → 1d |  |  |

| ID | Task | Start | Finish | Duration | Complete | Total float |
| --- | --- | --- | --- | --- | --- | --- |
| 215 | Configuración de Dashboard | 2022-07-15 A → 2022-10-27 A (+104d) | 2022-11-15 → 2022-10-27 A (-19d) | 88d → 1d | 0% → 100% | 98d → none |
| 216 | Exportación de dashboard PDF | 2022-07-15 A → 2022-10-28 A (+105d) | 2022-11-15 → 2022-10-28 A (-18d) | 88d → 1d | 0% → 100% | 98d → none |
| 217 | Exportación de dashboard Excel | 2022-07-15 A → 2022-10-31 A (+108d) | 2022-11-15 → 2022-10-31 A (-15d) | 88d → 1d | 0% → 100% | 98d → none |
| 218 | Paginación Dashboard | 2022-07-15 A → 2022-11-01 A (+109d) | 2022-11-15 → 2022-11-01 A (-14d) | 88d → 1d | 0% → 100% | 98d → none |
| 219 | Busqueda Dash board | 2022-07-15 A → 2022-11-02 A (+110d) | 2022-11-15 → 2022-11-02 A (-13d) | 88d → 1d | 0% → 100% | 98d → none |
| 220 | Ventanas emergentes de validación | 2022-07-15 A → 2022-11-03 A (+111d) | 2022-11-15 → 2022-11-03 A (-12d) | 88d → 1d | 0% → 100% | 98d → none |
| 221 | **Administración de Territorio** | 2022-07-15 A → 2022-10-24 A (+101d) | 2022-11-15 → 2022-11-08 A (-7d) | 88d → 11.25d | 42% → 100% | 98d → none |
| 222 | Pantalla Principal | 2022-07-15 A → 2022-10-24 A (+101d) | 2022-11-15 → 2022-10-24 A (-22d) | 88d → 1d | 0% → 100% | 98d → none |
| 223 | Plantilla Carga Masiva Territorio | 2022-07-15 A → 2022-10-25 A (+102d) | 2022-11-15 A → 2022-10-25 A (-21d) | 88d → 1d |  |  |
| 224 | Api Plantilla caga masiva Municipio - Territorio | 2022-07-15 A → 2022-10-26 A (+103d) | 2022-11-15 A → 2022-10-26 A (-20d) | 88d → 1d |  |  |
| 225 | Agregar | 2022-07-15 A → 2022-10-27 A (+104d) | 2022-11-15 A → 2022-10-27 A (-19d) | 88d → 1d |  |  |
| 226 | Editar | 2022-07-15 A → 2022-10-28 A (+105d) | 2022-11-15 A → 2022-10-28 A (-18d) | 88d → 1d |  |  |
| 227 | Eliminar | 2022-07-15 A → 2022-10-31 A (+108d) | 2022-11-15 A → 2022-10-31 A (-15d) | 88d → 1d |  |  |
| 228 | Configuración de Dashboard | 2022-07-15 A → 2022-11-01 A (+109d) | 2022-11-15 → 2022-11-01 A (-14d) | 88d → 1d | 0% → 100% | 98d → none |
| 229 | Exportación de dashboard PDF | 2022-07-15 A → 2022-11-02 A (+110d) | 2022-11-15 → 2022-11-02 A (-13d) | 88d → 1d | 0% → 100% | 98d → none |
| 230 | Exportación de dashboard Excel | 2022-07-15 A → 2022-11-03 A (+111d) | 2022-11-15 → 2022-11-03 A (-12d) | 88d → 1d | 0% → 100% | 98d → none |
| 231 | Paginación Dashboard | 2022-07-15 A → 2022-11-04 A (+112d) | 2022-11-15 → 2022-11-04 A (-11d) | 88d → 1d | 0% → 100% | 98d → none |
| 232 | Busqueda Dash board | 2022-07-15 A → 2022-11-07 A (+115d) | 2022-11-15 → 2022-11-07 A (-8d) | 88d → 1d | 0% → 100% | 98d → none |
| 233 | Ventanas emergentes de validación | 2022-07-15 A → 2022-11-08 A (+116d) | 2022-11-15 → 2022-11-08 A (-7d) | 88d → 1d | 0% → 100% | 98d → none |
| 234 | **Administración de pobreza** | 2022-07-15 A → 2022-10-26 A (+103d) | 2022-11-15 → 2022-11-10 A (-5d) | 88d → 11.25d | 42% → 100% | 98d → none |
| 235 | Pantalla Principal | 2022-07-15 A → 2022-10-26 A (+103d) | 2022-11-15 → 2022-10-26 A (-20d) | 88d → 1d | 0% → 100% | 98d → none |
| 236 | Plantilla Carga Masiva Pobreza | 2022-07-15 A → 2022-10-27 A (+104d) | 2022-11-15 A → 2022-10-27 A (-19d) | 88d → 1d |  |  |
| 237 | Api Plantilla caga masiva Municipio - Pobreza | 2022-07-15 A → 2022-10-28 A (+105d) | 2022-11-15 A → 2022-10-28 A (-18d) | 88d → 1d |  |  |
| 238 | Agregar | 2022-07-15 A → 2022-10-31 A (+108d) | 2022-11-15 A → 2022-10-31 A (-15d) | 88d → 1d |  |  |
| 239 | Editar | 2022-07-15 A → 2022-11-01 A (+109d) | 2022-11-15 A → 2022-11-01 A (-14d) | 88d → 1d |  |  |
| 240 | Eliminar | 2022-07-15 A → 2022-11-02 A (+110d) | 2022-11-15 A → 2022-11-02 A (-13d) | 88d → 1d |  |  |
| 241 | Configuración de Dashboard | 2022-07-15 A → 2022-11-03 A (+111d) | 2022-11-15 → 2022-11-03 A (-12d) | 88d → 1d | 0% → 100% | 98d → none |
| 242 | Exportación de dashboard PDF | 2022-07-15 A → 2022-11-04 A (+112d) | 2022-11-15 → 2022-11-04 A (-11d) | 88d → 1d | 0% → 100% | 98d → none |
| 243 | Exportación de dashboard Excel | 2022-07-15 A → 2022-11-07 A (+115d) | 2022-11-15 → 2022-11-07 A (-8d) | 88d → 1d | 0% → 100% | 98d → none |
| 244 | Paginación Dashboard | 2022-07-15 A → 2022-11-08 A (+116d) | 2022-11-15 → 2022-11-08 A (-7d) | 88d → 1d | 0% → 100% | 98d → none |
| 245 | Busqueda Dash board | 2022-07-15 A → 2022-11-09 A (+117d) | 2022-11-15 → 2022-11-09 A (-6d) | 88d → 1d | 0% → 100% | 98d → none |
| 246 | Ventanas emergentes de validación | 2022-07-15 A → 2022-11-10 A (+118d) | 2022-11-15 → 2022-11-10 A (-5d) | 88d → 1d | 0% → 100% | 98d → none |
| 247 | **Administración de Pobreza Extrema** | 2022-07-15 A → 2022-10-26 A (+103d) | 2022-11-15 A → 2022-10-27 A (-19d) | 88d → 1.88d |  |  |
| 248 | Plantilla Carga Masiva Pobreza Extrema | 2022-07-15 A → 2022-10-26 A (+103d) | 2022-11-15 A → 2022-10-26 A (-20d) | 88d → 1d |  |  |
| 249 | Api Plantilla caga masiva Municipio - Pobreza Extrema | 2022-07-15 A → 2022-10-27 A (+104d) | 2022-11-15 A → 2022-10-27 A (-19d) | 88d → 1d |  |  |
| 250 | **Administración de Pobreza Moderada** | 2022-07-15 A → 2022-10-27 A (+104d) | 2022-11-15 A → 2022-10-28 A (-18d) | 88d → 1.88d |  |  |
| 251 | Plantilla Carga Masiva Pobreza Moderada | 2022-07-15 A → 2022-10-27 A (+104d) | 2022-11-15 A → 2022-10-27 A (-19d) | 88d → 1d |  |  |
| 252 | Api Plantilla caga masiva Municipio - Pobreza Moderada | 2022-07-15 A → 2022-10-28 A (+105d) | 2022-11-15 A → 2022-10-28 A (-18d) | 88d → 1d |  |  |
| 253 | **Administración de Proyección** | 2022-07-15 A → 2022-10-28 A (+105d) | 2022-11-15 → 2022-11-03 A (-12d) | 88d → 4.69d | 40% → 100% | 98d → none |
| 255 | Agregar | 2022-07-15 A → 2022-10-28 A (+105d) | 2022-11-15 → 2022-10-28 A (-18d) | 88d → 1d | 0% → 100% | 98d → none |
| 256 | Editar | 2022-07-15 A → 2022-10-31 A (+108d) | 2022-11-15 → 2022-10-31 A (-15d) | 88d → 1d | 0% → 100% | 98d → none |
| 257 | Eliminar | 2022-07-15 A → 2022-11-01 A (+109d) | 2022-11-15 → 2022-11-01 A (-14d) | 88d → 1d | 0% → 100% | 98d → none |
| 258 | Plantilla Carga Masiva Proyección | 2022-07-15 A → 2022-11-02 A (+110d) | 2022-11-15 A → 2022-11-02 A (-13d) | 88d → 1d |  |  |
| 259 | Api Plantilla caga masiva Municipio - Proyección | 2022-07-15 A → 2022-11-03 A (+111d) | 2022-11-15 A → 2022-11-03 A (-12d) | 88d → 1d |  |  |
| 260 | **Dashboard Articulo 14 Fracción I** | 2022-07-15 A → 2022-11-01 A (+109d) | 2022-11-15 → 2022-11-16 (+1d) | 88d → 10.38d |  | 98d → 19.56d |
| 261 | Pantalla Principal | 2022-07-15 A → 2022-11-01 A (+109d) | 2022-11-15 → 2022-11-02 (-13d) | 88d → 1d |  | 98d → 28.94d |
| 262 | Generar plantilla | 2022-07-15 A → 2022-11-02 A (+110d) | 2022-11-15 → 2022-11-03 (-12d) | 88d → 1d |  | 98d → 28d |
| 263 | Carga masiva - plantilla | 2022-07-15 A → 2022-11-03 A (+111d) | 2022-11-15 → 2022-11-04 (-11d) | 88d → 1d |  | 98d → 27.06d |
| 264 | Recálculo de coeficiente | 2022-07-15 A → 2022-11-04 A (+112d) | 2022-11-15 → 2022-11-07 (-8d) | 88d → 1d |  | 98d → 26.12d |
| 265 | Editar información | 2022-07-15 A → 2022-11-07 A (+115d) | 2022-11-15 → 2022-11-08 (-7d) | 88d → 1d |  | 98d → 25.19d |
| 266 | Dashboard predial | 2022-07-15 A → 2022-11-08 A (+116d) | 2022-11-15 → 2022-11-09 (-6d) | 88d → 1d |  | 98d → 24.25d |
| 267 | Dashboard población y territorio | 2022-07-15 A → 2022-11-09 A (+117d) | 2022-11-15 → 2022-11-10 (-5d) | 88d → 1d |  | 98d → 23.31d |
| 268 | Dashboard carencia social | 2022-07-15 A → 2022-11-10 A (+118d) | 2022-11-15 → 2022-11-11 (-4d) | 88d → 1d |  | 98d → 22.38d |
| 269 | Cálculo de coeficiente | 2022-07-15 A → 2022-11-11 A (+119d) | 2022-11-15 → 2022-11-14 (-1d) | 88d → 1d |  | 98d → 21.44d |
| 270 | Proceso Autorización | 2022-07-15 A → 2022-11-14 A (+122d) |  | 88d → 1d |  | 98d → 20.5d |
| 271 | Ventanas emergentes de validación | 2022-07-15 A → 2022-11-15 A (+123d) | 2022-11-15 → 2022-11-16 (+1d) | 88d → 1d |  | 98d → 19.56d |
| 272 | **Dashboard Articulo 14 Fracción II** | 2022-07-15 A → 2022-11-02 A (+110d) | 2022-11-15 → 2022-11-16 (+1d) | 88d → 9.44d |  | 98d → 19.56d |
| 273 | Pantalla Principal | 2022-07-15 A → 2022-11-02 A (+110d) | 2022-11-15 → 2022-11-03 (-12d) | 88d → 1d |  | 98d → 28d |
| 274 | Dashboard población | 2022-07-15 A → 2022-11-03 A (+111d) | 2022-11-15 → 2022-11-04 (-11d) | 88d → 1d |  | 98d → 27.06d |
| 275 | generar plantilla | 2022-07-15 A → 2022-11-04 A (+112d) | 2022-11-15 → 2022-11-07 (-8d) | 88d → 1d |  | 98d → 26.12d |
| 276 | Carga masiva - plantilla | 2022-07-15 A → 2022-11-07 A (+115d) | 2022-11-15 → 2022-11-08 (-7d) | 88d → 1d |  | 98d → 25.19d |
| 277 | Recálculo de coeficiente | 2022-07-15 A → 2022-11-08 A (+116d) | 2022-11-15 → 2022-11-09 (-6d) | 88d → 1d |  | 98d → 24.25d |
| 278 | Editar información individual | 2022-07-15 A → 2022-11-09 A (+117d) | 2022-11-15 → 2022-11-10 (-5d) | 88d → 1d |  | 98d → 23.31d |
| 279 | Dashboard proyección población | 2022-07-15 A → 2022-11-10 A (+118d) | 2022-11-15 → 2022-11-11 (-4d) | 88d → 1d |  | 98d → 22.38d |
| 280 | Carga masiva - plantilla | 2022-07-15 A → 2022-11-11 A (+119d) | 2022-11-15 → 2022-11-14 (-1d) | 88d → 1d |  | 98d → 21.44d |
| 281 | Recálculo de coeficiente | 2022-07-15 A → 2022-11-14 A (+122d) |  | 88d → 1d |  | 98d → 20.5d |
| 282 | Editar información individual | 2022-07-15 A → 2022-11-15 A (+123d) | 2022-11-15 → 2022-11-16 (+1d) | 88d → 1d |  | 98d → 19.56d |
| 283 | Cálculo de coeficiente | 2022-07-15 A → 2022-11-15 A (+123d) | 2022-11-15 → 2022-11-16 (+1d) | 88d → 1d |  | 98d → 19.56d |
| 284 | Proceso Autorización | 2022-07-15 A → 2022-11-15 A (+123d) | 2022-11-15 → 2022-11-16 (+1d) | 88d → 1d |  | 98d → 19.56d |
| 285 | Ventanas emergentes de validación | 2022-07-15 A → 2022-11-15 A (+123d) | 2022-11-15 → 2022-11-16 (+1d) | 88d → 1d |  | 98d → 19.56d |

| ID | Task | Start | Finish | Duration | Total float |
| --- | --- | --- | --- | --- | --- |
| 286 | **Dashboard Articulo 14 Fracción III** | 2022-07-15 A → 2022-11-03 A (+111d) | 2022-11-15 → 2022-11-16 (+1d) | 88d → 8.5d | 98d → 19.56d |
| 287 | Pantalla Principal | 2022-07-15 A → 2022-11-03 A (+111d) | 2022-11-15 → 2022-11-04 (-11d) | 88d → 1d | 98d → 27.06d |
| 288 | Dashboard eficiencia recaudatoria | 2022-07-15 A → 2022-11-04 A (+112d) | 2022-11-15 → 2022-11-07 (-8d) | 88d → 1d | 98d → 26.12d |
| 289 | generar plantilla | 2022-07-15 A → 2022-11-07 A (+115d) | 2022-11-15 → 2022-11-08 (-7d) | 88d → 1d | 98d → 25.19d |
| 290 | Carga masiva - plantilla | 2022-07-15 A → 2022-11-08 A (+116d) | 2022-11-15 → 2022-11-09 (-6d) | 88d → 1d | 98d → 24.25d |
| 291 | Recálculo de coeficiente | 2022-07-15 A → 2022-11-09 A (+117d) | 2022-11-15 → 2022-11-10 (-5d) | 88d → 1d | 98d → 23.31d |
| 292 | Editar información individual | 2022-07-15 A → 2022-11-10 A (+118d) | 2022-11-15 → 2022-11-11 (-4d) | 88d → 1d | 98d → 22.38d |
| 293 | Dashboard crecimiento recaudación | 2022-07-15 A → 2022-11-11 A (+119d) | 2022-11-15 → 2022-11-14 (-1d) | 88d → 1d | 98d → 21.44d |
| 294 | Carga masiva - plantilla | 2022-07-15 A → 2022-11-14 A (+122d) |  | 88d → 1d | 98d → 20.5d |
| 295 | Recálculo de coeficiente | 2022-07-15 A → 2022-11-15 A (+123d) | 2022-11-15 → 2022-11-16 (+1d) | 88d → 1d | 98d → 19.56d |
| 296 | Editar información individual | 2022-07-15 A → 2022-11-15 A (+123d) | 2022-11-15 → 2022-11-16 (+1d) | 88d → 1d | 98d → 19.56d |
| 297 | Cálculo de coeficiente | 2022-07-15 A → 2022-11-15 A (+123d) | 2022-11-15 → 2022-11-16 (+1d) | 88d → 1d | 98d → 19.56d |
| 298 | Proceso Autorización | 2022-07-15 A → 2022-11-15 A (+123d) | 2022-11-15 → 2022-11-16 (+1d) | 88d → 1d | 98d → 19.56d |
| 299 | Ventanas emergentes de validación | 2022-07-15 A → 2022-11-15 A (+123d) | 2022-11-15 → 2022-11-16 (+1d) | 88d → 1d | 98d → 19.56d |
| 300 | Participaciones Federales | 2022-07-15 A → 2022-11-15 A (+123d) | 2022-11-15 → 2022-11-16 (+1d) | 88d → 1d | 98d → 19.56d |
| 301 | Dashboard Participaciones Federales | 2022-07-15 A → 2022-11-15 A (+123d) | 2022-11-15 → 2022-11-16 (+1d) | 88d → 1d | 98d → 19.56d |
| 302 | Proceso Envío general Participaciones Federales | 2022-07-15 A → 2022-11-15 A (+123d) | 2022-11-15 → 2022-11-16 (+1d) | 88d → 1d | 98d → 19.56d |
| 303 | Track general Participaciones Federales | 2022-07-15 A → 2022-11-15 A (+123d) |  | 88d → 1d |  |
| 304 | **Dashboard FG** | 2022-07-15 A → 2022-11-04 A (+112d) | 2022-11-15 → 2022-11-16 (+1d) | 88d → 7.56d | 98d → 19.56d |
| 305 | Configuración inicial Fondo General (FG) | 2022-07-15 A → 2022-11-04 A (+112d) | 2022-11-15 → 2022-11-07 (-8d) | 88d → 1d | 98d → 26.12d |
| 306 | Carga inicial | 2022-07-15 A → 2022-11-07 A (+115d) | 2022-11-15 → 2022-11-08 (-7d) | 88d → 1d | 98d → 25.19d |
| 307 | Pantalla Principal | 2022-07-15 A → 2022-11-08 A (+116d) | 2022-11-15 → 2022-11-09 (-6d) | 88d → 1d | 98d → 24.25d |
| 308 | Proceso cálculo | 2022-07-15 A → 2022-11-09 A (+117d) | 2022-11-15 → 2022-11-10 (-5d) | 88d → 1d | 98d → 23.31d |
| 309 | Proceso autorización | 2022-07-15 A → 2022-11-10 A (+118d) | 2022-11-15 → 2022-11-11 (-4d) | 88d → 1d | 98d → 22.38d |
| 310 | Proceso envío | 2022-07-15 A → 2022-11-11 A (+119d) | 2022-11-15 → 2022-11-14 (-1d) | 88d → 1d | 98d → 21.44d |
| 311 | Avance programático Fondo General | 2022-07-15 A → 2022-11-14 A (+122d) |  | 88d → 1d | 98d → 20.5d |
| 312 | Proceso Cancelación Fondo General | 2022-07-15 A → 2022-11-15 A (+123d) | 2022-11-15 → 2022-11-16 (+1d) | 88d → 1d | 98d → 19.56d |
| 313 | Ventanas emergentes de validación | 2022-07-15 A → 2022-11-15 A (+123d) | 2022-11-15 → 2022-11-16 (+1d) | 88d → 1d | 98d → 19.56d |
| 314 | **Dashboard FFM 70** | 2022-07-15 A → 2022-10-12 A (+89d) | 2022-11-15 → 2022-11-01 (-14d) | 88d → 13.19d | 98d → 29.88d |
| 315 | Configuración inicial Fondo Fomento Municipal 70 % (FFM 70% ) | 2022-07-15 A → 2022-10-12 A (+89d) | 2022-11-15 → 2022-10-13 (-33d) | 88d → 1d | 98d → 42.06d |
| 316 | Carga inicial | 2022-07-15 A → 2022-10-13 A (+90d) | 2022-11-15 → 2022-10-14 (-32d) | 88d → 1d | 98d → 41.12d |
| 317 | Pantalla Principal | 2022-07-15 A → 2022-10-14 A (+91d) | 2022-11-15 → 2022-10-17 (-29d) | 88d → 1d | 98d → 40.19d |
| 318 | Proceso cálculo | 2022-07-15 A → 2022-10-17 A (+94d) | 2022-11-15 → 2022-10-18 (-28d) | 88d → 1d | 98d → 39.25d |
| 319 | Proceso autorización | 2022-07-15 A → 2022-10-18 A (+95d) | 2022-11-15 → 2022-10-19 (-27d) | 88d → 1d | 98d → 38.31d |
| 320 | Proceso envío | 2022-07-15 A → 2022-10-19 A (+96d) | 2022-11-15 → 2022-10-20 (-26d) | 88d → 1d | 98d → 37.38d |
| 321 | Track | 2022-07-15 A → 2022-10-20 A (+97d) | 2022-11-15 A → 2022-10-20 A (-26d) | 88d → 1d |  |
| 322 | Ventanas emergentes de validación | 2022-07-15 A → 2022-10-21 A (+98d) | 2022-11-15 → 2022-10-24 (-22d) | 88d → 1d | 98d → 35.5d |
| 323 | Configuración inicial Fondo Fomento Municipal 30 % (FFM 30% ) | 2022-07-15 A → 2022-10-31 A (+108d) | 2022-11-15 → 2022-11-01 (-14d) | 88d → 1d | 98d → 29.88d |
| 324 | **Dashboard FFM 30** | 2022-07-15 A → 2022-10-13 A (+90d) | 2022-11-15 → 2022-10-25 (-21d) | 88d → 7.56d | 98d → 34.56d |
| 325 | Pantalla Principal | 2022-07-15 A → 2022-10-13 A (+90d) | 2022-11-15 → 2022-10-14 (-32d) | 88d → 1d | 98d → 41.12d |
| 326 | Carga Inicial | 2022-07-15 A → 2022-10-14 A (+91d) | 2022-11-15 → 2022-10-17 (-29d) | 88d → 1d | 98d → 40.19d |
| 327 | Proceso cálculo | 2022-07-15 A → 2022-10-17 A (+94d) | 2022-11-15 → 2022-10-18 (-28d) | 88d → 1d | 98d → 39.25d |
| 328 | Proceso autorización | 2022-07-15 A → 2022-10-18 A (+95d) | 2022-11-15 → 2022-10-19 (-27d) | 88d → 1d | 98d → 38.31d |
| 329 | Proceso envío | 2022-07-15 A → 2022-10-19 A (+96d) | 2022-11-15 → 2022-10-20 (-26d) | 88d → 1d | 98d → 37.38d |
| 330 | Track | 2022-07-15 A → 2022-10-20 A (+97d) | 2022-11-15 A → 2022-10-20 A (-26d) | 88d → 1d |  |
| 331 | Ventanas emergentes de validación | 2022-07-15 A → 2022-10-21 A (+98d) | 2022-11-15 → 2022-10-24 (-22d) | 88d → 1d | 98d → 35.5d |
| 332 | Configuración inicial Impuesto Especial sobre Producción y Servicios (IEPS) | 2022-07-15 A → 2022-10-24 A (+101d) | 2022-11-15 → 2022-10-25 (-21d) | 88d → 1d | 98d → 34.56d |
| 333 | **Dashboard IEPS** | 2022-07-15 A → 2022-10-14 A (+91d) | 2022-11-15 → 2022-10-26 (-20d) | 88d → 7.56d | 98d → 33.62d |
| 334 | Carga inicial | 2022-07-15 A → 2022-10-14 A (+91d) | 2022-11-15 → 2022-10-17 (-29d) | 88d → 1d | 98d → 40.19d |
| 335 | Pantalla Principal | 2022-07-15 A → 2022-10-17 A (+94d) | 2022-11-15 → 2022-10-18 (-28d) | 88d → 1d | 98d → 39.25d |
| 336 | Proceso cálculo | 2022-07-15 A → 2022-10-18 A (+95d) | 2022-11-15 → 2022-10-19 (-27d) | 88d → 1d | 98d → 38.31d |
| 337 | Proceso autorización | 2022-07-15 A → 2022-10-19 A (+96d) | 2022-11-15 → 2022-10-20 (-26d) | 88d → 1d | 98d → 37.38d |
| 338 | Proceso envío | 2022-07-15 A → 2022-10-20 A (+97d) | 2022-11-15 → 2022-10-21 (-25d) | 88d → 1d | 98d → 36.44d |
| 339 | Track | 2022-07-15 A → 2022-10-21 A (+98d) | 2022-11-15 A → 2022-10-21 A (-25d) | 88d → 1d |  |
| 340 | Ventanas emergentes de validación | 2022-07-15 A → 2022-10-24 A (+101d) | 2022-11-15 → 2022-10-25 (-21d) | 88d → 1d | 98d → 34.56d |
| 341 | Configuración inicial Impuesto sobre la Venta Final de Gasolinas y Diesel (IEPS GyD) | 2022-07-15 A → 2022-10-25 A (+102d) | 2022-11-15 → 2022-10-26 (-20d) | 88d → 1d | 98d → 33.62d |
| 342 | **Dashboard IEPS GyD** | 2022-07-15 A → 2022-10-14 A (+91d) | 2022-11-15 → 2022-10-25 (-21d) | 88d → 6.62d | 98d → 34.56d |
| 343 | Carga inicial | 2022-07-15 A → 2022-10-14 A (+91d) | 2022-11-15 → 2022-10-17 (-29d) | 88d → 1d | 98d → 40.19d |
| 344 | Pantalla Principal | 2022-07-15 A → 2022-10-17 A (+94d) | 2022-11-15 → 2022-10-18 (-28d) | 88d → 1d | 98d → 39.25d |
| 345 | Proceso cálculo | 2022-07-15 A → 2022-10-18 A (+95d) | 2022-11-15 → 2022-10-19 (-27d) | 88d → 1d | 98d → 38.31d |
| 346 | Proceso autorización | 2022-07-15 A → 2022-10-19 A (+96d) | 2022-11-15 → 2022-10-20 (-26d) | 88d → 1d | 98d → 37.38d |
| 347 | Proceso envío | 2022-07-15 A → 2022-10-20 A (+97d) | 2022-11-15 → 2022-10-21 (-25d) | 88d → 1d | 98d → 36.44d |
| 348 | Track | 2022-07-15 A → 2022-10-21 A (+98d) | 2022-11-15 A → 2022-10-21 A (-25d) | 88d → 1d |  |
| 349 | Ventanas emergentes de validación | 2022-07-15 A → 2022-10-22 A (+99d) | 2022-11-15 → 2022-10-25 (-21d) | 88d → 1d | 98d → 34.56d |
| 350 | **Dashboard ISR Bienes Inmuebles** | 2022-07-15 A → 2022-10-17 A (+94d) | 2022-11-15 → 2022-10-27 (-19d) | 88d → 7.56d | 98d → 32.69d |
| 351 | Pantalla Principal | 2022-07-15 A → 2022-10-17 A (+94d) | 2022-11-15 → 2022-10-18 (-28d) | 88d → 1d | 98d → 39.25d |
| 352 | Carga inicial | 2022-07-15 A → 2022-10-18 A (+95d) | 2022-11-15 → 2022-10-19 (-27d) | 88d → 1d | 98d → 38.31d |
| 353 | Configuración inicial ISR Bienes Inmuebles | 2022-07-15 A → 2022-10-19 A (+96d) | 2022-11-15 → 2022-10-20 (-26d) | 88d → 1d | 98d → 37.38d |
| 354 | Proceso cálculo | 2022-07-15 A → 2022-10-20 A (+97d) | 2022-11-15 → 2022-10-21 (-25d) | 88d → 1d | 98d → 36.44d |
| 355 | Proceso autorización | 2022-07-15 A → 2022-10-21 A (+98d) | 2022-11-15 → 2022-10-24 (-22d) | 88d → 1d | 98d → 35.5d |

| ID | Task | Start | Finish | Duration | Total float | Other |
| --- | --- | --- | --- | --- | --- | --- |
| 356 | Proceso envío | 2022-07-15 A → 2022-10-24 A (+101d) | 2022-11-15 → 2022-10-25 (-21d) | 88d → 1d | 98d → 34.56d |  |
| 357 | Track | 2022-07-15 A → 2022-10-25 A (+102d) | 2022-11-15 A → 2022-10-25 A (-21d) | 88d → 1d |  |  |
| 358 | Ventanas emergentes de validación | 2022-07-15 A → 2022-10-26 A (+103d) | 2022-11-15 → 2022-10-27 (-19d) | 88d → 1d | 98d → 32.69d |  |
| 359 | **Dashboard FOFIR** | 2022-07-15 A → 2022-10-18 A (+95d) | 2022-11-15 → 2022-10-28 (-18d) | 88d → 7.56d | 98d → 31.75d |  |
| 360 | Pantalla Principal | 2022-07-15 A → 2022-10-18 A (+95d) | 2022-11-15 → 2022-10-19 (-27d) | 88d → 1d | 98d → 38.31d |  |
| 361 | Carga inicial | 2022-07-15 A → 2022-10-19 A (+96d) | 2022-11-15 → 2022-10-20 (-26d) | 88d → 1d | 98d → 37.38d |  |
| 362 | Configuración inicial Fondo de Fiscalización y Recaudación (FOFIR) | 2022-07-15 A → 2022-10-20 A (+97d) | 2022-11-15 → 2022-10-21 (-25d) | 88d → 1d | 98d → 36.44d |  |
| 363 | Proceso cálculo | 2022-07-15 A → 2022-10-21 A (+98d) | 2022-11-15 → 2022-10-24 (-22d) | 88d → 1d | 98d → 35.5d |  |
| 364 | Proceso autorización | 2022-07-15 A → 2022-10-24 A (+101d) | 2022-11-15 → 2022-10-25 (-21d) | 88d → 1d | 98d → 34.56d |  |
| 365 | Proceso envío | 2022-07-15 A → 2022-10-25 A (+102d) | 2022-11-15 → 2022-10-26 (-20d) | 88d → 1d | 98d → 33.62d |  |
| 366 | Track | 2022-07-15 A → 2022-10-26 A (+103d) | 2022-11-15 A → 2022-10-26 A (-20d) | 88d → 1d |  |  |
| 367 | Ventanas emergentes de validación | 2022-07-15 A → 2022-10-27 A (+104d) | 2022-11-15 → 2022-10-28 (-18d) | 88d → 1d | 98d → 31.75d |  |
| 368 | **Dashboard ISAN** | 2022-07-15 A → 2022-10-19 A (+96d) | 2022-11-15 → 2022-11-02 (-13d) | 88d → 9.44d | 98d → 28.94d |  |
| 369 | Pantalla Principal | 2022-07-15 A → 2022-10-19 A (+96d) | 2022-11-15 → 2022-10-20 (-26d) | 88d → 1d | 98d → 37.38d |  |
| 370 | Plantilla Carga Masiva ISAN | 2022-07-15 A → 2022-10-20 A (+97d) | 2022-11-15 A → 2022-10-20 A (-26d) | 88d → 1d |  |  |
| 371 | Api Plantilla caga masiva Municipio - ISAN | 2022-07-15 A → 2022-10-21 A (+98d) | 2022-11-15 A → 2022-10-21 A (-25d) | 88d → 1d |  |  |
| 372 | Carga inicial | 2022-07-15 A → 2022-10-24 A (+101d) | 2022-11-15 → 2022-10-25 (-21d) | 88d → 1d | 98d → 34.56d |  |
| 373 | Configuración inicial Impuesto sobre Automóviles Nuevos (ISAN) | 2022-07-15 A → 2022-10-25 A (+102d) | 2022-11-15 → 2022-10-26 (-20d) | 88d → 1d | 98d → 33.62d |  |
| 374 | Proceso cálculo | 2022-07-15 A → 2022-10-26 A (+103d) | 2022-11-15 → 2022-10-27 (-19d) | 88d → 1d | 98d → 32.69d |  |
| 375 | Proceso autorización | 2022-07-15 A → 2022-10-27 A (+104d) | 2022-11-15 → 2022-10-28 (-18d) | 88d → 1d | 98d → 31.75d |  |
| 376 | Proceso envío | 2022-07-15 A → 2022-10-28 A (+105d) | 2022-11-15 → 2022-10-31 (-15d) | 88d → 1d | 98d → 30.81d |  |
| 377 | Track | 2022-07-15 A → 2022-10-31 A (+108d) | 2022-11-15 A → 2022-10-31 A (-15d) | 88d → 1d |  |  |
| 378 | Ventanas emergentes de validación | 2022-07-15 A → 2022-11-01 A (+109d) | 2022-11-15 → 2022-11-02 (-13d) | 88d → 1d | 98d → 28.94d |  |
| 379 | **Dashboard Comp. ISAN** | 2022-07-15 A → 2022-10-20 A (+97d) | 2022-11-15 → 2022-11-01 (-14d) | 88d → 7.56d | 98d → 29.88d |  |
| 380 | Pantalla Principal | 2022-07-15 A → 2022-10-20 A (+97d) | 2022-11-15 → 2022-10-21 (-25d) | 88d → 1d | 98d → 36.44d |  |
| 381 | Carga inicial | 2022-07-15 A → 2022-10-21 A (+98d) | 2022-11-15 → 2022-10-24 (-22d) | 88d → 1d | 98d → 35.5d |  |
| 382 | Configuración inicial Compensación ISAN | 2022-07-15 A → 2022-10-24 A (+101d) | 2022-11-15 → 2022-10-25 (-21d) | 88d → 1d | 98d → 34.56d |  |
| 383 | Proceso cálculo | 2022-07-15 A → 2022-10-25 A (+102d) | 2022-11-15 → 2022-10-26 (-20d) | 88d → 1d | 98d → 33.62d |  |
| 384 | Proceso autorización | 2022-07-15 A → 2022-10-26 A (+103d) | 2022-11-15 → 2022-10-27 (-19d) | 88d → 1d | 98d → 32.69d |  |
| 385 | Proceso envío | 2022-07-15 A → 2022-10-27 A (+104d) | 2022-11-15 → 2022-10-28 (-18d) | 88d → 1d | 98d → 31.75d |  |
| 386 | Track | 2022-07-15 A → 2022-10-28 A (+105d) | 2022-11-15 A → 2022-10-28 A (-18d) | 88d → 1d |  |  |
| 387 | Ventanas emergentes de validación | 2022-07-15 A → 2022-10-31 A (+108d) | 2022-11-15 → 2022-11-01 (-14d) | 88d → 1d | 98d → 29.88d |  |
| 388 | **Dashboard ISN** | 2022-07-15 A → 2022-10-21 A (+98d) | 2022-11-15 → 2022-11-01 (-14d) | 88d → 6.62d | 98d → 29.88d |  |
| 389 | Pantalla Principal | 2022-07-15 A → 2022-10-21 A (+98d) | 2022-11-15 → 2022-10-24 (-22d) | 88d → 1d | 98d → 35.5d |  |
| 390 | Carga configuración inicial fondo ISN | 2022-07-15 A → 2022-10-24 A (+101d) | 2022-11-15 → 2022-10-25 (-21d) | 88d → 1d | 98d → 34.56d |  |
| 391 | Proceso de cálculo | 2022-07-15 A → 2022-10-25 A (+102d) | 2022-11-15 → 2022-10-26 (-20d) | 88d → 1d | 98d → 33.62d |  |
| 392 | Proceso de Autorización | 2022-07-15 A → 2022-10-26 A (+103d) | 2022-11-15 → 2022-10-27 (-19d) | 88d → 1d | 98d → 32.69d |  |
| 393 | Proceso de Envío | 2022-07-15 A → 2022-10-27 A (+104d) | 2022-11-15 → 2022-10-28 (-18d) | 88d → 1d | 98d → 31.75d |  |
| 394 | Track | 2022-07-15 A → 2022-10-28 A (+105d) | 2022-11-15 A → 2022-10-28 A (-18d) | 88d → 1d |  |  |
| 395 | Ventanas emergentes de validación | 2022-07-15 A → 2022-10-31 A (+108d) | 2022-11-15 → 2022-11-01 (-14d) | 88d → 1d | 98d → 29.88d |  |
| 396 | **Dashboard ICV** | 2022-07-15 A → 2022-10-24 A (+101d) | 2022-11-15 → 2022-11-03 (-12d) | 88d → 7.56d | 98d → 28d |  |
| 397 | Pantalla Principal | 2022-07-15 A → 2022-10-24 A (+101d) | 2022-11-15 → 2022-10-25 (-21d) | 88d → 1d | 98d → 34.56d |  |
| 398 | Carga Configuración inicial ICV | 2022-07-15 A → 2022-10-25 A (+102d) | 2022-11-15 → 2022-10-26 (-20d) | 88d → 1d | 98d → 33.62d |  |
| 399 | Carga masiva de ICV - (Plantilla) | 2022-07-15 A → 2022-10-26 A (+103d) | 2022-11-15 → 2022-10-27 (-19d) | 88d → 1d | 98d → 32.69d |  |
| 400 | Proceso de cálculo | 2022-07-15 A → 2022-10-27 A (+104d) | 2022-11-15 → 2022-10-28 (-18d) | 88d → 1d | 98d → 31.75d |  |
| 401 | Proceso de Autorización | 2022-07-15 A → 2022-10-28 A (+105d) | 2022-11-15 → 2022-10-31 (-15d) | 88d → 1d | 98d → 30.81d |  |
| 402 | Proceso de Envío | 2022-07-15 A → 2022-10-31 A (+108d) | 2022-11-15 → 2022-11-01 (-14d) | 88d → 1d | 98d → 29.88d |  |
| 403 | Track | 2022-07-15 A → 2022-11-01 A (+109d) | 2022-11-15 A → 2022-11-01 A (-14d) | 88d → 1d |  |  |
| 404 | Ventanas emergentes de validación | 2022-07-15 A → 2022-11-02 A (+110d) | 2022-11-15 → 2022-11-03 (-12d) | 88d → 1d | 98d → 28d |  |
| 405 | **Dashboard Fondo Ultracrecmiento** | 2022-07-15 A → 2022-10-25 A (+102d) | 2022-11-15 → 2022-11-03 (-12d) | 88d → 6.62d | 98d → 28d |  |
| 406 | Pantalla Principal | 2022-07-15 A → 2022-10-25 A (+102d) | 2022-11-15 → 2022-10-26 (-20d) | 88d → 1d | 98d → 33.62d |  |
| 407 | Carga configuración inicial Fondo Ultracrecimiento | 2022-07-15 A → 2022-10-26 A (+103d) | 2022-11-15 → 2022-10-27 (-19d) | 88d → 1d | 98d → 32.69d |  |
| 408 | Proceso de Autorización | 2022-07-15 A → 2022-10-27 A (+104d) | 2022-11-15 → 2022-10-28 (-18d) | 88d → 1d | 98d → 31.75d |  |
| 409 | Proceso de Envío | 2022-07-15 A → 2022-10-28 A (+105d) | 2022-11-15 → 2022-10-31 (-15d) | 88d → 1d | 98d → 30.81d |  |
| 410 | Track | 2022-07-15 A → 2022-10-31 A (+108d) | 2022-11-15 A → 2022-10-31 A (-15d) | 88d → 1d |  |  |
| 411 | Ventanas emergentes de validación | 2022-07-15 A → 2022-11-01 A (+109d) | 2022-11-15 → 2022-11-02 (-13d) | 88d → 1d | 98d → 28.94d |  |
| 412 | Generación de reporte | 2022-07-15 A → 2022-11-02 A (+110d) | 2022-11-15 → 2022-11-03 (-12d) | 88d → 1d | 98d → 28d |  |
| 413 | **Dashboard Fondos Descentralizado** | 2022-07-15 A → 2022-10-11 A (+88d) | 2022-11-15 → 2022-10-19 (-27d) | 88d → 5.69d | 98d → 38.31d |  |
| 414 | Pantalla Principal | 2022-07-15 → 2022-10-11 (+88d) | 2022-11-15 → 2022-10-11 (-35d) | 88d → 1d | 126d → none | constraint start no earlier than 2022-07-15 → none |
| 415 | Carga configuración inicial Fondo Descentralizado | 2022-07-15 → 2022-10-11 (+88d) | 2022-11-15 → 2022-10-11 (-35d) | 88d → 1d | 126d → none | constraint start no earlier than 2022-07-15 → none |
| 416 | Proceso de cálculo | 2022-07-15 A → 2022-10-12 A (+89d) | 2022-11-15 → 2022-10-13 (-33d) | 88d → 1d | 98d → 42.06d |  |
| 417 | Proceso de Autorización | 2022-07-15 A → 2022-10-13 A (+90d) | 2022-11-15 → 2022-10-14 (-32d) | 88d → 1d | 98d → 41.12d |  |
| 418 | Proceso de Envío | 2022-07-15 A → 2022-10-14 A (+91d) | 2022-11-15 → 2022-10-17 (-29d) | 88d → 1d | 98d → 40.19d |  |
| 419 | Track | 2022-07-15 A → 2022-10-17 A (+94d) | 2022-11-15 A → 2022-10-17 A (-29d) | 88d → 1d |  |  |
| 420 | Ventanas emergentes de validación | 2022-07-15 A → 2022-10-18 A (+95d) | 2022-11-15 → 2022-10-19 (-27d) | 88d → 1d | 98d → 38.31d |  |
| 421 | **Dashboard Fondos Seguridad** | 2022-07-15 A → 2022-10-12 A (+89d) | 2022-11-15 → 2022-10-24 (-22d) | 88d → 7.56d | 98d → 35.5d |  |
| 422 | Pantalla Principal | 2022-07-15 A → 2022-10-12 A (+89d) | 2022-11-15 → 2022-10-13 (-33d) | 88d → 1d | 98d → 42.06d |  |
| 423 | Carga configuración inicial Fondo Seguridad | 2022-07-15 A → 2022-10-13 A (+90d) | 2022-11-15 → 2022-10-14 (-32d) | 88d → 1d | 98d → 41.12d |  |
| 424 | Proceso de cálculo | 2022-07-15 A → 2022-10-14 A (+91d) | 2022-11-15 → 2022-10-17 (-29d) | 88d → 1d | 98d → 40.19d |  |
| 425 | Proceso de Autorización | 2022-07-15 A → 2022-10-17 A (+94d) | 2022-11-15 → 2022-10-18 (-28d) | 88d → 1d | 98d → 39.25d |  |

| ID | Task | Start | Finish | Duration | Complete | Total float | Predecessors |
| --- | --- | --- | --- | --- | --- | --- | --- |
| 426 | Proceso de Envío | 2022-07-15 A → 2022-10-18 A (+95d) | 2022-11-15 → 2022-10-19 (-27d) | 88d → 1d |  | 98d → 38.31d |  |
| 427 | Track | 2022-07-15 A → 2022-10-19 A (+96d) | 2022-11-15 A → 2022-10-19 A (-27d) | 88d → 1d |  |  |  |
| 428 | Ventanas emergentes de validación | 2022-07-15 A → 2022-10-20 A (+97d) | 2022-11-15 → 2022-10-21 (-25d) | 88d → 1d |  | 98d → 36.44d |  |
| 429 | Generación de reporte | 2022-07-15 A → 2022-10-21 A (+98d) | 2022-11-15 → 2022-10-24 (-22d) | 88d → 1d |  | 98d → 35.5d |  |
| 430 | **Dashboard Fondos de Desarrollo Municipal** | 2022-07-15 A → 2022-10-13 A (+90d) | 2022-11-15 → 2022-10-25 (-21d) | 88d → 7.56d |  | 98d → 34.56d |  |
| 431 | Pantalla Principal | 2022-07-15 A → 2022-10-13 A (+90d) | 2022-11-15 → 2022-10-14 (-32d) | 88d → 1d |  | 98d → 41.12d |  |
| 432 | Carga configuración inicial Fondo Desarrollo Municipal | 2022-07-15 A → 2022-10-14 A (+91d) | 2022-11-15 → 2022-10-17 (-29d) | 88d → 1d |  | 98d → 40.19d |  |
| 433 | Proceso de cálculo | 2022-07-15 A → 2022-10-17 A (+94d) | 2022-11-15 → 2022-10-18 (-28d) | 88d → 1d |  | 98d → 39.25d |  |
| 434 | Proceso de Autorización | 2022-07-15 A → 2022-10-18 A (+95d) | 2022-11-15 → 2022-10-19 (-27d) | 88d → 1d |  | 98d → 38.31d |  |
| 435 | Proceso de Envío | 2022-07-15 A → 2022-10-19 A (+96d) | 2022-11-15 → 2022-10-20 (-26d) | 88d → 1d |  | 98d → 37.38d |  |
| 436 | Track | 2022-07-15 A → 2022-10-20 A (+97d) | 2022-11-15 A → 2022-10-20 A (-26d) | 88d → 1d |  |  |  |
| 437 | Ventanas emergentes de validación | 2022-07-15 A → 2022-10-21 A (+98d) | 2022-11-15 → 2022-10-24 (-22d) | 88d → 1d |  | 98d → 35.5d |  |
| 438 | Generación de reporte | 2022-07-15 A → 2022-10-24 A (+101d) | 2022-11-15 → 2022-10-25 (-21d) | 88d → 1d |  | 98d → 34.56d |  |
| 439 | **Dashboard Fondos FORTAMUN** | 2022-07-15 A → 2022-10-14 A (+91d) | 2022-11-15 → 2022-10-26 (-20d) | 88d → 7.56d |  | 98d → 33.62d |  |
| 440 | Pantalla Principal | 2022-07-15 A → 2022-10-14 A (+91d) | 2022-11-15 → 2022-10-17 (-29d) | 88d → 1d |  | 98d → 40.19d |  |
| 441 | Carga configuración inicial Fondo FORTAMUN | 2022-07-15 A → 2022-10-17 A (+94d) | 2022-11-15 → 2022-10-18 (-28d) | 88d → 1d |  | 98d → 39.25d |  |
| 442 | Proceso de cálculo | 2022-07-15 A → 2022-10-18 A (+95d) | 2022-11-15 → 2022-10-19 (-27d) | 88d → 1d |  | 98d → 38.31d |  |
| 443 | Proceso de Autorización | 2022-07-15 A → 2022-10-19 A (+96d) | 2022-11-15 → 2022-10-20 (-26d) | 88d → 1d |  | 98d → 37.38d |  |
| 444 | Proceso de Envío | 2022-07-15 A → 2022-10-20 A (+97d) | 2022-11-15 → 2022-10-21 (-25d) | 88d → 1d |  | 98d → 36.44d |  |
| 445 | Track | 2022-07-15 A → 2022-10-21 A (+98d) | 2022-11-15 A → 2022-10-21 A (-25d) | 88d → 1d |  |  |  |
| 446 | Ventanas emergentes de validación | 2022-07-15 A → 2022-10-24 A (+101d) | 2022-11-15 → 2022-10-25 (-21d) | 88d → 1d |  | 98d → 34.56d |  |
| 447 | Generación de reporte | 2022-07-15 A → 2022-10-25 A (+102d) | 2022-11-15 → 2022-10-26 (-20d) | 88d → 1d |  | 98d → 33.62d |  |
| 448 | **Dashboard Fondos FISM** | 2022-07-15 A → 2022-10-17 A (+94d) | 2022-11-15 → 2022-10-31 (-15d) | 88d → 9.44d |  | 98d → 30.81d |  |
| 449 | Pantalla Principal | 2022-07-15 A → 2022-10-17 A (+94d) | 2022-11-15 → 2022-10-18 (-28d) | 88d → 1d |  | 98d → 39.25d |  |
| 450 | Carga configuración inicial Fondo FISM | 2022-07-15 A → 2022-10-18 A (+95d) | 2022-11-15 → 2022-10-19 (-27d) | 88d → 1d |  | 98d → 38.31d |  |
| 451 | Proceso de cálculo | 2022-07-15 A → 2022-10-19 A (+96d) | 2022-11-15 → 2022-10-20 (-26d) | 88d → 1d |  | 98d → 37.38d |  |
| 452 | Proceso de Autorización | 2022-07-15 A → 2022-10-20 A (+97d) | 2022-11-15 → 2022-10-21 (-25d) | 88d → 1d |  | 98d → 36.44d |  |
| 453 | Proceso de Envío | 2022-07-15 A → 2022-10-21 A (+98d) | 2022-11-15 → 2022-10-24 (-22d) | 88d → 1d |  | 98d → 35.5d |  |
| 454 | Track | 2022-07-15 A → 2022-10-24 A (+101d) | 2022-11-15 A → 2022-10-24 A (-22d) | 88d → 1d |  |  |  |
| 455 | Ventanas emergentes de validación | 2022-07-15 A → 2022-10-25 A (+102d) | 2022-11-15 → 2022-10-26 (-20d) | 88d → 1d |  | 98d → 33.62d |  |
| 456 | Generación de reporte | 2022-07-15 A → 2022-10-26 A (+103d) | 2022-11-15 → 2022-10-27 (-19d) | 88d → 1d |  | 98d → 32.69d |  |
| 457 | Generador de estadísticas | 2022-07-15 A → 2022-10-27 A (+104d) | 2022-11-15 → 2022-10-28 (-18d) | 88d → 1d |  | 98d → 31.75d |  |
| 458 | Generador de reportes | 2022-07-15 A → 2022-10-28 A (+105d) | 2022-11-15 → 2022-10-31 (-15d) | 88d → 1d |  | 98d → 30.81d |  |
| 459 | **sprint 6** | 2022-08-18 → 2022-10-11 A (+54d) | 2023-01-20 → 2022-11-16 (-65d) | 112d → 24.44d | 12% → 22% | none → 0d | none → 31 |
| 460 | **Módulo DAMOP** | 2022-07-15 A → 2022-10-11 A (+88d) | 2022-12-19 → 2022-11-16 (-33d) | 112d → 24.44d | 12% → 22% | 74d → 0d |  |
| 461 | **Base** | 2022-07-15 A → 2022-10-11 A (+88d) | 2022-12-19 → 2022-10-17 (-63d) | 112d → 3.81d | 0% → 25% | 74d → 19.62d |  |
| 462 | Pantalla Principal | 2022-07-15 A → 2022-10-11 A (+88d) | 2022-12-19 → 2022-10-12 (-68d) | 88d → 1d |  | 74d → 22.44d |  |
| 463 | Pop up Notificaciones | 2022-07-15 A → 2022-10-12 A (+89d) | 2022-12-19 → 2022-10-13 (-67d) | 88d → 1d |  | 74d → 21.5d |  |
| 464 | Contador de Notificaciones (Icono campanita) | 2022-07-15 A → 2022-10-13 A (+90d) | 2022-12-19 → 2022-10-13 A (-67d) | 88d → 1d | 0% → 100% | 74d → none |  |
| 465 | Bandeja entrada de Notificaciones | 2022-07-15 A → 2022-10-14 A (+91d) | 2022-12-19 → 2022-10-17 (-63d) | 88d → 1d |  | 74d → 19.62d |  |
| 466 | **Administración de Municipios** | 2022-07-15 A → 2022-10-12 A (+89d) | 2022-12-19 → 2022-10-31 (-49d) | 112d → 12.25d |  | 74d → 10.25d |  |
| 467 | Pantalla principal | 2022-07-15 A → 2022-10-12 A (+89d) | 2022-12-19 → 2022-10-13 (-67d) | 88d → 1d |  | 74d → 21.5d |  |
| 468 | Insertar | 2022-07-15 A → 2022-10-13 A (+90d) | 2022-11-15 A → 2022-10-13 A (-33d) | 88d → 1d |  |  |  |
| 469 | Contactar Municipio | 2022-07-15 A → 2022-10-14 A (+91d) | 2022-12-19 → 2022-10-17 (-63d) | 88d → 1d |  | 74d → 19.62d |  |
| 470 | Ver Detalles | 2022-07-15 A → 2022-10-17 A (+94d) | 2022-12-19 → 2022-10-18 (-62d) | 88d → 1d |  | 74d → 18.69d |  |
| 471 | Configuración de Dashboard | 2022-07-15 A → 2022-10-18 A (+95d) | 2022-12-19 → 2022-10-19 (-61d) | 88d → 1d |  | 74d → 17.75d |  |
| 472 | Exportación de dashboard PDF | 2022-07-15 A → 2022-10-19 A (+96d) | 2022-12-19 → 2022-10-20 (-60d) | 88d → 1d |  | 74d → 16.81d |  |
| 473 | Exportación de dashboard Excel | 2022-07-15 A → 2022-10-20 A (+97d) | 2022-12-19 → 2022-10-21 (-59d) | 88d → 1d |  | 74d → 15.88d |  |
| 474 | Paginación Dashboard | 2022-07-15 A → 2022-10-21 A (+98d) | 2022-12-19 → 2022-10-24 (-56d) | 88d → 1d |  | 74d → 14.94d |  |
| 475 | Busqueda Dash board | 2022-07-15 A → 2022-10-24 A (+101d) | 2022-12-19 → 2022-10-25 (-55d) | 88d → 1d |  | 74d → 14d |  |
| 476 | Ventanas emergentes de validación | 2022-07-15 A → 2022-10-25 A (+102d) | 2022-12-19 → 2022-10-26 (-54d) | 88d → 1d |  | 74d → 13.06d |  |
| 477 | Modificar | 2022-07-15 A → 2022-10-26 A (+103d) | 2022-11-15 A → 2022-10-26 A (-20d) | 88d → 1d |  |  |  |
| 478 | Subida de Archivos | 2022-07-15 A → 2022-10-27 A (+104d) | 2022-12-19 → 2022-10-28 (-52d) | 88d → 1d |  | 74d → 11.19d |  |
| 479 | Descarga de PDF | 2022-07-15 A → 2022-10-28 A (+105d) | 2022-12-19 → 2022-10-31 (-49d) | 88d → 1d |  | 74d → 10.25d |  |
| 480 | **Administración de Avisos** | 2022-07-15 A → 2022-10-13 A (+90d) | 2022-12-19 → 2022-10-26 A (-54d) | 112d → 9.38d | 30% → 100% | 74d → none |  |
| 481 | Pantalla principal | 2022-07-15 A → 2022-10-13 A (+90d) | 2022-12-19 → 2022-10-13 A (-67d) | 88d → 1d | 0% → 100% | 74d → none |  |
| 482 | Agregar | 2022-07-15 A → 2022-10-14 A (+91d) | 2022-11-15 A → 2022-10-14 A (-32d) | 88d → 1d |  |  |  |
| 483 | Eliminar | 2022-07-15 A → 2022-10-17 A (+94d) | 2022-11-15 A → 2022-10-17 A (-29d) | 88d → 1d |  |  |  |
| 484 | Editar | 2022-07-15 A → 2022-10-18 A (+95d) | 2022-11-15 A → 2022-10-18 A (-28d) | 88d → 1d |  |  |  |
| 485 | Configuración de Dashboard | 2022-07-15 A → 2022-10-19 A (+96d) | 2022-12-19 → 2022-10-19 A (-61d) | 88d → 1d | 0% → 100% | 74d → none |  |
| 486 | Exportación de dashboard PDF | 2022-07-15 A → 2022-10-20 A (+97d) | 2022-12-19 → 2022-10-20 A (-60d) | 88d → 1d | 0% → 100% | 74d → none |  |
| 487 | Exportación de dashboard Excel | 2022-07-15 A → 2022-10-21 A (+98d) | 2022-12-19 → 2022-10-21 A (-59d) | 88d → 1d | 0% → 100% | 74d → none |  |
| 488 | Paginación Dashboard | 2022-07-15 A → 2022-10-24 A (+101d) | 2022-12-19 → 2022-10-24 A (-56d) | 88d → 1d | 0% → 100% | 74d → none |  |
| 489 | Busqueda Dash board | 2022-07-15 A → 2022-10-25 A (+102d) | 2022-12-19 → 2022-10-25 A (-55d) | 88d → 1d | 0% → 100% | 74d → none |  |
| 490 | Ventanas emergentes de validación | 2022-07-15 A → 2022-10-26 A (+103d) | 2022-12-19 → 2022-10-26 A (-54d) | 88d → 1d | 0% → 100% | 74d → none |  |
| 491 | **Administración de Eventos** | 2022-07-15 A → 2022-10-14 A (+91d) | 2022-12-19 → 2022-10-27 A (-53d) | 112d → 9.38d | 30% → 100% | 74d → none |  |
| 492 | Pantalla principal | 2022-07-15 A → 2022-10-14 A (+91d) | 2022-12-19 → 2022-10-14 A (-66d) | 88d → 1d | 0% → 100% | 74d → none |  |
| 493 | Agregar | 2022-07-15 A → 2022-10-17 A (+94d) | 2022-11-15 A → 2022-10-17 A (-29d) | 88d → 1d |  |  |  |
| 494 | Eliminar | 2022-07-15 A → 2022-10-18 A (+95d) | 2022-11-15 A → 2022-10-18 A (-28d) | 88d → 1d |  |  |  |
| 495 | Editar | 2022-07-15 A → 2022-10-19 A (+96d) | 2022-11-15 A → 2022-10-19 A (-27d) | 88d → 1d |  |  |  |

| ID | Task | Start | Finish | Duration | Complete | Total float | Other |
| --- | --- | --- | --- | --- | --- | --- | --- |
| 496 | Configuración de Dashboard | 2022-07-15 A → 2022-10-20 A (+97d) | 2022-12-19 → 2022-10-20 A (-60d) | 88d → 1d | 0% → 100% | 74d → none |  |
| 497 | Exportación de dashboard PDF | 2022-07-15 A → 2022-10-21 A (+98d) | 2022-12-19 → 2022-10-21 A (-59d) | 88d → 1d | 0% → 100% | 74d → none |  |
| 498 | Exportación de dashboard Excel | 2022-07-15 A → 2022-10-24 A (+101d) | 2022-12-19 → 2022-10-24 A (-56d) | 88d → 1d | 0% → 100% | 74d → none |  |
| 499 | Paginación Dashboard | 2022-07-15 A → 2022-10-25 A (+102d) | 2022-12-19 → 2022-10-25 A (-55d) | 88d → 1d | 0% → 100% | 74d → none |  |
| 500 | Busqueda Dash board | 2022-07-15 A → 2022-10-26 A (+103d) | 2022-12-19 → 2022-10-26 A (-54d) | 88d → 1d | 0% → 100% | 74d → none |  |
| 501 | Ventanas emergentes de validación | 2022-07-15 A → 2022-10-27 A (+104d) | 2022-12-19 → 2022-10-27 A (-53d) | 88d → 1d | 0% → 100% | 74d → none |  |
| 502 | **Administración de Conceptos** | 2022-07-15 A → 2022-10-17 A (+94d) | 2022-12-19 → 2022-10-21 (-59d) | 112d → 3.81d |  | 74d → 15.88d |  |
| 503 | Pantalla principal | 2022-07-15 A → 2022-10-17 A (+94d) | 2022-12-19 → 2022-10-18 (-62d) | 88d → 1d |  | 74d → 18.69d |  |
| 504 | Agregar | 2022-07-15 A → 2022-10-18 A (+95d) | 2022-12-19 → 2022-10-19 (-61d) | 88d → 1d |  | 74d → 17.75d |  |
| 505 | Eliminar | 2022-07-15 A → 2022-10-19 A (+96d) | 2022-12-19 → 2022-10-20 (-60d) | 88d → 1d |  | 74d → 16.81d |  |
| 506 | Editar | 2022-07-15 A → 2022-10-20 A (+97d) | 2022-12-19 → 2022-10-21 (-59d) | 88d → 1d |  | 74d → 15.88d |  |
| 507 | **Administración tasa interés BANXICO** | 2022-07-15 A → 2022-10-18 A (+95d) | 2022-12-19 → 2022-10-25 A (-55d) | 112d → 5.62d | 50% → 100% | 74d → none |  |
| 508 | Pantalla principal | 2022-07-15 A → 2022-10-18 A (+95d) | 2022-12-19 → 2022-10-18 A (-62d) | 88d → 1d | 0% → 100% | 74d → none |  |
| 509 | Insertar | 2022-07-15 A → 2022-10-19 A (+96d) | 2022-11-15 A → 2022-10-19 A (-27d) | 88d → 1d |  |  |  |
| 510 | Modificar | 2022-07-15 A → 2022-10-20 A (+97d) | 2022-11-15 A → 2022-10-20 A (-26d) | 88d → 1d |  |  |  |
| 511 | Eliminar | 2022-07-15 A → 2022-10-21 A (+98d) | 2022-11-15 A → 2022-10-21 A (-25d) | 88d → 1d |  |  |  |
| 512 | Visualizar | 2022-07-15 A → 2022-10-24 A (+101d) | 2022-12-19 → 2022-10-24 A (-56d) | 88d → 1d | 0% → 100% | 74d → none |  |
| 513 | Job de Ejecucion automatica | 2022-07-15 A → 2022-10-25 A (+102d) | 2022-12-19 → 2022-10-25 A (-55d) | 88d → 1d | 0% → 100% | 74d → none |  |
| 514 | **Anticipo Participaciones** | 2022-07-15 A → 2022-10-19 A (+96d) | 2022-12-19 → 2022-11-08 (-41d) | 112d → 14.06d |  | 74d → 3.75d |  |
| 515 | Pantalla principal | 2022-07-15 A → 2022-10-19 A (+96d) | 2022-12-19 → 2022-10-20 (-60d) | 88d → 1d |  | 74d → 16.81d |  |
| 516 | Agregar | 2022-07-15 A → 2022-10-20 A (+97d) | 2022-12-19 → 2022-10-21 (-59d) | 88d → 1d |  | 74d → 15.88d |  |
| 517 | Eliminar | 2022-07-15 A → 2022-10-21 A (+98d) | 2022-12-19 → 2022-10-24 (-56d) | 88d → 1d |  | 74d → 14.94d |  |
| 518 | Editar | 2022-07-15 A → 2022-10-24 A (+101d) | 2022-12-19 → 2022-10-25 (-55d) | 88d → 1d |  | 74d → 14d |  |
| 519 | Configuración de Dashboard | 2022-07-15 A → 2022-10-25 A (+102d) | 2022-12-19 → 2022-10-26 (-54d) | 88d → 1d |  | 74d → 13.06d |  |
| 520 | Exportación de dashboard PDF | 2022-07-15 A → 2022-10-26 A (+103d) | 2022-12-19 → 2022-10-27 (-53d) | 88d → 1d |  | 74d → 12.12d |  |
| 521 | Exportación de dashboard Excel | 2022-07-15 A → 2022-10-27 A (+104d) | 2022-12-19 → 2022-10-28 (-52d) | 88d → 1d |  | 74d → 11.19d |  |
| 522 | Paginación Dashboard | 2022-07-15 A → 2022-10-28 A (+105d) | 2022-12-19 → 2022-10-31 (-49d) | 88d → 1d |  | 74d → 10.25d |  |
| 523 | Busqueda Dash board | 2022-07-15 A → 2022-10-31 A (+108d) | 2022-12-19 → 2022-11-01 (-48d) | 88d → 1d |  | 74d → 9.31d |  |
| 524 | Ventanas emergentes de validación | 2022-07-15 A → 2022-11-01 A (+109d) | 2022-12-19 → 2022-11-02 (-47d) | 88d → 1d |  | 74d → 8.38d |  |
| 525 | Carga masiva | 2022-07-15 A → 2022-11-02 A (+110d) | 2022-12-19 → 2022-11-03 (-46d) | 88d → 1d |  | 74d → 7.44d |  |
| 526 | Copiar información del mes anterior | 2022-07-15 A → 2022-11-03 A (+111d) | 2022-12-19 → 2022-11-04 (-45d) | 88d → 1d |  | 74d → 6.5d |  |
| 527 | Proceso de Ajuste | 2022-07-15 A → 2022-11-04 A (+112d) | 2022-12-19 → 2022-11-07 (-42d) | 88d → 1d |  | 74d → 5.56d |  |
| 528 | Proceso de Enviar | 2022-07-15 A → 2022-11-07 A (+115d) | 2022-12-19 → 2022-11-08 (-41d) | 88d → 1d |  | 74d → 4.62d |  |
| 529 | Track | 2022-07-15 A → 2022-11-08 A (+116d) | 2022-11-15 A → 2022-11-08 A (-7d) | 88d → 1d |  |  |  |
| 530 | **Solicitud de Recursos** | 2022-07-15 A → 2022-10-20 A (+97d) | 2022-12-19 → 2022-11-08 (-41d) | 112d → 13.12d |  | 74d → 3.75d |  |
| 531 | Pantalla principal | 2022-08-18 → 2022-10-20 (+63d) | 2022-12-19 → 2022-10-21 (-59d) | 88d → 1d |  | 74d → 15.88d | constraint start no earlier than 2022-07-15 → start no earlier than 2022-10-20 |
| 532 | Agregar | 2022-08-18 → 2022-10-20 (+63d) | 2022-12-19 → 2022-10-21 (-59d) | 88d → 1d |  | 74d → 15.88d | constraint start no earlier than 2022-07-15 → start no earlier than 2022-10-20 |
| 533 | Eliminar | 2022-08-18 → 2022-10-24 (+67d) | 2022-12-19 → 2022-10-25 (-55d) | 88d → 1d |  | 74d → 14d | constraint start no earlier than 2022-07-15 → start no earlier than 2022-10-24 |
| 534 | Editar | 2022-08-18 → 2022-10-24 (+67d) | 2022-12-19 → 2022-10-25 (-55d) | 88d → 1d |  | 74d → 14d | constraint start no earlier than 2022-07-15 → start no earlier than 2022-10-24 |
| 535 | Configuración de Dashboard | 2022-07-15 A → 2022-10-25 A (+102d) | 2022-12-19 → 2022-10-26 (-54d) | 88d → 1d |  | 74d → 13.06d |  |
| 536 | Exportación de dashboard PDF | 2022-07-15 A → 2022-10-26 A (+103d) | 2022-12-19 → 2022-10-27 (-53d) | 88d → 1d |  | 74d → 12.12d |  |
| 537 | Exportación de dashboard Excel | 2022-07-15 A → 2022-10-27 A (+104d) | 2022-12-19 → 2022-10-28 (-52d) | 88d → 1d |  | 74d → 11.19d |  |
| 538 | Paginación Dashboard | 2022-07-15 A → 2022-10-28 A (+105d) | 2022-12-19 → 2022-10-31 (-49d) | 88d → 1d |  | 74d → 10.25d |  |
| 539 | Busqueda Dash board | 2022-07-15 A → 2022-10-31 A (+108d) | 2022-12-19 → 2022-11-01 (-48d) | 88d → 1d |  | 74d → 9.31d |  |
| 540 | Ventanas emergentes de validación | 2022-07-15 A → 2022-11-01 A (+109d) | 2022-12-19 → 2022-11-02 (-47d) | 88d → 1d |  | 74d → 8.38d |  |
| 541 | Carga de documento | 2022-07-15 A → 2022-11-02 A (+110d) | 2022-12-19 → 2022-11-03 (-46d) | 88d → 1d |  | 74d → 7.44d |  |
| 542 | Copiar información del mes anterior | 2022-07-15 A → 2022-11-03 A (+111d) | 2022-12-19 → 2022-11-04 (-45d) | 88d → 1d |  | 74d → 6.5d |  |
| 543 | Dashboard de Solicitud de Recursos sección Solicitudes Pendientes | 2022-07-15 A → 2022-11-04 A (+112d) | 2022-12-19 → 2022-11-07 (-42d) | 88d → 1d |  | 74d → 5.56d |  |
| 544 | Dashboard de Solicitud de Recursos sección Solicitudes en trámite | 2022-07-15 A → 2022-11-07 A (+115d) | 2022-12-19 → 2022-11-08 (-41d) | 88d → 1d |  | 74d → 4.62d |  |
| 545 | Track | 2022-07-15 A → 2022-11-08 A (+116d) | 2022-11-15 A → 2022-11-08 A (-7d) | 88d → 1d |  |  |  |
| 546 | **Dashboard Participaciones Federales** | 2022-07-15 A → 2022-10-21 A (+98d) | 2022-12-19 → 2022-11-03 (-46d) | 112d → 8.5d |  | 74d → 7.44d |  |
| 547 | Pantalla principal | 2022-07-15 A → 2022-10-21 A (+98d) | 2022-12-19 → 2022-10-24 (-56d) | 88d → 1d |  | 74d → 14.94d |  |
| 548 | Busqueda de Mes | 2022-07-15 A → 2022-10-24 A (+101d) | 2022-12-19 → 2022-10-25 (-55d) | 88d → 1d |  | 74d → 14d |  |
| 549 | Busqueda de Año | 2022-07-15 A → 2022-10-25 A (+102d) | 2022-12-19 → 2022-10-26 (-54d) | 88d → 1d |  | 74d → 13.06d |  |
| 550 | Busqueda general | 2022-07-15 A → 2022-10-26 A (+103d) | 2022-12-19 → 2022-10-27 (-53d) | 88d → 1d |  | 74d → 12.12d |  |
| 551 | Editar | 2022-07-15 A → 2022-10-27 A (+104d) | 2022-12-19 → 2022-10-28 (-52d) | 88d → 1d |  | 74d → 11.19d |  |
| 552 | Proceso de Autorizar | 2022-07-15 A → 2022-10-28 A (+105d) | 2022-12-19 → 2022-10-31 (-49d) | 88d → 1d |  | 74d → 10.25d |  |
| 553 | Proceso de Enviar | 2022-07-15 A → 2022-10-31 A (+108d) | 2022-12-19 → 2022-11-01 (-48d) | 88d → 1d |  | 74d → 9.31d |  |
| 554 | Track | 2022-07-15 A → 2022-11-01 A (+109d) | 2022-11-15 A → 2022-11-01 A (-14d) | 88d → 1d |  |  |  |
| 555 | Ventanas emergentes de validación | 2022-07-15 A → 2022-11-02 A (+110d) | 2022-12-19 → 2022-11-03 (-46d) | 88d → 1d |  | 74d → 7.44d |  |
| 556 | **Dashboard ISN** | 2022-07-15 A → 2022-10-24 A (+101d) | 2022-12-19 → 2022-11-03 (-46d) | 112d → 7.56d |  | 74d → 7.44d |  |
| 557 | Pantalla principal | 2022-07-15 A → 2022-10-24 A (+101d) | 2022-12-19 → 2022-10-25 (-55d) | 88d → 1d |  | 74d → 14d |  |
| 558 | Busqueda de Mes | 2022-07-15 A → 2022-10-25 A (+102d) | 2022-12-19 → 2022-10-26 (-54d) | 88d → 1d |  | 74d → 13.06d |  |
| 559 | Busqueda de Año | 2022-07-15 A → 2022-10-26 A (+103d) | 2022-12-19 → 2022-10-27 (-53d) | 88d → 1d |  | 74d → 12.12d |  |
| 560 | Busqueda | 2022-07-15 A → 2022-10-27 A (+104d) | 2022-12-19 → 2022-10-28 (-52d) | 88d → 1d |  | 74d → 11.19d |  |
| 561 | Proceso de Autorización | 2022-07-15 A → 2022-10-28 A (+105d) | 2022-12-19 → 2022-10-31 (-49d) | 88d → 1d |  | 74d → 10.25d |  |
| 562 | Proceso de Envío | 2022-07-15 A → 2022-10-31 A (+108d) | 2022-12-19 → 2022-11-01 (-48d) | 88d → 1d |  | 74d → 9.31d |  |
| 563 | Track | 2022-07-15 A → 2022-11-01 A (+109d) | 2022-11-15 A → 2022-11-01 A (-14d) | 88d → 1d |  |  |  |
| 564 | Ventanas emergentes de validación | 2022-07-15 A → 2022-11-02 A (+110d) | 2022-12-19 → 2022-11-03 (-46d) | 88d → 1d |  | 74d → 7.44d |  |
| 565 | **Dashboard ICV** | 2022-07-15 A → 2022-10-25 A (+102d) | 2022-12-19 → 2022-11-04 (-45d) | 112d → 7.56d |  | 74d → 6.5d |  |

| ID | Task | Start | Finish | Duration | Total float |
| --- | --- | --- | --- | --- | --- |
| 566 | Pantalla principal | 2022-07-15 A → 2022-10-25 A (+102d) | 2022-12-19 → 2022-10-26 (-54d) | 88d → 1d | 74d → 13.06d |
| 567 | Busqueda de Mes | 2022-07-15 A → 2022-10-26 A (+103d) | 2022-12-19 → 2022-10-27 (-53d) | 88d → 1d | 74d → 12.12d |
| 568 | Busqueda de Año | 2022-07-15 A → 2022-10-27 A (+104d) | 2022-12-19 → 2022-10-28 (-52d) | 88d → 1d | 74d → 11.19d |
| 569 | Busqueda | 2022-07-15 A → 2022-10-28 A (+105d) | 2022-12-19 → 2022-10-31 (-49d) | 88d → 1d | 74d → 10.25d |
| 570 | Proceso de Autorización | 2022-07-15 A → 2022-10-31 A (+108d) | 2022-12-19 → 2022-11-01 (-48d) | 88d → 1d | 74d → 9.31d |
| 571 | Proceso de Envío | 2022-07-15 A → 2022-11-01 A (+109d) | 2022-12-19 → 2022-11-02 (-47d) | 88d → 1d | 74d → 8.38d |
| 572 | Track | 2022-07-15 A → 2022-11-02 A (+110d) | 2022-11-15 A → 2022-11-02 A (-13d) | 88d → 1d |  |
| 573 | Ventanas emergentes de validación | 2022-07-15 A → 2022-11-03 A (+111d) | 2022-12-19 → 2022-11-04 (-45d) | 88d → 1d | 74d → 6.5d |
| 574 | **Dashboard Fondos FORTAMUN** | 2022-07-15 A → 2022-10-26 A (+103d) | 2022-12-19 → 2022-11-07 (-42d) | 112d → 7.56d | 74d → 5.56d |
| 575 | Pantalla principal | 2022-07-15 A → 2022-10-26 A (+103d) | 2022-12-19 → 2022-10-27 (-53d) | 88d → 1d | 74d → 12.12d |
| 576 | Busqueda de Mes | 2022-07-15 A → 2022-10-27 A (+104d) | 2022-12-19 → 2022-10-28 (-52d) | 88d → 1d | 74d → 11.19d |
| 577 | Busqueda de Año | 2022-07-15 A → 2022-10-28 A (+105d) | 2022-12-19 → 2022-10-31 (-49d) | 88d → 1d | 74d → 10.25d |
| 578 | Busqueda | 2022-07-15 A → 2022-10-31 A (+108d) | 2022-12-19 → 2022-11-01 (-48d) | 88d → 1d | 74d → 9.31d |
| 579 | Proceso de Autorización | 2022-07-15 A → 2022-11-01 A (+109d) | 2022-12-19 → 2022-11-02 (-47d) | 88d → 1d | 74d → 8.38d |
| 580 | Proceso de Envío | 2022-07-15 A → 2022-11-02 A (+110d) | 2022-12-19 → 2022-11-03 (-46d) | 88d → 1d | 74d → 7.44d |
| 581 | Track | 2022-07-15 A → 2022-11-03 A (+111d) | 2022-11-15 A → 2022-11-03 A (-12d) | 88d → 1d |  |
| 582 | Ventanas emergentes de validación | 2022-07-15 A → 2022-11-04 A (+112d) | 2022-12-19 → 2022-11-07 (-42d) | 88d → 1d | 74d → 5.56d |
| 583 | **Dashboard Fondos FISM** | 2022-07-15 A → 2022-10-27 A (+104d) | 2022-12-19 → 2022-11-08 (-41d) | 112d → 7.56d | 74d → 4.62d |
| 584 | Pantalla principal | 2022-07-15 A → 2022-10-27 A (+104d) | 2022-12-19 → 2022-10-28 (-52d) | 88d → 1d | 74d → 11.19d |
| 585 | Busqueda de Mes | 2022-07-15 A → 2022-10-28 A (+105d) | 2022-12-19 → 2022-10-31 (-49d) | 88d → 1d | 74d → 10.25d |
| 586 | Busqueda de Año | 2022-07-15 A → 2022-10-31 A (+108d) | 2022-12-19 → 2022-11-01 (-48d) | 88d → 1d | 74d → 9.31d |
| 587 | Busqueda | 2022-07-15 A → 2022-11-01 A (+109d) | 2022-12-19 → 2022-11-02 (-47d) | 88d → 1d | 74d → 8.38d |
| 588 | Proceso de Autorización | 2022-07-15 A → 2022-11-02 A (+110d) | 2022-12-19 → 2022-11-03 (-46d) | 88d → 1d | 74d → 7.44d |
| 589 | Proceso de Envío | 2022-07-15 A → 2022-11-03 A (+111d) | 2022-12-19 → 2022-11-04 (-45d) | 88d → 1d | 74d → 6.5d |
| 590 | Track | 2022-07-15 A → 2022-11-04 A (+112d) | 2022-11-15 A → 2022-11-04 A (-11d) | 88d → 1d |  |
| 591 | Ventanas emergentes de validación | 2022-07-15 A → 2022-11-05 A (+113d) | 2022-12-19 → 2022-11-08 (-41d) | 88d → 1d | 74d → 4.62d |
| 592 | **Administración de Fondo ultra crecimiento Zona metropolitana y no Metropolitana** | 2022-07-15 A → 2022-10-28 A (+105d) | 2022-12-19 → 2022-11-16 (-33d) | 112d → 12.25d | 74d → 0d |
| 593 | Pantalla principal | 2022-07-15 A → 2022-10-28 A (+105d) | 2022-12-19 → 2022-10-31 (-49d) | 88d → 1d | 74d → 10.25d |
| 594 | Filtro mes | 2022-07-15 A → 2022-10-31 A (+108d) | 2022-12-19 → 2022-11-01 (-48d) | 88d → 1d | 74d → 9.31d |
| 595 | Filtro año | 2022-07-15 A → 2022-11-01 A (+109d) | 2022-12-19 → 2022-11-02 (-47d) | 88d → 1d | 74d → 8.38d |
| 596 | Filtro busqueda | 2022-07-15 A → 2022-11-02 A (+110d) | 2022-12-19 → 2022-11-03 (-46d) | 88d → 1d | 74d → 7.44d |
| 597 | Configuración de Dashboard | 2022-07-15 A → 2022-11-03 A (+111d) | 2022-12-19 → 2022-11-04 (-45d) | 88d → 1d | 74d → 6.5d |
| 598 | Exportación de dashboard PDF | 2022-07-15 A → 2022-11-04 A (+112d) | 2022-12-19 → 2022-11-07 (-42d) | 88d → 1d | 74d → 5.56d |
| 599 | Exportación de dashboard Excel | 2022-07-15 A → 2022-11-05 A (+113d) | 2022-12-19 → 2022-11-08 (-41d) | 88d → 1d | 74d → 4.62d |
| 600 | Paginación Dashboard | 2022-07-15 A → 2022-11-07 A (+115d) | 2022-12-19 → 2022-11-08 (-41d) | 88d → 1d | 74d → 4.62d |
| 601 | Busqueda Dash board | 2022-07-15 A → 2022-11-08 A (+116d) | 2022-12-19 → 2022-11-09 (-40d) | 88d → 1d | 74d → 3.69d |
| 602 | Ventanas emergentes de Autorizar por municipio | 2022-07-15 A → 2022-11-09 A (+117d) | 2022-12-19 → 2022-11-10 (-39d) | 88d → 1d | 74d → 2.75d |
| 603 | Ventanas emergentes de Track por municipio | 2022-07-15 A → 2022-11-10 A (+118d) | 2022-11-15 A → 2022-11-10 A (-5d) | 88d → 1d |  |
| 604 | Ventanas emergentes de detalles por municipio | 2022-07-15 A → 2022-11-11 A (+119d) | 2022-12-19 → 2022-11-14 (-35d) | 88d → 1d | 74d → 0.88d |
| 605 | Ventanas emergentes de Adjuntar oficio por municipio | 2022-07-15 A → 2022-11-14 A (+122d) | 2022-12-19 → 2022-11-15 (-34d) | 88d → 1d | 74d → -0.06d |
| 606 | Ventana repositorio de oficios por municipio | 2022-07-15 A → 2022-11-15 A (+123d) | 2022-12-19 → 2022-11-16 (-33d) | 88d → 1d | 74d → -1d |
| 607 | boton borrar oficio | 2022-07-15 A → 2022-11-15 A (+123d) | 2022-12-19 → 2022-11-16 (-33d) | 88d → 1d | 74d → -1d |
| 608 | boton configurar oficio | 2022-07-15 A → 2022-11-15 A (+123d) | 2022-12-19 → 2022-11-16 (-33d) | 88d → 1d | 74d → -1d |
| 609 | **Administración de Fondo descentralizado Zona Metropolitana y no Metropolitana** | 2022-07-15 A → 2022-10-11 A (+88d) | 2022-12-19 → 2022-11-02 (-47d) | 112d → 15.06d | 74d → 8.38d |
| 610 | Pantalla principal | 2022-07-15 A → 2022-10-11 A (+88d) | 2022-12-19 → 2022-10-12 (-68d) | 88d → 1d | 74d → 22.44d |
| 611 | Filtro mes | 2022-07-15 A → 2022-10-12 A (+89d) | 2022-12-19 → 2022-10-13 (-67d) | 88d → 1d | 74d → 21.5d |
| 612 | Filtro año | 2022-07-15 A → 2022-10-13 A (+90d) | 2022-12-19 → 2022-10-14 (-66d) | 88d → 1d | 74d → 20.56d |
| 613 | Filtro busqueda | 2022-07-15 A → 2022-10-14 A (+91d) | 2022-12-19 → 2022-10-17 (-63d) | 88d → 1d | 74d → 19.62d |
| 614 | Configuración de Dashboard | 2022-07-15 A → 2022-10-17 A (+94d) | 2022-12-19 → 2022-10-18 (-62d) | 88d → 1d | 74d → 18.69d |
| 615 | Exportación de dashboard PDF | 2022-07-15 A → 2022-10-18 A (+95d) | 2022-12-19 → 2022-10-19 (-61d) | 88d → 1d | 74d → 17.75d |
| 616 | Exportación de dashboard Excel | 2022-07-15 A → 2022-10-19 A (+96d) | 2022-12-19 → 2022-10-20 (-60d) | 88d → 1d | 74d → 16.81d |
| 617 | Paginación Dashboard | 2022-07-15 A → 2022-10-20 A (+97d) | 2022-12-19 → 2022-10-21 (-59d) | 88d → 1d | 74d → 15.88d |
| 618 | Busqueda Dash board | 2022-07-15 A → 2022-10-21 A (+98d) | 2022-12-19 → 2022-10-24 (-56d) | 88d → 1d | 74d → 14.94d |
| 619 | Ventanas emergentes de Autorizar por municipio | 2022-07-15 A → 2022-10-24 A (+101d) | 2022-12-19 → 2022-10-25 (-55d) | 88d → 1d | 74d → 14d |
| 620 | Ventanas emergentes de Track por municipio | 2022-07-15 A → 2022-10-25 A (+102d) | 2022-11-15 A → 2022-10-25 A (-21d) | 88d → 1d |  |
| 621 | Ventanas emergentes de detalles por municipio | 2022-07-15 A → 2022-10-26 A (+103d) | 2022-12-19 → 2022-10-27 (-53d) | 88d → 1d | 74d → 12.12d |
| 622 | Ventanas emergentes de Adjuntar oficio por municipio | 2022-07-15 A → 2022-10-27 A (+104d) | 2022-12-19 → 2022-10-28 (-52d) | 88d → 1d | 74d → 11.19d |
| 623 | Ventana repositorio de oficios por municipio | 2022-07-15 A → 2022-10-28 A (+105d) | 2022-12-19 → 2022-10-31 (-49d) | 88d → 1d | 74d → 10.25d |
| 624 | boton borrar oficio | 2022-07-15 A → 2022-10-31 A (+108d) | 2022-12-19 → 2022-11-01 (-48d) | 88d → 1d | 74d → 9.31d |
| 625 | boton configurar oficio | 2022-07-15 A → 2022-11-01 A (+109d) | 2022-12-19 → 2022-11-02 (-47d) | 88d → 1d | 74d → 8.38d |
| 626 | **Administración de Fondo de seguridad para municipios Metropolitanos y no Metropolitanos** | 2022-07-15 A → 2022-10-12 A (+89d) | 2022-12-19 → 2022-10-27 (-53d) | 112d → 11.25d | 74d → 11.25d |
| 627 | Pantalla principal | 2022-07-15 A → 2022-10-12 A (+89d) | 2022-12-19 → 2022-10-13 (-67d) | 88d → 1d | 74d → 21.5d |
| 628 | Filtro mes | 2022-07-15 A → 2022-10-13 A (+90d) | 2022-12-19 → 2022-10-14 (-66d) | 88d → 1d | 74d → 20.56d |
| 629 | Filtro año | 2022-07-15 A → 2022-10-14 A (+91d) | 2022-12-19 → 2022-10-17 (-63d) | 88d → 1d | 74d → 19.62d |
| 630 | Filtro busqueda | 2022-07-15 A → 2022-10-17 A (+94d) | 2022-12-19 → 2022-10-18 (-62d) | 88d → 1d | 74d → 18.69d |
| 631 | Configuración de Dashboard | 2022-07-15 A → 2022-10-18 A (+95d) | 2022-12-19 → 2022-10-19 (-61d) | 88d → 1d | 74d → 17.75d |
| 632 | Exportación de dashboard PDF | 2022-07-15 A → 2022-10-19 A (+96d) | 2022-12-19 → 2022-10-20 (-60d) | 88d → 1d | 74d → 16.81d |
| 633 | Exportación de dashboard Excel | 2022-07-15 A → 2022-10-20 A (+97d) | 2022-12-19 → 2022-10-21 (-59d) | 88d → 1d | 74d → 15.88d |
| 634 | Paginación Dashboard | 2022-07-15 A → 2022-10-21 A (+98d) | 2022-12-19 → 2022-10-24 (-56d) | 88d → 1d | 74d → 14.94d |
| 635 | Busqueda Dash board | 2022-07-15 A → 2022-10-24 A (+101d) | 2022-12-19 → 2022-10-25 (-55d) | 88d → 1d | 74d → 14d |

| ID | Task | Start | Finish | Duration | Complete | Total float | Predecessors |
| --- | --- | --- | --- | --- | --- | --- | --- |
| 636 | Ventanas emergentes de Autorizar | 2022-07-15 A → 2022-10-25 A (+102d) | 2022-12-19 → 2022-10-26 (-54d) | 88d → 1d |  | 74d → 13.06d |  |
| 637 | Ventanas emergentes de Enviar | 2022-07-15 A → 2022-10-26 A (+103d) | 2022-12-19 → 2022-10-27 (-53d) | 88d → 1d |  | 74d → 12.12d |  |
| 638 | Ventanas emergentes de Track | 2022-07-15 A → 2022-10-27 A (+104d) | 2022-11-15 A → 2022-10-27 A (-19d) | 88d → 1d |  |  |  |
| 639 | **Administración de Fondo de desarrollo municipal Metropolitanos y no Metropolitanos** | 2022-07-15 A → 2022-10-13 A (+90d) | 2022-12-19 → 2022-11-04 (-45d) | 112d → 15.06d |  | 74d → 6.5d |  |
| 640 | Pantalla principal | 2022-07-15 A → 2022-10-13 A (+90d) | 2022-12-19 → 2022-10-14 (-66d) | 88d → 1d |  | 74d → 20.56d |  |
| 641 | Filtro mes | 2022-07-15 A → 2022-10-14 A (+91d) | 2022-12-19 → 2022-10-17 (-63d) | 88d → 1d |  | 74d → 19.62d |  |
| 642 | Filtro año | 2022-07-15 A → 2022-10-17 A (+94d) | 2022-12-19 → 2022-10-18 (-62d) | 88d → 1d |  | 74d → 18.69d |  |
| 643 | Filtro busqueda | 2022-07-15 A → 2022-10-18 A (+95d) | 2022-12-19 → 2022-10-19 (-61d) | 88d → 1d |  | 74d → 17.75d |  |
| 644 | Configuración de Dashboard | 2022-07-15 A → 2022-10-19 A (+96d) | 2022-12-19 → 2022-10-20 (-60d) | 88d → 1d |  | 74d → 16.81d |  |
| 645 | Exportación de dashboard PDF | 2022-07-15 A → 2022-10-20 A (+97d) | 2022-12-19 → 2022-10-21 (-59d) | 88d → 1d |  | 74d → 15.88d |  |
| 646 | Exportación de dashboard Excel | 2022-07-15 A → 2022-10-21 A (+98d) | 2022-12-19 → 2022-10-24 (-56d) | 88d → 1d |  | 74d → 14.94d |  |
| 647 | Paginación Dashboard | 2022-07-15 A → 2022-10-24 A (+101d) | 2022-12-19 → 2022-10-25 (-55d) | 88d → 1d |  | 74d → 14d |  |
| 648 | Busqueda Dash board | 2022-07-15 A → 2022-10-25 A (+102d) | 2022-12-19 → 2022-10-26 (-54d) | 88d → 1d |  | 74d → 13.06d |  |
| 649 | Ventanas emergentes de Autorizar | 2022-07-15 A → 2022-10-26 A (+103d) | 2022-12-19 → 2022-10-27 (-53d) | 88d → 1d |  | 74d → 12.12d |  |
| 650 | Ventanas emergentes de Enviar | 2022-07-15 A → 2022-10-27 A (+104d) | 2022-12-19 → 2022-10-28 (-52d) | 88d → 1d |  | 74d → 11.19d |  |
| 651 | Ventanas emergentes de Track | 2022-07-15 A → 2022-10-28 A (+105d) | 2022-11-15 A → 2022-10-28 A (-18d) | 88d → 1d |  |  |  |
| 652 | Módulo contacto con municipios | 2022-07-15 A → 2022-10-31 A (+108d) | 2022-12-19 → 2022-11-01 (-48d) | 88d → 1d |  | 74d → 9.31d |  |
| 653 | Generador de reportes | 2022-07-15 A → 2022-11-01 A (+109d) | 2022-12-19 → 2022-11-02 (-47d) | 88d → 1d |  | 74d → 8.38d |  |
| 654 | Generador de Estadísticas | 2022-07-15 A → 2022-11-02 A (+110d) | 2022-12-19 → 2022-11-03 (-46d) | 88d → 1d |  | 74d → 7.44d |  |
| 655 | Dashboard Calendario | 2022-07-15 A → 2022-11-03 A (+111d) | 2022-12-19 → 2022-11-04 (-45d) | 88d → 1d |  | 74d → 6.5d |  |
| 656 | **sprint 7** | 2022-08-18 → 2022-11-15 A (+89d) | 2022-09-19 → 2022-11-23 (+65d) | 23d → 4.75d | 0% → 17% | none → 15.81d | none → 459 |
| 657 | **Módulo DCCP** |  | 2022-12-15 → 2022-11-23 (-22d) | 23d → 4.75d | 0% → 17% | 76d → 15.81d |  |
| 658 | **Dashboard Perfil DCCP** |  | 2022-12-15 → 2022-11-23 (-22d) | 23d → 4.75d | 0% → 17% | 76d → 15.81d |  |
| 659 | Bloqueo de Sesión |  | 2022-12-15 → 2022-11-17 (-28d) | 23d → 1d |  | 76d → 18.56d |  |
| 660 | Perfil | 2022-11-15 A → 2022-11-16 A (+1d) | 2022-12-15 → 2022-11-17 (-28d) | 23d → 1d |  | 76d → 18.56d |  |
| 661 | Pop up Notificaciones | 2022-11-15 A → 2022-11-17 A (+2d) | 2022-12-15 → 2022-11-18 (-27d) | 23d → 1d |  | 76d → 17.69d |  |
| 662 | Contador de Notificaciones (Icono campanita) | 2022-11-15 A → 2022-11-18 A (+3d) | 2022-12-15 → 2022-11-18 A (-27d) | 23d → 1d | 0% → 100% | 76d → none |  |
| 663 | Bandeja entrada de Notificaciones | 2022-11-15 A → 2022-11-21 A (+6d) | 2022-12-15 → 2022-11-23 (-22d) | 23d → 1d |  | 76d → 15.81d |  |
| 664 | Configuración de Consulta | 2022-11-15 A → 2022-11-22 A (+7d) | 2022-12-15 → 2022-11-23 (-22d) | 23d → 1d |  | 76d → 15.81d |  |
| 665 | **sprint 8** | 2022-08-18 → 2022-11-15 A (+89d) | 2022-09-19 → 2022-11-23 (+65d) | 23d → 4.75d | 0% → 14% | none → 15.81d | none → 459 |
| 666 | **Módulo DAF** |  | 2022-12-15 → 2022-11-23 (-22d) | 23d → 4.75d | 0% → 14% | 76d → 15.81d |  |
| 667 | **Dashboard Perfil DAF** |  | 2022-12-15 → 2022-11-23 (-22d) | 23d → 4.75d | 0% → 14% | 76d → 15.81d |  |
| 668 | Pantalla Perfil | 2022-11-15 A → 2022-11-16 A (+1d) | 2022-12-15 → 2022-11-17 (-28d) | 23d → 1d |  | 76d → 18.56d |  |
| 669 | Pop up Notificaciones | 2022-11-15 A → 2022-11-17 A (+2d) | 2022-12-15 → 2022-11-18 (-27d) | 23d → 1d |  | 76d → 17.69d |  |
| 670 | Contador de Notificaciones (Icono campanita) | 2022-11-15 A → 2022-11-18 A (+3d) | 2022-12-15 → 2022-11-18 A (-27d) | 23d → 1d | 0% → 100% | 76d → none |  |
| 671 | Bandeja entrada de Notificaciones | 2022-11-15 A → 2022-11-19 A (+4d) | 2022-12-15 → 2022-11-23 (-22d) | 23d → 1d |  | 76d → 15.81d |  |
| 672 | Carga de Speis |  | 2022-12-15 → 2022-11-17 (-28d) | 23d → 1d |  | 76d → 18.56d |  |
| 673 | Generación de Estadísticas |  | 2022-12-15 → 2022-11-17 (-28d) | 23d → 1d |  | 76d → 18.56d |  |
| 674 | Generacion de graficas |  | 2022-12-15 → 2022-11-17 (-28d) | 23d → 1d |  | 76d → 18.56d |  |
| 675 | **sprint 9** | 2022-08-18 → 2022-11-17 A (+91d) | 2022-09-19 → 2022-11-28 (+70d) | 23d → 5.69d | 0% → 17% | none → 13d | none → 459 |
| 676 | **Módulo DPCP** | 2022-11-15 A → 2022-11-17 A (+2d) | 2022-12-15 → 2022-11-28 (-17d) | 23d → 5.69d | 0% → 17% | 76d → 13d |  |
| 677 | **Dashboard Perfil DPCP** | 2022-11-15 A → 2022-11-17 A (+2d) | 2022-12-15 → 2022-11-28 (-17d) | 23d → 5.69d | 0% → 17% | 76d → 13d |  |
| 678 | Pantalla Perfil | 2022-11-15 A → 2022-11-17 A (+2d) | 2022-12-15 → 2022-11-18 (-27d) | 23d → 1d |  | 76d → 17.69d |  |
| 679 | Pop up Notificaciones | 2022-11-15 A → 2022-11-18 A (+3d) | 2022-12-15 → 2022-11-22 (-23d) | 23d → 1d |  | 76d → 16.75d |  |
| 680 | Contador de Notificaciones (Icono campanita) | 2022-11-15 A → 2022-11-21 A (+6d) | 2022-12-15 → 2022-11-23 A (-22d) | 23d → 1.19d | 0% → 100% | 76d → none |  |
| 681 | Bandeja entrada de Notificaciones | 2022-11-15 A → 2022-11-22 A (+7d) | 2022-12-15 → 2022-11-23 (-22d) | 23d → 1d |  | 76d → 15.81d |  |
| 682 | Asignación de Presupuesto | 2022-11-15 A → 2022-11-23 A (+8d) | 2022-12-15 → 2022-11-24 (-21d) | 23d → 1d |  | 76d → 14.88d |  |
| 683 | Generación de Estadísticas | 2022-11-15 A → 2022-11-24 A (+9d) | 2022-12-15 → 2022-11-25 (-20d) | 23d → 1d |  | 76d → 13.94d |  |
| 684 | Generación de graficas | 2022-11-15 A → 2022-11-25 A (+10d) | 2022-12-15 → 2022-11-28 (-17d) | 23d → 1d |  | 76d → 13d |  |
| 685 | **sprint 10** | 2022-08-18 → 2022-11-15 A (+89d) | 2022-09-19 → 2022-12-15 (+87d) | 23d → 19.75d |  | none → 0.81d | none → 459 |
| 686 | **Módulo Municipios** |  |  | 23d → 19.75d |  | 76d → 0.81d |  |
| 687 | **Base** | 2022-11-15 A → 2022-11-18 A (+3d) | 2022-12-15 → 2022-11-25 (-20d) | 23d → 3.81d | 40% → 44% | 76d → 13.94d |  |
| 688 | Buzon | 2022-11-15 A → 2022-11-18 A (+3d) | 2022-12-15 → 2022-11-22 (-23d) | 23d → 1d |  | 76d → 16.75d |  |
| 689 | Login | 2022-11-15 A → 2022-11-21 A (+6d) | 2022-12-15 A → 2022-11-22 A (-23d) | 23d → 1.19d |  |  |  |
| 690 | Logout | 2022-11-15 A → 2022-11-22 A (+7d) | 2022-12-15 A → 2022-11-23 A (-22d) | 23d → 1.19d |  |  |  |
| 691 | Bloqueo de Sesión | 2022-11-15 A → 2022-11-23 A (+8d) | 2022-12-15 → 2022-11-24 (-21d) | 23d → 1d |  | 76d → 14.88d |  |
| 692 | Perfil | 2022-11-15 A → 2022-11-24 A (+9d) | 2022-12-15 → 2022-11-25 (-20d) | 23d → 1d |  | 76d → 13.94d |  |
| 693 | **Dashboard Inicio** | 2022-11-15 A → 2022-11-28 A (+13d) | 2022-12-15 → 2022-12-05 (-10d) | 23d → 4.75d |  | 76d → 8.31d |  |
| 694 | Pantalla Principal | 2022-11-15 A → 2022-11-28 A (+13d) | 2022-12-15 → 2022-11-29 (-16d) | 23d → 1d |  | 76d → 12.06d |  |
| 695 | Configuración de Dashboard | 2022-11-15 A → 2022-11-29 A (+14d) | 2022-12-15 → 2022-11-30 (-15d) | 23d → 1d |  | 76d → 11.12d |  |
| 696 | Ventanas emergentes de validación | 2022-11-15 A → 2022-11-30 A (+15d) | 2022-12-15 → 2022-12-01 (-14d) | 23d → 1d |  | 76d → 10.19d |  |
| 697 | Ruleta imágenes | 2022-11-15 A → 2022-12-01 A (+16d) | 2022-12-15 → 2022-12-02 (-13d) | 23d → 1d |  | 76d → 9.25d |  |
| 698 | Mensaje de Bienvenida | 2022-11-15 A → 2022-12-02 A (+17d) | 2022-12-15 → 2022-12-05 (-10d) | 23d → 1d |  | 76d → 8.31d |  |
| 699 | **Mis Cuentas** |  |  | 23d → 19.75d |  | 76d → 0.81d |  |
| 700 | Pantalla Principal | 2022-11-15 A → 2022-12-06 A (+21d) | 2022-12-15 → 2022-12-07 (-8d) | 23d → 1d |  | 76d → 6.44d |  |
| 701 | Agregar | 2022-11-15 A → 2022-12-07 A (+22d) | 2022-12-15 → 2022-12-08 (-7d) | 23d → 1d |  | 76d → 5.5d |  |
| 702 | Editar | 2022-11-15 A → 2022-12-08 A (+23d) | 2022-12-15 → 2022-12-09 (-6d) | 23d → 1d |  | 76d → 4.56d |  |
| 703 | Eliminar | 2022-11-15 A → 2022-12-09 A (+24d) | 2022-12-15 → 2022-12-12 (-3d) | 23d → 1d |  | 76d → 3.62d |  |
| 704 | Configuración de Dashboard | 2022-11-15 A → 2022-12-12 A (+27d) | 2022-12-15 → 2022-12-13 (-2d) | 23d → 1d |  | 76d → 2.69d |  |
| 705 | Exportación de dashboard PDF | 2022-11-15 A → 2022-12-13 A (+28d) | 2022-12-15 → 2022-12-14 (-1d) | 23d → 1d |  | 76d → 1.75d |  |

| ID | Task | Start | Finish | Duration | Complete | Total float | Predecessors |
| --- | --- | --- | --- | --- | --- | --- | --- |
| 706 | Exportación de dashboard Excel | 2022-11-15 A → 2022-12-14 A (+29d) |  | 23d → 1d |  | 76d → 0.81d |  |
| 707 | Paginación Dashboard |  | 2022-12-15 → 2022-11-17 (-28d) | 23d → 1d |  | 76d → 18.56d |  |
| 708 | Busqueda Dash board | 2022-11-15 A → 2022-11-16 A (+1d) | 2022-12-15 → 2022-11-17 (-28d) | 23d → 1d |  | 76d → 18.56d |  |
| 709 | Ventanas emergentes de validación | 2022-11-15 A → 2022-11-17 A (+2d) | 2022-12-15 → 2022-11-18 (-27d) | 23d → 1d |  | 76d → 17.69d |  |
| 710 | **Solicitud de Recursos** | 2022-11-15 A → 2022-11-21 A (+6d) | 2022-12-15 → 2022-12-06 (-9d) | 23d → 9.44d |  | 76d → 7.38d |  |
| 711 | Pantalla Principal | 2022-11-15 A → 2022-11-21 A (+6d) | 2022-12-15 → 2022-11-23 (-22d) | 23d → 1d |  | 76d → 15.81d |  |
| 712 | Agregar | 2022-11-15 A → 2022-11-22 A (+7d) | 2022-12-15 → 2022-11-23 (-22d) | 23d → 1d |  | 76d → 15.81d |  |
| 713 | Editar | 2022-11-15 A → 2022-11-23 A (+8d) | 2022-12-15 → 2022-11-24 (-21d) | 23d → 1d |  | 76d → 14.88d |  |
| 714 | Eliminar | 2022-11-15 A → 2022-11-24 A (+9d) | 2022-12-15 → 2022-11-25 (-20d) | 23d → 1d |  | 76d → 13.94d |  |
| 715 | Configuración de Dashboard | 2022-11-15 A → 2022-11-25 A (+10d) | 2022-12-15 → 2022-11-28 (-17d) | 23d → 1d |  | 76d → 13d |  |
| 716 | Exportación de dashboard PDF | 2022-11-15 A → 2022-11-28 A (+13d) | 2022-12-15 → 2022-11-29 (-16d) | 23d → 1d |  | 76d → 12.06d |  |
| 717 | Exportación de dashboard Excel | 2022-11-15 A → 2022-11-29 A (+14d) | 2022-12-15 → 2022-11-30 (-15d) | 23d → 1d |  | 76d → 11.12d |  |
| 718 | Paginación Dashboard | 2022-11-15 A → 2022-11-30 A (+15d) | 2022-12-15 → 2022-12-01 (-14d) | 23d → 1d |  | 76d → 10.19d |  |
| 719 | Busqueda Dash board | 2022-11-15 A → 2022-12-01 A (+16d) | 2022-12-15 → 2022-12-02 (-13d) | 23d → 1d |  | 76d → 9.25d |  |
| 720 | Ventanas emergentes de validación | 2022-11-15 A → 2022-12-02 A (+17d) | 2022-12-15 → 2022-12-05 (-10d) | 23d → 1d |  | 76d → 8.31d |  |
| 721 | Boton Detalles | 2022-11-15 A → 2022-12-05 A (+20d) | 2022-12-15 → 2022-12-06 (-9d) | 23d → 1d |  | 76d → 7.38d |  |
| 722 | **Dashboard Ayuda** | 2022-11-15 A → 2022-12-07 A (+22d) | 2022-12-15 → 2022-12-09 (-6d) | 23d → 1.94d |  | 76d → 4.56d |  |
| 723 | Pantalla principal | 2022-11-15 A → 2022-12-07 A (+22d) | 2022-12-15 → 2022-12-08 (-7d) | 23d → 1d |  | 76d → 5.5d |  |
| 724 | Configuracion de Enlaces | 2022-11-15 A → 2022-12-08 A (+23d) | 2022-12-15 → 2022-12-09 (-6d) | 23d → 1d |  | 76d → 4.56d |  |
| 725 | **Recepcion de Recursos Participaciones Federales** |  |  | 23d → 19.75d |  | 76d → 0.81d |  |
| 726 | Pantalla Principal | 2022-11-15 A → 2022-12-12 A (+27d) | 2022-12-15 → 2022-12-13 (-2d) | 23d → 1d |  | 76d → 2.69d |  |
| 727 | Agregar | 2022-11-15 A → 2022-12-13 A (+28d) | 2022-12-15 → 2022-12-14 (-1d) | 23d → 1d |  | 76d → 1.75d |  |
| 728 | Editar | 2022-11-15 A → 2022-12-14 A (+29d) |  | 23d → 1d |  | 76d → 0.81d |  |
| 729 | Eliminar |  | 2022-12-15 → 2022-11-17 (-28d) | 23d → 1d |  | 76d → 18.56d |  |
| 730 | Configuración de Dashboard | 2022-11-15 A → 2022-11-16 A (+1d) | 2022-12-15 → 2022-11-17 (-28d) | 23d → 1d |  | 76d → 18.56d |  |
| 731 | Exportación de dashboard PDF | 2022-11-15 A → 2022-11-17 A (+2d) | 2022-12-15 → 2022-11-18 (-27d) | 23d → 1d |  | 76d → 17.69d |  |
| 732 | Exportación de dashboard Excel | 2022-11-15 A → 2022-11-18 A (+3d) | 2022-12-15 → 2022-11-22 (-23d) | 23d → 1d |  | 76d → 16.75d |  |
| 733 | Paginación Dashboard | 2022-11-15 A → 2022-11-21 A (+6d) | 2022-12-15 → 2022-11-23 (-22d) | 23d → 1d |  | 76d → 15.81d |  |
| 734 | Busqueda Dash board | 2022-11-15 A → 2022-11-22 A (+7d) | 2022-12-15 → 2022-11-23 (-22d) | 23d → 1d |  | 76d → 15.81d |  |
| 735 | Ventanas emergentes de validación | 2022-11-15 A → 2022-11-23 A (+8d) | 2022-12-15 → 2022-11-24 (-21d) | 23d → 1d |  | 76d → 14.88d |  |
| 736 | **Recepcion de Recursos Participaciones Estatales** | 2022-11-15 A → 2022-11-25 A (+10d) | 2022-12-15 → 2022-12-09 (-6d) | 23d → 9.44d |  | 76d → 4.56d |  |
| 737 | Pantalla Principal | 2022-11-15 A → 2022-11-25 A (+10d) | 2022-12-15 → 2022-11-28 (-17d) | 23d → 1d |  | 76d → 13d |  |
| 738 | Agregar | 2022-11-15 A → 2022-11-28 A (+13d) | 2022-12-15 → 2022-11-29 (-16d) | 23d → 1d |  | 76d → 12.06d |  |
| 739 | Editar | 2022-11-15 A → 2022-11-29 A (+14d) | 2022-12-15 → 2022-11-30 (-15d) | 23d → 1d |  | 76d → 11.12d |  |
| 740 | Eliminar | 2022-11-15 A → 2022-11-30 A (+15d) | 2022-12-15 → 2022-12-01 (-14d) | 23d → 1d |  | 76d → 10.19d |  |
| 741 | Configuración de Dashboard | 2022-11-15 A → 2022-12-01 A (+16d) | 2022-12-15 → 2022-12-02 (-13d) | 23d → 1d |  | 76d → 9.25d |  |
| 742 | Exportación de dashboard PDF | 2022-11-15 A → 2022-12-02 A (+17d) | 2022-12-15 → 2022-12-05 (-10d) | 23d → 1d |  | 76d → 8.31d |  |
| 743 | Exportación de dashboard Excel | 2022-11-15 A → 2022-12-05 A (+20d) | 2022-12-15 → 2022-12-06 (-9d) | 23d → 1d |  | 76d → 7.38d |  |
| 744 | Paginación Dashboard | 2022-11-15 A → 2022-12-06 A (+21d) | 2022-12-15 → 2022-12-07 (-8d) | 23d → 1d |  | 76d → 6.44d |  |
| 745 | Busqueda Dash board | 2022-11-15 A → 2022-12-07 A (+22d) | 2022-12-15 → 2022-12-08 (-7d) | 23d → 1d |  | 76d → 5.5d |  |
| 746 | Ventanas emergentes de validación | 2022-11-15 A → 2022-12-08 A (+23d) | 2022-12-15 → 2022-12-09 (-6d) | 23d → 1d |  | 76d → 4.56d |  |
| 747 | **Recepcion de Recursos Aportaciones Federales** |  |  | 23d → 19.75d |  | 76d → 0.81d |  |
| 748 | Pantalla Principal | 2022-11-15 A → 2022-12-12 A (+27d) | 2022-12-15 → 2022-12-13 (-2d) | 23d → 1d |  | 76d → 2.69d |  |
| 749 | Agregar | 2022-11-15 A → 2022-12-13 A (+28d) | 2022-12-15 → 2022-12-14 (-1d) | 23d → 1d |  | 76d → 1.75d |  |
| 750 | Editar | 2022-11-15 A → 2022-12-14 A (+29d) |  | 23d → 1d |  | 76d → 0.81d |  |
| 751 | Eliminar |  | 2022-12-15 → 2022-11-17 (-28d) | 23d → 1d |  | 76d → 18.56d |  |
| 752 | Configuración de Dashboard | 2022-11-15 A → 2022-11-16 A (+1d) | 2022-12-15 → 2022-11-17 (-28d) | 23d → 1d |  | 76d → 18.56d |  |
| 753 | Exportación de dashboard PDF | 2022-11-15 A → 2022-11-17 A (+2d) | 2022-12-15 → 2022-11-18 (-27d) | 23d → 1d |  | 76d → 17.69d |  |
| 754 | Exportación de dashboard Excel | 2022-11-15 A → 2022-11-18 A (+3d) | 2022-12-15 → 2022-11-22 (-23d) | 23d → 1d |  | 76d → 16.75d |  |
| 755 | Paginación Dashboard | 2022-11-15 A → 2022-11-21 A (+6d) | 2022-12-15 → 2022-11-23 (-22d) | 23d → 1d |  | 76d → 15.81d |  |
| 756 | Busqueda Dash board | 2022-11-15 A → 2022-11-22 A (+7d) | 2022-12-15 → 2022-11-23 (-22d) | 23d → 1d |  | 76d → 15.81d |  |
| 757 | Ventanas emergentes de validación | 2022-11-15 A → 2022-11-23 A (+8d) | 2022-12-15 → 2022-11-24 (-21d) | 23d → 1d |  | 76d → 14.88d |  |
| 758 | **Recepcion de Recursos Aportaciones Estatales** | 2022-11-15 A → 2022-11-24 (+9d) | 2022-12-15 → 2022-11-30 (-15d) | 23d → 3.81d |  | 76d → none |  |
| 759 | Pantalla Principal | 2022-11-15 A → 2022-11-25 A (+10d) | 2022-12-15 → 2022-11-28 (-17d) | 23d → 1d |  | 76d → 13d |  |
| 760 | Agregar | 2022-11-15 A → 2022-11-25 A (+10d) | 2022-12-15 → 2022-11-28 (-17d) | 23d → 1d |  | 76d → 13d |  |
| 761 | Editar | 2022-11-15 A → 2022-11-28 A (+13d) | 2022-12-15 → 2022-11-29 (-16d) | 23d → 1d |  | 76d → 12.06d |  |
| 762 | Eliminar | 2022-11-15 A → 2022-11-29 A (+14d) | 2022-12-15 → 2022-11-30 (-15d) | 23d → 1d |  | 76d → 11.12d |  |
| 763 | Configuración de Dashboard | 2022-11-15 A → 2022-11-30 A (+15d) | 2022-12-15 → 2022-12-01 (-14d) | 23d → 1d |  | 76d → 10.19d |  |
| 764 | Exportación de dashboard PDF | 2022-11-15 A → 2022-12-01 A (+16d) | 2022-12-15 → 2022-12-02 (-13d) | 23d → 1d |  | 76d → 9.25d |  |
| 765 | Exportación de dashboard Excel | 2022-11-15 A → 2022-12-02 A (+17d) | 2022-12-15 → 2022-12-05 (-10d) | 23d → 1d |  | 76d → 8.31d |  |
| 766 | Paginación Dashboard | 2022-11-15 A → 2022-12-05 A (+20d) | 2022-12-15 → 2022-12-06 (-9d) | 23d → 1d |  | 76d → 7.38d |  |
| 767 | Busqueda Dash board | 2022-11-15 A → 2022-12-06 A (+21d) | 2022-12-15 → 2022-12-07 (-8d) | 23d → 1d |  | 76d → 6.44d |  |
| 768 | Ventanas emergentes de validación | 2022-11-15 A → 2022-12-07 A (+22d) | 2022-12-15 → 2022-12-08 (-7d) | 23d → 1d |  | 76d → 5.5d |  |
| 769 | **sprint 11** |  |  | 23d → 19.75d | 0% → 3% | 76d → 0.81d | none → 459 |
| 770 | **Módulo OPD** |  |  | 23d → 19.75d | 0% → 3% | 76d → 0.81d |  |
| 771 | **Base** |  | 2022-12-15 → 2022-11-22 (-23d) | 23d → 3.88d | 0% → 42% | 76d → 16.69d |  |
| 772 | Perfil |  | 2022-12-15 → 2022-11-17 (-28d) | 23d → 1d |  | 76d → 18.56d |  |
| 773 | Pop up Notificaciones | 2022-11-15 A → 2022-11-16 A (+1d) | 2022-12-15 → 2022-11-17 (-28d) | 23d → 1d |  | 76d → 18.56d |  |
| 774 | Contador de Notificaciones (Icono campanita) | 2022-11-15 A → 2022-11-17 A (+2d) | 2022-12-15 → 2022-11-22 A (-23d) | 23d → 2.19d | 0% → 100% | 76d → none |  |
| 775 | Bandeja entrada de Notificaciones | 2022-11-15 A → 2022-11-18 A (+3d) | 2022-12-15 → 2022-11-22 (-23d) | 23d → 1d |  | 76d → 16.75d |  |

| ID | Task | Start | Finish | Duration | Total float |
| --- | --- | --- | --- | --- | --- |
| 776 | **Dashboard mis cuentas** | 2022-11-15 A → 2022-11-22 A (+7d) | 2022-12-15 → 2022-12-06 (-9d) | 23d → 9.44d | 76d → 7.38d |
| 777 | Pantalla Principal | 2022-11-15 A → 2022-11-22 A (+7d) | 2022-12-15 → 2022-11-23 (-22d) | 23d → 1d | 76d → 15.81d |
| 778 | Configuración de Dashboard | 2022-11-15 A → 2022-11-23 A (+8d) | 2022-12-15 → 2022-11-24 (-21d) | 23d → 1d | 76d → 14.88d |
| 779 | Exportación de dashboard PDF | 2022-11-15 A → 2022-11-24 A (+9d) | 2022-12-15 → 2022-11-25 (-20d) | 23d → 1d | 76d → 13.94d |
| 780 | Exportación de dashboard Excel | 2022-11-15 A → 2022-11-25 A (+10d) | 2022-12-15 → 2022-11-28 (-17d) | 23d → 1d | 76d → 13d |
| 781 | Paginación Dashboard | 2022-11-15 A → 2022-11-28 A (+13d) | 2022-12-15 → 2022-11-29 (-16d) | 23d → 1d | 76d → 12.06d |
| 782 | Busqueda Dashboard | 2022-11-15 A → 2022-11-29 A (+14d) | 2022-12-15 → 2022-11-30 (-15d) | 23d → 1d | 76d → 11.12d |
| 783 | Agregar | 2022-11-15 A → 2022-11-30 A (+15d) | 2022-12-15 → 2022-12-01 (-14d) | 23d → 1d | 76d → 10.19d |
| 784 | Editar | 2022-11-15 A → 2022-12-01 A (+16d) | 2022-12-15 → 2022-12-02 (-13d) | 23d → 1d | 76d → 9.25d |
| 785 | Eliminar | 2022-11-15 A → 2022-12-02 A (+17d) | 2022-12-15 → 2022-12-05 (-10d) | 23d → 1d | 76d → 8.31d |
| 786 | Ventanas emergentes de validación | 2022-11-15 A → 2022-12-05 A (+20d) | 2022-12-15 → 2022-12-06 (-9d) | 23d → 1d | 76d → 7.38d |
| 787 | **Dashboard Facturación** |  |  | 23d → 19.75d | 76d → 0.81d |
| 788 | Pantalla Principal | 2022-11-15 A → 2022-12-06 A (+21d) | 2022-12-15 → 2022-12-07 (-8d) | 23d → 1d | 76d → 6.44d |
| 789 | Configuración de Dashboard | 2022-11-15 A → 2022-12-07 A (+22d) | 2022-12-15 → 2022-12-08 (-7d) | 23d → 1d | 76d → 5.5d |
| 790 | Exportación de dashboard PDF | 2022-11-15 A → 2022-12-08 A (+23d) | 2022-12-15 → 2022-12-09 (-6d) | 23d → 1d | 76d → 4.56d |
| 791 | Exportación de dashboard Excel | 2022-11-15 A → 2022-12-09 A (+24d) | 2022-12-15 → 2022-12-12 (-3d) | 23d → 1d | 76d → 3.62d |
| 792 | Paginación Dashboard | 2022-11-15 A → 2022-12-12 A (+27d) | 2022-12-15 → 2022-12-13 (-2d) | 23d → 1d | 76d → 2.69d |
| 793 | Busqueda Dashboard | 2022-11-15 A → 2022-12-13 A (+28d) | 2022-12-15 → 2022-12-14 (-1d) | 23d → 1d | 76d → 1.75d |
| 794 | Ventanas de visualización de detalle | 2022-11-15 A → 2022-12-14 A (+29d) |  | 23d → 1d | 76d → 0.81d |
| 795 | Busqueda por Año |  | 2022-12-15 → 2022-11-17 (-28d) | 23d → 1d | 76d → 18.56d |
| 796 | **Dashboard Solicitud de recursos** | 2022-11-15 A → 2022-11-16 A (+1d) | 2022-12-15 → 2022-11-23 (-22d) | 23d → 3.81d | 76d → 15.81d |
| 797 | Pantalla Principal | 2022-11-15 A → 2022-11-16 A (+1d) | 2022-12-15 → 2022-11-17 (-28d) | 23d → 1d | 76d → 18.56d |
| 798 | Configuración de Dashboard | 2022-11-15 A → 2022-11-17 A (+2d) | 2022-12-15 → 2022-11-18 (-27d) | 23d → 1d | 76d → 17.69d |
| 799 | Exportación de dashboard PDF | 2022-11-15 A → 2022-11-18 A (+3d) | 2022-12-15 → 2022-11-22 (-23d) | 23d → 1d | 76d → 16.75d |
| 800 | Exportación de dashboard Excel | 2022-11-15 A → 2022-11-21 A (+6d) | 2022-12-15 → 2022-11-23 (-22d) | 23d → 1d | 76d → 15.81d |
| 801 | Paginación Dashboard | 2022-11-15 A → 2022-11-22 A (+7d) | 2022-12-15 → 2022-11-23 (-22d) | 23d → 1d | 76d → 15.81d |
| 802 | **Busqueda Dashboard** | 2022-11-15 A → 2022-11-23 A (+8d) | 2022-12-15 → 2022-12-05 (-10d) | 23d → 7.56d | 76d → 8.31d |
| 803 | Pantalla Principal | 2022-11-15 A → 2022-11-23 A (+8d) | 2022-12-15 → 2022-11-24 (-21d) | 23d → 1d | 76d → 14.88d |
| 804 | Agregar | 2022-11-15 A → 2022-11-24 A (+9d) | 2022-12-15 → 2022-11-25 (-20d) | 23d → 1d | 76d → 13.94d |
| 805 | Editar | 2022-11-15 A → 2022-11-25 A (+10d) | 2022-12-15 → 2022-11-28 (-17d) | 23d → 1d | 76d → 13d |
| 806 | Eliminar | 2022-11-15 A → 2022-11-28 A (+13d) | 2022-12-15 → 2022-11-29 (-16d) | 23d → 1d | 76d → 12.06d |
| 807 | Ventanas emergentes de validación | 2022-11-15 A → 2022-11-29 A (+14d) | 2022-12-15 → 2022-11-30 (-15d) | 23d → 1d | 76d → 11.12d |
| 808 | Busqueda por Año | 2022-11-15 A → 2022-11-30 A (+15d) | 2022-12-15 → 2022-12-01 (-14d) | 23d → 1d | 76d → 10.19d |
| 809 | Carga de documentos | 2022-11-15 A → 2022-12-01 A (+16d) | 2022-12-15 → 2022-12-02 (-13d) | 23d → 1d | 76d → 9.25d |
| 810 | PDF generado por la solicitud de recursos | 2022-11-15 A → 2022-12-02 A (+17d) | 2022-12-15 → 2022-12-05 (-10d) | 23d → 1d | 76d → 8.31d |
| 811 | **Dashboard menu preguntas frecuentes** | 2022-11-15 A → 2022-12-05 A (+20d) | 2022-12-15 → 2022-12-07 (-8d) | 23d → 1.94d | 76d → 6.44d |
| 812 | Pantalla Principal | 2022-11-15 A → 2022-12-05 A (+20d) | 2022-12-15 → 2022-12-06 (-9d) | 23d → 1d | 76d → 7.38d |
| 813 | Configuracion de dashboard | 2022-11-15 A → 2022-12-06 A (+21d) | 2022-12-15 → 2022-12-07 (-8d) | 23d → 1d | 76d → 6.44d |
| 814 | **Dashboard Recepción de recursos** |  |  | 23d → 19.75d | 76d → 0.81d |
| 815 | Pantalla Principal | 2022-11-15 A → 2022-12-08 A (+23d) | 2022-12-15 → 2022-12-09 (-6d) | 23d → 1d | 76d → 4.56d |
| 816 | Configuracion de dashboard | 2022-11-15 A → 2022-12-09 A (+24d) | 2022-12-15 → 2022-12-12 (-3d) | 23d → 1d | 76d → 3.62d |
| 817 | Exportación de dashboard PDF | 2022-11-15 A → 2022-12-12 A (+27d) | 2022-12-15 → 2022-12-13 (-2d) | 23d → 1d | 76d → 2.69d |
| 818 | Exportación de dashboard Excel | 2022-11-15 A → 2022-12-13 A (+28d) | 2022-12-15 → 2022-12-14 (-1d) | 23d → 1d | 76d → 1.75d |
| 819 | Paginación Dashboard | 2022-11-15 A → 2022-12-14 A (+29d) |  | 23d → 1d | 76d → 0.81d |
| 820 | Busqueda Dashboard |  | 2022-12-15 → 2022-11-17 (-28d) | 23d → 1d | 76d → 18.56d |
| 821 | Subida de Archivo | 2022-11-15 A → 2022-11-16 A (+1d) | 2022-12-15 → 2022-11-17 (-28d) | 23d → 1d | 76d → 18.56d |
| 822 | **Dashboard Recepción de recursos sección participaciones estatales** | 2022-11-15 A → 2022-11-17 A (+2d) | 2022-12-15 → 2022-11-28 (-17d) | 23d → 5.69d | 76d → 13d |
| 823 | Pantalla Principal | 2022-11-15 A → 2022-11-17 A (+2d) | 2022-12-15 → 2022-11-18 (-27d) | 23d → 1d | 76d → 17.69d |
| 824 | Configuracion de dashboard | 2022-11-15 A → 2022-11-18 A (+3d) | 2022-12-15 → 2022-11-22 (-23d) | 23d → 1d | 76d → 16.75d |
| 825 | Exportación de dashboard PDF | 2022-11-15 A → 2022-11-21 A (+6d) | 2022-12-15 → 2022-11-23 (-22d) | 23d → 1d | 76d → 15.81d |
| 826 | Exportación de dashboard Excel | 2022-11-15 A → 2022-11-22 A (+7d) | 2022-12-15 → 2022-11-23 (-22d) | 23d → 1d | 76d → 15.81d |
| 827 | Paginación Dashboard | 2022-11-15 A → 2022-11-23 A (+8d) | 2022-12-15 → 2022-11-24 (-21d) | 23d → 1d | 76d → 14.88d |
| 828 | Busqueda Dashboard | 2022-11-15 A → 2022-11-24 A (+9d) | 2022-12-15 → 2022-11-25 (-20d) | 23d → 1d | 76d → 13.94d |
| 829 | Subida de Archivo | 2022-11-15 A → 2022-11-25 A (+10d) | 2022-12-15 → 2022-11-28 (-17d) | 23d → 1d | 76d → 13d |
| 830 | **Dashboard Recepción de recursos sección aportaciones federales** | 2022-11-15 A → 2022-11-28 A (+13d) | 2022-12-15 → 2022-12-07 (-8d) | 23d → 6.62d | 76d → 6.44d |
| 831 | Pantalla Principal | 2022-11-15 A → 2022-11-28 A (+13d) | 2022-12-15 → 2022-11-29 (-16d) | 23d → 1d | 76d → 12.06d |
| 832 | Configuracion de dashboard | 2022-11-15 A → 2022-11-29 A (+14d) | 2022-12-15 → 2022-11-30 (-15d) | 23d → 1d | 76d → 11.12d |
| 833 | Exportación de dashboard PDF | 2022-11-15 A → 2022-11-30 A (+15d) | 2022-12-15 → 2022-12-01 (-14d) | 23d → 1d | 76d → 10.19d |
| 834 | Exportación de dashboard Excel | 2022-11-15 A → 2022-12-01 A (+16d) | 2022-12-15 → 2022-12-02 (-13d) | 23d → 1d | 76d → 9.25d |
| 835 | Paginación Dashboard | 2022-11-15 A → 2022-12-02 A (+17d) | 2022-12-15 → 2022-12-05 (-10d) | 23d → 1d | 76d → 8.31d |
| 836 | Busqueda Dashboard | 2022-11-15 A → 2022-12-05 A (+20d) | 2022-12-15 → 2022-12-06 (-9d) | 23d → 1d | 76d → 7.38d |
| 837 | Subida de Archivo | 2022-11-15 A → 2022-12-06 A (+21d) | 2022-12-15 → 2022-12-07 (-8d) | 23d → 1d | 76d → 6.44d |
| 838 | **Dashboard Recepción de recursos sección aportaciones estatales** | 2022-11-15 A → 2022-12-07 A (+22d) |  | 23d → 5.69d | 76d → 0.81d |
| 839 | Pantalla Principal | 2022-11-15 A → 2022-12-07 A (+22d) | 2022-12-15 → 2022-12-08 (-7d) | 23d → 1d | 76d → 5.5d |
| 840 | Configuracion de dashboard | 2022-11-15 A → 2022-12-08 A (+23d) | 2022-12-15 → 2022-12-09 (-6d) | 23d → 1d | 76d → 4.56d |
| 841 | Exportación de dashboard PDF | 2022-11-15 A → 2022-12-09 A (+24d) | 2022-12-15 → 2022-12-12 (-3d) | 23d → 1d | 76d → 3.62d |
| 842 | Exportación de dashboard Excel | 2022-11-15 A → 2022-12-12 A (+27d) | 2022-12-15 → 2022-12-13 (-2d) | 23d → 1d | 76d → 2.69d |
| 843 | Paginación Dashboard | 2022-11-15 A → 2022-12-13 A (+28d) | 2022-12-15 → 2022-12-14 (-1d) | 23d → 1d | 76d → 1.75d |
| 844 | Busqueda Dashboard | 2022-11-15 A → 2022-12-14 A (+29d) |  | 23d → 1d | 76d → 0.81d |
| 845 | Subida de Archivo | 2022-11-15 A → 2022-12-09 A (+24d) | 2022-12-15 → 2022-12-12 (-3d) | 23d → 1d | 76d → 3.62d |

| ID | Task | Start | Finish | Duration | Complete | Total float | Predecessors |
| --- | --- | --- | --- | --- | --- | --- | --- |
| 846 | **Diseño y Desarrollo FRONT** | 2022-08-18 A | 2023-02-23 → 2022-12-15 (-70d) | 136d → 77.88d | 5% → 19% | none → 0.81d |  |
| 847 | **sprint 4** | 2022-08-18 A | 2022-12-19 → 2022-10-24 (-56d) | 88d → 43.19d |  | none → 21.5d | none → 31 |
| 848 | **Módulo de Administración** | 2022-07-15 A → 2022-08-18 A (+34d) | 2022-11-15 → 2022-10-24 (-22d) | 88d → 43.19d |  | none → 21.5d |  |
| 849 | **Coeficientes** | 2022-07-15 → 2022-08-18 (+34d) | 2022-11-15 → 2022-08-19 (-88d) | 88d → 1d |  | none → 63.69d |  |
| 850 | Pantalla principal | 2022-07-15 → 2022-08-18 (+34d) | 2022-11-14 → 2022-08-19 (-87d) | 87d → 1d |  | none → 135d |  |
| 851 | Agregar | 2022-07-15 → 2022-08-18 (+34d) | 2022-11-14 → 2022-08-19 (-87d) | 87d → 1d |  | none → 135d |  |
| 852 | Eliminar | 2022-07-15 → 2022-08-18 (+34d) | 2022-11-14 → 2022-08-19 (-87d) | 87d → 1d |  | none → 135d |  |
| 853 | Editar | 2022-07-15 → 2022-08-18 (+34d) | 2022-11-14 → 2022-08-19 (-87d) | 87d → 1d |  | none → 135d |  |
| 854 | Configuración de Dashboard | 2022-07-15 → 2022-08-18 (+34d) | 2022-11-14 → 2022-08-19 (-87d) | 87d → 1d |  | none → 135d |  |
| 855 | Exportación de dashboard PDF | 2022-07-15 → 2022-08-18 (+34d) | 2022-11-15 → 2022-08-19 (-88d) | 88d → 1d |  | none → 135d |  |
| 856 | Exportación de dashboard Excel | 2022-07-15 → 2022-08-18 (+34d) | 2022-11-15 → 2022-08-19 (-88d) | 88d → 1d |  | none → 135d |  |
| 857 | Paginación Dashboard | 2022-07-15 → 2022-08-18 (+34d) | 2022-11-15 → 2022-08-19 (-88d) | 88d → 1d |  | none → 135d |  |
| 858 | Busqueda Dash board | 2022-07-15 → 2022-08-18 (+34d) | 2022-11-15 → 2022-08-19 (-88d) | 88d → 1d |  | none → 135d |  |
| 859 | Ventanas emergentes de validación | 2022-07-15 → 2022-08-18 (+34d) | 2022-11-15 → 2022-08-19 (-88d) | 88d → 1d |  | none → 135d |  |
| 860 | **Bienvenida** | 2022-07-15 → 2022-08-18 (+34d) | 2022-11-15 → 2022-08-19 (-88d) | 88d → 1d |  | none → 63.69d |  |
| 861 | Configuracion de bienvenida | 2022-07-15 → 2022-08-18 (+34d) | 2022-11-15 → 2022-08-19 (-88d) | 88d → 1d |  | none → 135d |  |
| 862 | **Base** | 2022-07-15 A → 2022-09-26 A (+73d) | 2022-11-15 → 2022-09-29 (-47d) | 88d → 2.88d |  | 98d → 37.44d |  |
| 863 | Login | 2022-07-15 A → 2022-09-26 A (+73d) | 2022-11-15 A → 2022-09-26 A (-50d) | 88d → 1d |  |  |  |
| 864 | Logout | 2022-07-15 A → 2022-09-27 A (+74d) | 2022-11-15 A → 2022-09-27 A (-49d) | 88d → 1d |  |  |  |
| 865 | Bloqueo de Sesión | 2022-07-15 A → 2022-09-28 A (+75d) | 2022-11-15 → 2022-09-29 (-47d) | 88d → 1d |  | 98d → 37.44d |  |
| 866 | Perfil | 2022-07-15 A → 2022-09-28 A (+75d) | 2022-11-15 → 2022-09-29 (-47d) | 88d → 1d |  | 98d → 37.44d |  |
| 867 | **Administración de Usuarios** | 2022-07-15 A → 2022-09-30 A (+77d) | 2022-11-15 → 2022-10-12 (-34d) | 88d → 7.56d |  | 98d → 29d |  |
| 868 | Agregar | 2022-07-15 A → 2022-09-30 A (+77d) | 2022-11-15 → 2022-10-03 (-43d) | 88d → 1d |  | 98d → 35.56d |  |
| 869 | Pantalla Principal | 2022-07-15 A → 2022-10-03 A (+80d) | 2022-11-15 → 2022-10-04 (-42d) | 88d → 1d |  | 98d → 34.62d |  |
| 870 | Editar | 2022-07-15 A → 2022-10-04 A (+81d) | 2022-11-15 → 2022-10-05 (-41d) | 88d → 1d |  | 98d → 33.69d |  |
| 871 | Eliminar | 2022-07-15 A → 2022-10-05 A (+82d) | 2022-11-15 → 2022-10-06 (-40d) | 88d → 1d |  | 98d → 32.75d |  |
| 872 | Configuración de Dashboard | 2022-07-15 A → 2022-10-06 A (+83d) | 2022-11-15 → 2022-10-07 (-39d) | 88d → 1d |  | 98d → 31.81d |  |
| 873 | Exportación de dashboard PDF | 2022-07-15 A → 2022-10-07 A (+84d) | 2022-11-15 → 2022-10-10 (-36d) | 88d → 1d |  | 98d → 30.88d |  |
| 874 | Exportación de dashboard Excel | 2022-07-15 A → 2022-10-10 A (+87d) | 2022-11-15 → 2022-10-11 (-35d) | 88d → 1d |  | 98d → 29.94d |  |
| 875 | Paginación Dashboard | 2022-07-15 A → 2022-10-11 A (+88d) | 2022-11-15 → 2022-10-12 (-34d) | 88d → 1d |  | 98d → 29d |  |
| 876 | Busqueda Dash board | 2022-07-15 A → 2022-10-11 A (+88d) | 2022-11-15 → 2022-10-12 (-34d) | 88d → 1d |  | 98d → 29d |  |
| 877 | Ventanas emergentes de validación | 2022-07-15 A → 2022-10-11 A (+88d) | 2022-11-15 → 2022-10-12 (-34d) | 88d → 1d |  | 98d → 29d |  |
| 878 | **Administración de Roles y Permisos** | 2022-07-15 A → 2022-10-12 A (+89d) | 2022-11-15 → 2022-10-24 (-22d) | 88d → 7.56d |  | 98d → 21.5d |  |
| 879 | Pantalla Principal | 2022-07-15 A → 2022-10-12 A (+89d) | 2022-11-15 → 2022-10-13 (-33d) | 88d → 1d |  | 98d → 28.06d |  |
| 880 | Agregar | 2022-07-15 A → 2022-10-13 A (+90d) | 2022-11-15 → 2022-10-14 (-32d) | 88d → 1d |  | 98d → 27.12d |  |
| 881 | Editar | 2022-07-15 A → 2022-10-14 A (+91d) | 2022-11-15 → 2022-10-17 (-29d) | 88d → 1d |  | 98d → 26.19d |  |
| 882 | Eliminar | 2022-07-15 A → 2022-10-15 A (+92d) | 2022-11-15 → 2022-10-18 (-28d) | 88d → 1d |  | 98d → 25.25d |  |
| 883 | Configuración de Dashboard | 2022-07-15 A → 2022-10-16 A (+93d) | 2022-11-15 → 2022-10-18 (-28d) | 88d → 1d |  | 98d → 25.25d |  |
| 884 | Exportación de dashboard PDF | 2022-07-15 A → 2022-10-17 A (+94d) | 2022-11-15 → 2022-10-18 (-28d) | 88d → 1d |  | 98d → 25.25d |  |
| 885 | Exportación de dashboard Excel | 2022-07-15 A → 2022-10-18 A (+95d) | 2022-11-15 → 2022-10-19 (-27d) | 88d → 1d |  | 98d → 24.31d |  |
| 886 | Paginación Dashboard | 2022-07-15 A → 2022-10-19 A (+96d) | 2022-11-15 → 2022-10-20 (-26d) | 88d → 1d |  | 98d → 23.38d |  |
| 887 | Busqueda Dash board | 2022-07-15 A → 2022-10-20 A (+97d) | 2022-11-15 → 2022-10-21 (-25d) | 88d → 1d |  | 98d → 22.44d |  |
| 888 | Ventanas emergentes de validación | 2022-07-15 A → 2022-10-21 A (+98d) | 2022-11-15 → 2022-10-24 (-22d) | 88d → 1d |  | 98d → 21.5d |  |
| 889 | **sprint 5** | 2022-08-18 → 2022-10-11 A (+54d) | 2023-01-20 → 2022-11-16 (-65d) | 112d → 24.44d | 6% → 36% | none → 19.56d | none → 31 |
| 890 | **Módulo CPH** | 2022-07-15 A → 2022-10-11 A (+88d) | 2022-12-19 → 2022-11-16 (-33d) | 112d → 24.44d | 6% → 36% | 74d → 19.56d |  |
| 891 | **Base** | 2022-07-15 A → 2022-10-11 A (+88d) | 2022-12-19 → 2022-10-17 (-63d) | 112d → 3.81d | 0% → 25% | 74d → 40.19d |  |
| 892 | Perfil | 2022-07-15 A → 2022-10-11 A (+88d) | 2022-12-19 → 2022-10-12 (-68d) | 88d → 1d |  | 74d → 43d |  |
| 893 | Pop up Notificaciones | 2022-07-15 A → 2022-10-12 A (+89d) | 2022-12-19 → 2022-10-13 (-67d) | 88d → 1d |  | 74d → 42.06d |  |
| 894 | Contador de Notificaciones (Icono campanita) | 2022-07-15 A → 2022-10-13 A (+90d) | 2022-12-19 → 2022-10-13 A (-67d) | 88d → 1d | 0% → 100% | 74d → none |  |
| 895 | Bandeja entrada de Notificaciones | 2022-07-15 A → 2022-10-14 A (+91d) | 2022-12-19 → 2022-10-17 (-63d) | 88d → 1d |  | 74d → 40.19d |  |
| 896 | **Administración de Municipios** | 2022-07-15 A → 2022-10-12 A (+89d) | 2022-12-19 → 2022-10-24 (-56d) | 112d → 7.56d |  | 74d → 35.5d |  |
| 897 | Pantalla Principal | 2022-07-15 A → 2022-10-12 A (+89d) | 2022-12-19 → 2022-10-13 (-67d) | 88d → 1d |  | 74d → 42.06d |  |
| 898 | Agregar | 2022-07-15 A → 2022-10-13 A (+90d) | 2022-12-19 → 2022-10-14 (-66d) | 88d → 1d |  | 74d → 41.12d |  |
| 899 | Editar | 2022-07-15 A → 2022-10-14 A (+91d) | 2022-12-19 → 2022-10-17 (-63d) | 88d → 1d |  | 74d → 40.19d |  |
| 900 | Eliminar | 2022-07-15 A → 2022-10-15 A (+92d) | 2022-12-19 → 2022-10-18 (-62d) | 88d → 1d |  | 74d → 39.25d |  |
| 901 | Configuración de Dashboard | 2022-07-15 A → 2022-10-16 A (+93d) | 2022-12-19 → 2022-10-18 (-62d) | 88d → 1d |  | 74d → 39.25d |  |
| 902 | Exportación de dashboard PDF | 2022-07-15 A → 2022-10-17 A (+94d) | 2022-12-19 → 2022-10-18 (-62d) | 88d → 1d |  | 74d → 39.25d |  |
| 903 | Exportación de dashboard Excel | 2022-07-15 A → 2022-10-18 A (+95d) | 2022-12-19 → 2022-10-19 (-61d) | 88d → 1d |  | 74d → 38.31d |  |
| 904 | Paginación Dashboard | 2022-07-15 A → 2022-10-19 A (+96d) | 2022-12-19 → 2022-10-20 (-60d) | 88d → 1d |  | 74d → 37.38d |  |
| 905 | Busqueda Dash board | 2022-07-15 A → 2022-10-20 A (+97d) | 2022-12-19 → 2022-10-21 (-59d) | 88d → 1d |  | 74d → 36.44d |  |
| 906 | Ventanas emergentes de validación | 2022-07-15 A → 2022-10-21 A (+98d) | 2022-12-19 → 2022-10-24 (-56d) | 88d → 1d |  | 74d → 35.5d |  |
| 907 | **Administración de Fondos** | 2022-07-15 A → 2022-10-13 A (+90d) | 2022-12-19 → 2022-10-26 A (-54d) | 112d → 9.38d | 0% → 100% | 74d → none |  |
| 908 | Pantalla Principal | 2022-07-15 A → 2022-10-13 A (+90d) | 2022-12-19 → 2022-10-13 A (-67d) | 88d → 1d | 0% → 100% | 74d → none |  |
| 909 | Agregar | 2022-07-15 A → 2022-10-14 A (+91d) | 2022-12-19 → 2022-10-14 A (-66d) | 88d → 1d | 0% → 100% | 74d → none |  |
| 910 | Editar | 2022-07-15 A → 2022-10-17 A (+94d) | 2022-12-19 → 2022-10-17 A (-63d) | 88d → 1d | 0% → 100% | 74d → none |  |
| 911 | Eliminar | 2022-07-15 A → 2022-10-18 A (+95d) | 2022-12-19 → 2022-10-18 A (-62d) | 88d → 1d | 0% → 100% | 74d → none |  |
| 912 | Configuración de Dashboard | 2022-07-15 A → 2022-10-19 A (+96d) | 2022-12-19 → 2022-10-19 A (-61d) | 88d → 1d | 0% → 100% | 74d → none |  |
| 913 | Exportación de dashboard PDF | 2022-07-15 A → 2022-10-20 A (+97d) | 2022-12-19 → 2022-10-20 A (-60d) | 88d → 1d | 0% → 100% | 74d → none |  |
| 914 | Exportación de dashboard Excel | 2022-07-15 A → 2022-10-21 A (+98d) | 2022-12-19 → 2022-10-21 A (-59d) | 88d → 1d | 0% → 100% | 74d → none |  |
| 915 | Paginación Dashboard | 2022-07-15 A → 2022-10-24 A (+101d) | 2022-12-19 → 2022-10-24 A (-56d) | 88d → 1d | 0% → 100% | 74d → none |  |

| ID | Task | Start | Finish | Duration | Complete | Total float |
| --- | --- | --- | --- | --- | --- | --- |
| 916 | Busqueda Dash board | 2022-07-15 A → 2022-10-25 A (+102d) | 2022-12-19 → 2022-10-25 A (-55d) | 88d → 1d | 0% → 100% | 74d → none |
| 917 | Ventanas emergentes de validación | 2022-07-15 A → 2022-10-26 A (+103d) | 2022-12-19 → 2022-10-26 A (-54d) | 88d → 1d | 0% → 100% | 74d → none |
| 918 | **Administración de Presupuesto** | 2022-07-15 A → 2022-10-14 A (+91d) | 2022-12-19 → 2022-10-28 (-52d) | 112d → 9.44d |  | 74d → 31.75d |
| 919 | Pantalla Principal | 2022-07-15 A → 2022-10-14 A (+91d) | 2022-12-19 → 2022-10-17 (-63d) | 88d → 1d |  | 74d → 40.19d |
| 920 | Agregar | 2022-07-15 A → 2022-10-17 A (+94d) | 2022-12-19 → 2022-10-18 (-62d) | 88d → 1d |  | 74d → 39.25d |
| 921 | Editar | 2022-07-15 A → 2022-10-18 A (+95d) | 2022-12-19 → 2022-10-19 (-61d) | 88d → 1d |  | 74d → 38.31d |
| 922 | Eliminar | 2022-07-15 A → 2022-10-19 A (+96d) | 2022-12-19 → 2022-10-20 (-60d) | 88d → 1d |  | 74d → 37.38d |
| 923 | Configuración de Dashboard | 2022-07-15 A → 2022-10-20 A (+97d) | 2022-12-19 → 2022-10-21 (-59d) | 88d → 1d |  | 74d → 36.44d |
| 924 | Exportación de dashboard PDF | 2022-07-15 A → 2022-10-21 A (+98d) | 2022-12-19 → 2022-10-24 (-56d) | 88d → 1d |  | 74d → 35.5d |
| 925 | Exportación de dashboard Excel | 2022-07-15 A → 2022-10-24 A (+101d) | 2022-12-19 → 2022-10-25 (-55d) | 88d → 1d |  | 74d → 34.56d |
| 926 | Paginación Dashboard | 2022-07-15 A → 2022-10-25 A (+102d) | 2022-12-19 → 2022-10-26 (-54d) | 88d → 1d |  | 74d → 33.62d |
| 927 | Busqueda Dash board | 2022-07-15 A → 2022-10-26 A (+103d) | 2022-12-19 → 2022-10-27 (-53d) | 88d → 1d |  | 74d → 32.69d |
| 928 | Ventanas emergentes de validación | 2022-07-15 A → 2022-10-27 A (+104d) | 2022-12-19 → 2022-10-28 (-52d) | 88d → 1d |  | 74d → 31.75d |
| 929 | **Administración de UMA** | 2022-07-15 A → 2022-10-17 A (+94d) | 2022-12-19 → 2022-10-28 A (-52d) | 112d → 9.38d | 0% → 100% | 74d → none |
| 930 | Pantalla Principal | 2022-07-15 A → 2022-10-17 A (+94d) | 2022-12-19 → 2022-10-17 A (-63d) | 88d → 1d | 0% → 100% | 74d → none |
| 931 | Agregar | 2022-07-15 A → 2022-10-18 A (+95d) | 2022-12-19 → 2022-10-18 A (-62d) | 88d → 1d | 0% → 100% | 74d → none |
| 932 | Editar | 2022-07-15 A → 2022-10-19 A (+96d) | 2022-12-19 → 2022-10-19 A (-61d) | 88d → 1d | 0% → 100% | 74d → none |
| 933 | Eliminar | 2022-07-15 A → 2022-10-20 A (+97d) | 2022-12-19 → 2022-10-20 A (-60d) | 88d → 1d | 0% → 100% | 74d → none |
| 934 | Configuración de Dashboard | 2022-07-15 A → 2022-10-21 A (+98d) | 2022-12-19 → 2022-10-21 A (-59d) | 88d → 1d | 0% → 100% | 74d → none |
| 935 | Exportación de dashboard PDF | 2022-07-15 A → 2022-10-24 A (+101d) | 2022-12-19 → 2022-10-24 A (-56d) | 88d → 1d | 0% → 100% | 74d → none |
| 936 | Exportación de dashboard Excel | 2022-07-15 A → 2022-10-25 A (+102d) | 2022-12-19 → 2022-10-25 A (-55d) | 88d → 1d | 0% → 100% | 74d → none |
| 937 | Paginación Dashboard | 2022-07-15 A → 2022-10-26 A (+103d) | 2022-12-19 → 2022-10-26 A (-54d) | 88d → 1d | 0% → 100% | 74d → none |
| 938 | Busqueda Dashboard | 2022-07-15 A → 2022-10-27 A (+104d) | 2022-12-19 → 2022-10-27 A (-53d) | 88d → 1d | 0% → 100% | 74d → none |
| 939 | Ventanas emergentes de validación | 2022-07-15 A → 2022-10-28 A (+105d) | 2022-12-19 → 2022-10-28 A (-52d) | 88d → 1d | 0% → 100% | 74d → none |
| 940 | **Administración de Inflación** | 2022-07-15 A → 2022-10-17 A (+94d) | 2022-12-19 → 2022-11-01 A (-48d) | 112d → 11.25d | 17% → 100% | 74d → none |
| 941 | Pantalla Principal | 2022-07-15 A → 2022-10-17 A (+94d) | 2022-12-19 → 2022-10-17 A (-63d) | 88d → 1d | 0% → 100% | 74d → none |
| 942 | Plantilla Carga Masiva Inflación | 2022-07-15 A → 2022-10-18 A (+95d) | 2022-11-15 A → 2022-10-18 A (-28d) | 88d → 1d |  |  |
| 943 | Api Plantilla caga masiva Municipio - Inflación | 2022-07-15 A → 2022-10-19 A (+96d) | 2022-11-15 A → 2022-10-19 A (-27d) | 88d → 1d |  |  |
| 944 | Agregar | 2022-07-15 A → 2022-10-20 A (+97d) | 2022-12-19 → 2022-10-20 A (-60d) | 88d → 1d | 0% → 100% | 74d → none |
| 945 | Editar | 2022-07-15 A → 2022-10-21 A (+98d) | 2022-12-19 → 2022-10-21 A (-59d) | 88d → 1d | 0% → 100% | 74d → none |
| 946 | Eliminar | 2022-07-15 A → 2022-10-24 A (+101d) | 2022-12-19 → 2022-10-24 A (-56d) | 88d → 1d | 0% → 100% | 74d → none |
| 947 | Configuración de Dashboard | 2022-07-15 A → 2022-10-25 A (+102d) | 2022-12-19 → 2022-10-25 A (-55d) | 88d → 1d | 0% → 100% | 74d → none |
| 948 | Exportación de dashboard PDF | 2022-07-15 A → 2022-10-26 A (+103d) | 2022-12-19 → 2022-10-26 A (-54d) | 88d → 1d | 0% → 100% | 74d → none |
| 949 | Exportación de dashboard Excel | 2022-07-15 A → 2022-10-27 A (+104d) | 2022-12-19 → 2022-10-27 A (-53d) | 88d → 1d | 0% → 100% | 74d → none |
| 950 | Paginación Dashboard | 2022-07-15 A → 2022-10-28 A (+105d) | 2022-12-19 → 2022-10-28 A (-52d) | 88d → 1d | 0% → 100% | 74d → none |
| 951 | Busqueda Dash board | 2022-07-15 A → 2022-10-31 A (+108d) | 2022-12-19 → 2022-10-31 A (-49d) | 88d → 1d | 0% → 100% | 74d → none |
| 952 | Ventanas emergentes de validación | 2022-07-15 A → 2022-11-01 A (+109d) | 2022-12-19 → 2022-11-01 A (-48d) | 88d → 1d | 0% → 100% | 74d → none |
| 953 | **Administración de Crecimiento** | 2022-07-15 A → 2022-10-18 A (+95d) | 2022-12-19 → 2022-11-02 (-47d) | 112d → 11.25d | 17% → 92% | 74d → 28.06d |
| 954 | Pantalla Principal | 2022-07-15 A → 2022-10-18 A (+95d) | 2022-12-19 → 2022-10-19 (-61d) | 88d → 1d |  | 74d → 38.31d |
| 955 | Plantilla Carga Masiva Crecimiento | 2022-07-15 A → 2022-10-19 A (+96d) | 2022-11-15 A → 2022-10-19 A (-27d) | 88d → 1d |  |  |
| 956 | Api Plantilla caga masiva Municipio - Crecimiento | 2022-07-15 A → 2022-10-20 A (+97d) | 2022-11-15 A → 2022-10-20 A (-26d) | 88d → 1d |  |  |
| 957 | Agregar | 2022-07-15 A → 2022-10-21 A (+98d) | 2022-12-19 → 2022-10-21 A (-59d) | 88d → 1d | 0% → 100% | 74d → none |
| 958 | Editar | 2022-07-15 A → 2022-10-24 A (+101d) | 2022-12-19 → 2022-10-24 A (-56d) | 88d → 1d | 0% → 100% | 74d → none |
| 959 | Eliminar | 2022-07-15 A → 2022-10-25 A (+102d) | 2022-12-19 → 2022-10-25 A (-55d) | 88d → 1d | 0% → 100% | 74d → none |
| 960 | Configuración de Dashboard | 2022-07-15 A → 2022-10-26 A (+103d) | 2022-12-19 → 2022-10-26 A (-54d) | 88d → 1d | 0% → 100% | 74d → none |
| 961 | Exportación de dashboard PDF | 2022-07-15 A → 2022-10-27 A (+104d) | 2022-12-19 → 2022-10-27 A (-53d) | 88d → 1d | 0% → 100% | 74d → none |
| 962 | Exportación de dashboard Excel | 2022-07-15 A → 2022-10-28 A (+105d) | 2022-12-19 → 2022-10-28 A (-52d) | 88d → 1d | 0% → 100% | 74d → none |
| 963 | Paginación Dashboard | 2022-07-15 A → 2022-10-31 A (+108d) | 2022-12-19 → 2022-10-31 A (-49d) | 88d → 1d | 0% → 100% | 74d → none |
| 964 | Busqueda Dash board | 2022-07-15 A → 2022-11-01 A (+109d) | 2022-12-19 → 2022-11-01 A (-48d) | 88d → 1d | 0% → 100% | 74d → none |
| 965 | Ventanas emergentes de validación | 2022-07-15 A → 2022-11-02 A (+110d) | 2022-12-19 → 2022-11-02 A (-47d) | 88d → 1d | 0% → 100% | 74d → none |
| 966 | **Administración de Facturación** | 2022-07-15 A → 2022-10-19 A (+96d) | 2022-12-19 → 2022-10-31 A (-49d) | 112d → 8.44d | 0% → 100% | 74d → none |
| 967 | Pantalla Principal | 2022-07-15 A → 2022-10-19 A (+96d) | 2022-12-19 → 2022-10-19 A (-61d) | 88d → 1d | 0% → 100% | 74d → none |
| 968 | Agregar | 2022-07-15 A → 2022-10-20 A (+97d) | 2022-12-19 → 2022-10-20 A (-60d) | 88d → 1d | 0% → 100% | 74d → none |
| 969 | Editar | 2022-07-15 A → 2022-10-21 A (+98d) | 2022-12-19 → 2022-10-21 A (-59d) | 88d → 1d | 0% → 100% | 74d → none |
| 970 | Eliminar | 2022-07-15 A → 2022-10-24 A (+101d) | 2022-12-19 → 2022-10-24 A (-56d) | 88d → 1d | 0% → 100% | 74d → none |
| 971 | Configuración de Dashboard | 2022-07-15 A → 2022-10-25 A (+102d) | 2022-12-19 → 2022-10-25 A (-55d) | 88d → 1d | 0% → 100% | 74d → none |
| 972 | Exportación de dashboard PDF | 2022-07-15 A → 2022-10-26 A (+103d) | 2022-12-19 → 2022-10-26 A (-54d) | 88d → 1d | 0% → 100% | 74d → none |
| 973 | Exportación de dashboard Excel | 2022-07-15 A → 2022-10-27 A (+104d) | 2022-12-19 → 2022-10-27 A (-53d) | 88d → 1d | 0% → 100% | 74d → none |
| 974 | Paginación Dashboard | 2022-07-15 A → 2022-10-28 A (+105d) | 2022-12-19 → 2022-10-28 A (-52d) | 88d → 1d | 0% → 100% | 74d → none |
| 975 | Busqueda Dash board | 2022-07-15 A → 2022-10-29 A (+106d) | 2022-12-19 → 2022-10-31 A (-49d) | 88d → 1d | 0% → 100% | 74d → none |
| 976 | Ventanas emergentes de validación | 2022-07-15 A → 2022-10-30 A (+107d) | 2022-12-19 → 2022-10-31 A (-49d) | 88d → 1d | 0% → 100% | 74d → none |
| 977 | **Administración de Recaudación** | 2022-07-15 A → 2022-10-20 A (+97d) | 2022-12-19 → 2022-11-04 A (-45d) | 112d → 11.25d | 17% → 100% | 74d → none |
| 978 | Pantalla Principal | 2022-07-15 A → 2022-10-20 A (+97d) | 2022-12-19 → 2022-10-20 A (-60d) | 88d → 1d | 0% → 100% | 74d → none |
| 979 | Plantilla Carga Masiva Recaudación | 2022-07-15 A → 2022-10-21 A (+98d) | 2022-11-15 A → 2022-10-21 A (-25d) | 88d → 1d |  |  |
| 980 | Api Plantilla caga masiva Municipio - Recaudación | 2022-07-15 A → 2022-10-24 A (+101d) | 2022-11-15 A → 2022-10-24 A (-22d) | 88d → 1d |  |  |
| 981 | Agregar | 2022-07-15 A → 2022-10-25 A (+102d) | 2022-12-19 → 2022-10-25 A (-55d) | 88d → 1d | 0% → 100% | 74d → none |
| 982 | Editar | 2022-07-15 A → 2022-10-26 A (+103d) | 2022-12-19 → 2022-10-26 A (-54d) | 88d → 1d | 0% → 100% | 74d → none |
| 983 | Eliminar | 2022-07-15 A → 2022-10-27 A (+104d) | 2022-12-19 → 2022-10-27 A (-53d) | 88d → 1d | 0% → 100% | 74d → none |
| 984 | Configuración de Dashboard | 2022-07-15 A → 2022-10-28 A (+105d) | 2022-12-19 → 2022-10-28 A (-52d) | 88d → 1d | 0% → 100% | 74d → none |
| 985 | Exportación de dashboard PDF | 2022-07-15 A → 2022-10-31 A (+108d) | 2022-12-19 → 2022-10-31 A (-49d) | 88d → 1d | 0% → 100% | 74d → none |

| ID | Task | Start | Finish | Duration | Complete | Total float |
| --- | --- | --- | --- | --- | --- | --- |
| 986 | Exportación de dashboard Excel | 2022-07-15 A → 2022-11-01 A (+109d) | 2022-12-19 → 2022-11-01 A (-48d) | 88d → 1d | 0% → 100% | 74d → none |
| 987 | Paginación Dashboard | 2022-07-15 A → 2022-11-02 A (+110d) | 2022-12-19 → 2022-11-02 A (-47d) | 88d → 1d | 0% → 100% | 74d → none |
| 988 | Busqueda Dash board | 2022-07-15 A → 2022-11-03 A (+111d) | 2022-12-19 → 2022-11-03 A (-46d) | 88d → 1d | 0% → 100% | 74d → none |
| 989 | Ventanas emergentes de validación | 2022-07-15 A → 2022-11-04 A (+112d) | 2022-12-19 → 2022-11-04 A (-45d) | 88d → 1d | 0% → 100% | 74d → none |
| 990 | **Administración de Población** | 2022-07-15 A → 2022-10-21 A (+98d) | 2022-12-19 → 2022-11-03 A (-46d) | 112d → 9.38d | 0% → 100% | 74d → none |
| 991 | Pantalla Principal | 2022-07-15 A → 2022-10-21 A (+98d) | 2022-12-19 → 2022-10-21 A (-59d) | 88d → 1d | 0% → 100% | 74d → none |
| 992 | Agregar | 2022-07-15 A → 2022-10-24 A (+101d) | 2022-12-19 → 2022-10-24 A (-56d) | 88d → 1d | 0% → 100% | 74d → none |
| 993 | Editar | 2022-07-15 A → 2022-10-25 A (+102d) | 2022-12-19 → 2022-10-25 A (-55d) | 88d → 1d | 0% → 100% | 74d → none |
| 994 | Eliminar | 2022-07-15 A → 2022-10-26 A (+103d) | 2022-12-19 → 2022-10-26 A (-54d) | 88d → 1d | 0% → 100% | 74d → none |
| 995 | Configuración de Dashboard | 2022-07-15 A → 2022-10-27 A (+104d) | 2022-12-19 → 2022-10-27 A (-53d) | 88d → 1d | 0% → 100% | 74d → none |
| 996 | Exportación de dashboard PDF | 2022-07-15 A → 2022-10-28 A (+105d) | 2022-12-19 → 2022-10-28 A (-52d) | 88d → 1d | 0% → 100% | 74d → none |
| 997 | Exportación de dashboard Excel | 2022-07-15 A → 2022-10-31 A (+108d) | 2022-12-19 → 2022-10-31 A (-49d) | 88d → 1d | 0% → 100% | 74d → none |
| 998 | Paginación Dashboard | 2022-07-15 A → 2022-11-01 A (+109d) | 2022-12-19 → 2022-11-01 A (-48d) | 88d → 1d | 0% → 100% | 74d → none |
| 999 | Busqueda Dash board | 2022-07-15 A → 2022-11-02 A (+110d) | 2022-12-19 → 2022-11-02 A (-47d) | 88d → 1d | 0% → 100% | 74d → none |
| 1000 | Ventanas emergentes de validación | 2022-07-15 A → 2022-11-03 A (+111d) | 2022-12-19 → 2022-11-03 A (-46d) | 88d → 1d | 0% → 100% | 74d → none |
| 1001 | **Administración de Territorio** | 2022-07-15 A → 2022-10-24 A (+101d) | 2022-12-19 → 2022-11-08 A (-41d) | 112d → 11.25d | 17% → 100% | 74d → none |
| 1002 | Pantalla Principal | 2022-07-15 A → 2022-10-24 A (+101d) | 2022-12-19 → 2022-10-24 A (-56d) | 88d → 1d | 0% → 100% | 74d → none |
| 1003 | Plantilla Carga Masiva Territorio | 2022-07-15 A → 2022-10-25 A (+102d) | 2022-11-15 A → 2022-10-25 A (-21d) | 88d → 1d |  |  |
| 1004 | Api Plantilla caga masiva Municipio - Territorio | 2022-07-15 A → 2022-10-26 A (+103d) | 2022-11-15 A → 2022-10-26 A (-20d) | 88d → 1d |  |  |
| 1005 | Agregar | 2022-07-15 A → 2022-10-27 A (+104d) | 2022-12-19 → 2022-10-27 A (-53d) | 88d → 1d | 0% → 100% | 74d → none |
| 1006 | Editar | 2022-07-15 A → 2022-10-28 A (+105d) | 2022-12-19 → 2022-10-28 A (-52d) | 88d → 1d | 0% → 100% | 74d → none |
| 1007 | Eliminar | 2022-07-15 A → 2022-10-31 A (+108d) | 2022-12-19 → 2022-10-31 A (-49d) | 88d → 1d | 0% → 100% | 74d → none |
| 1008 | Configuración de Dashboard | 2022-07-15 A → 2022-11-01 A (+109d) | 2022-12-19 → 2022-11-01 A (-48d) | 88d → 1d | 0% → 100% | 74d → none |
| 1009 | Exportación de dashboard PDF | 2022-07-15 A → 2022-11-02 A (+110d) | 2022-12-19 → 2022-11-02 A (-47d) | 88d → 1d | 0% → 100% | 74d → none |
| 1010 | Exportación de dashboard Excel | 2022-07-15 A → 2022-11-03 A (+111d) | 2022-12-19 → 2022-11-03 A (-46d) | 88d → 1d | 0% → 100% | 74d → none |
| 1011 | Paginación Dashboard | 2022-07-15 A → 2022-11-04 A (+112d) | 2022-12-19 → 2022-11-04 A (-45d) | 88d → 1d | 0% → 100% | 74d → none |
| 1012 | Busqueda Dash board | 2022-07-15 A → 2022-11-07 A (+115d) | 2022-12-19 → 2022-11-07 A (-42d) | 88d → 1d | 0% → 100% | 74d → none |
| 1013 | Ventanas emergentes de validación | 2022-07-15 A → 2022-11-08 A (+116d) | 2022-12-19 → 2022-11-08 A (-41d) | 88d → 1d | 0% → 100% | 74d → none |
| 1014 | **Administración de pobreza** | 2022-07-15 A → 2022-10-26 A (+103d) | 2022-12-19 → 2022-11-10 A (-39d) | 112d → 11.25d | 17% → 100% | 74d → none |
| 1015 | Pantalla Principal | 2022-07-15 A → 2022-10-26 A (+103d) | 2022-12-19 → 2022-10-26 A (-54d) | 88d → 1d | 0% → 100% | 74d → none |
| 1016 | Plantilla Carga Masiva Pobreza | 2022-07-15 A → 2022-10-27 A (+104d) | 2022-11-15 A → 2022-10-27 A (-19d) | 88d → 1d |  |  |
| 1017 | Api Plantilla caga masiva Municipio - Pobreza | 2022-07-15 A → 2022-10-28 A (+105d) | 2022-11-15 A → 2022-10-28 A (-18d) | 88d → 1d |  |  |
| 1018 | Agregar | 2022-07-15 A → 2022-10-31 A (+108d) | 2022-12-19 → 2022-10-31 A (-49d) | 88d → 1d | 0% → 100% | 74d → none |
| 1019 | Editar | 2022-07-15 A → 2022-11-01 A (+109d) | 2022-12-19 → 2022-11-01 A (-48d) | 88d → 1d | 0% → 100% | 74d → none |
| 1020 | Eliminar | 2022-07-15 A → 2022-11-02 A (+110d) | 2022-12-19 → 2022-11-02 A (-47d) | 88d → 1d | 0% → 100% | 74d → none |
| 1021 | Configuración de Dashboard | 2022-07-15 A → 2022-11-03 A (+111d) | 2022-12-19 → 2022-11-03 A (-46d) | 88d → 1d | 0% → 100% | 74d → none |
| 1022 | Exportación de dashboard PDF | 2022-07-15 A → 2022-11-04 A (+112d) | 2022-12-19 → 2022-11-04 A (-45d) | 88d → 1d | 0% → 100% | 74d → none |
| 1023 | Exportación de dashboard Excel | 2022-07-15 A → 2022-11-07 A (+115d) | 2022-12-19 → 2022-11-07 A (-42d) | 88d → 1d | 0% → 100% | 74d → none |
| 1024 | Paginación Dashboard | 2022-07-15 A → 2022-11-08 A (+116d) | 2022-12-19 → 2022-11-08 A (-41d) | 88d → 1d | 0% → 100% | 74d → none |
| 1025 | Busqueda Dash board | 2022-07-15 A → 2022-11-09 A (+117d) | 2022-12-19 → 2022-11-09 A (-40d) | 88d → 1d | 0% → 100% | 74d → none |
| 1026 | Ventanas emergentes de validación | 2022-07-15 A → 2022-11-10 A (+118d) | 2022-12-19 → 2022-11-10 A (-39d) | 88d → 1d | 0% → 100% | 74d → none |
| 1027 | **Administración de Pobreza Extrema** | 2022-07-15 A → 2022-10-26 A (+103d) | 2022-11-15 A → 2022-10-27 A (-19d) | 88d → 1.88d |  |  |
| 1028 | Plantilla Carga Masiva Pobreza Extrema | 2022-07-15 A → 2022-10-26 A (+103d) | 2022-11-15 A → 2022-10-26 A (-20d) | 88d → 1d |  |  |
| 1029 | Api Plantilla caga masiva Municipio - Pobreza Extrema | 2022-07-15 A → 2022-10-27 A (+104d) | 2022-11-15 A → 2022-10-27 A (-19d) | 88d → 1d |  |  |
| 1030 | **Administración de Pobreza Moderada** | 2022-07-15 A → 2022-10-27 A (+104d) | 2022-11-15 A → 2022-10-28 A (-18d) | 88d → 1.88d |  |  |
| 1031 | Plantilla Carga Masiva Pobreza Moderada | 2022-07-15 A → 2022-10-27 A (+104d) | 2022-11-15 A → 2022-10-27 A (-19d) | 88d → 1d |  |  |
| 1032 | Api Plantilla caga masiva Municipio - Pobreza Moderada | 2022-07-15 A → 2022-10-28 A (+105d) | 2022-11-15 A → 2022-10-28 A (-18d) | 88d → 1d |  |  |
| 1033 | **Administración de Proyección** | 2022-07-15 A → 2022-10-28 A (+105d) | 2022-12-19 → 2022-11-03 A (-46d) | 112d → 4.69d | 40% → 100% | 74d → none |
| 1035 | Agregar | 2022-07-15 A → 2022-10-28 A (+105d) | 2022-12-19 → 2022-10-28 A (-52d) | 88d → 1d | 0% → 100% | 74d → none |
| 1036 | Editar | 2022-07-15 A → 2022-10-31 A (+108d) | 2022-12-19 → 2022-10-31 A (-49d) | 88d → 1d | 0% → 100% | 74d → none |
| 1037 | Eliminar | 2022-07-15 A → 2022-11-01 A (+109d) | 2022-12-19 → 2022-11-01 A (-48d) | 88d → 1d | 0% → 100% | 74d → none |
| 1038 | Plantilla Carga Masiva Proyección | 2022-07-15 A → 2022-11-02 A (+110d) | 2022-11-15 A → 2022-11-02 A (-13d) | 88d → 1d |  |  |
| 1039 | Api Plantilla caga masiva Municipio - Proyección | 2022-07-15 A → 2022-11-03 A (+111d) | 2022-11-15 A → 2022-11-03 A (-12d) | 88d → 1d |  |  |
| 1040 | **Dashboard Articulo 14 Fracción I** | 2022-07-15 A → 2022-11-01 A (+109d) | 2022-12-19 → 2022-11-16 (-33d) | 112d → 10.38d |  | 74d → 19.56d |
| 1041 | Pantalla Principal | 2022-07-15 A → 2022-11-01 A (+109d) | 2022-12-19 → 2022-11-02 (-47d) | 88d → 1d |  | 74d → 28.94d |
| 1042 | Generar plantilla | 2022-07-15 A → 2022-11-02 A (+110d) | 2022-12-19 → 2022-11-03 (-46d) | 88d → 1d |  | 74d → 28d |
| 1043 | Carga masiva - plantilla | 2022-07-15 A → 2022-11-03 A (+111d) | 2022-12-19 → 2022-11-04 (-45d) | 88d → 1d |  | 74d → 27.06d |
| 1044 | Recálculo de coeficiente | 2022-07-15 A → 2022-11-04 A (+112d) | 2022-12-19 → 2022-11-07 (-42d) | 88d → 1d |  | 74d → 26.12d |
| 1045 | Editar información | 2022-07-15 A → 2022-11-07 A (+115d) | 2022-12-19 → 2022-11-08 (-41d) | 88d → 1d |  | 74d → 25.19d |
| 1046 | Dashboard predial | 2022-07-15 A → 2022-11-08 A (+116d) | 2022-12-19 → 2022-11-09 (-40d) | 88d → 1d |  | 74d → 24.25d |
| 1047 | Dashboard población y territorio | 2022-07-15 A → 2022-11-09 A (+117d) | 2022-12-19 → 2022-11-10 (-39d) | 88d → 1d |  | 74d → 23.31d |
| 1048 | Dashboard carencia social | 2022-07-15 A → 2022-11-10 A (+118d) | 2022-12-19 → 2022-11-11 (-38d) | 88d → 1d |  | 74d → 22.38d |
| 1049 | Cálculo de coeficiente | 2022-07-15 A → 2022-11-11 A (+119d) | 2022-12-19 → 2022-11-14 (-35d) | 88d → 1d |  | 74d → 21.44d |
| 1050 | Proceso Autorización | 2022-07-15 A → 2022-11-14 A (+122d) | 2022-12-19 → 2022-11-15 (-34d) | 88d → 1d |  | 74d → 20.5d |
| 1051 | Ventanas emergentes de validación | 2022-07-15 A → 2022-11-15 A (+123d) | 2022-12-19 → 2022-11-16 (-33d) | 88d → 1d |  | 74d → 19.56d |
| 1052 | **Dashboard Articulo 14 Fracción II** | 2022-07-15 A → 2022-11-02 A (+110d) | 2022-12-19 → 2022-11-16 (-33d) | 112d → 9.44d |  | 74d → 19.56d |
| 1053 | Pantalla Principal | 2022-07-15 A → 2022-11-02 A (+110d) | 2022-12-19 → 2022-11-03 (-46d) | 88d → 1d |  | 74d → 28d |
| 1054 | Dashboard población | 2022-07-15 A → 2022-11-03 A (+111d) | 2022-12-19 → 2022-11-04 (-45d) | 88d → 1d |  | 74d → 27.06d |
| 1055 | generar plantilla | 2022-07-15 A → 2022-11-04 A (+112d) | 2022-12-19 → 2022-11-07 (-42d) | 88d → 1d |  | 74d → 26.12d |
| 1056 | Carga masiva - plantilla | 2022-07-15 A → 2022-11-07 A (+115d) | 2022-12-19 → 2022-11-08 (-41d) | 88d → 1d |  | 74d → 25.19d |

| ID | Task | Start | Finish | Duration | Total float |
| --- | --- | --- | --- | --- | --- |
| 1057 | Recálculo de coeficiente | 2022-07-15 A → 2022-11-08 A (+116d) | 2022-12-19 → 2022-11-09 (-40d) | 88d → 1d | 74d → 24.25d |
| 1058 | Editar información individual | 2022-07-15 A → 2022-11-09 A (+117d) | 2022-12-19 → 2022-11-10 (-39d) | 88d → 1d | 74d → 23.31d |
| 1059 | Dashboard proyección población | 2022-07-15 A → 2022-11-10 A (+118d) | 2022-12-19 → 2022-11-11 (-38d) | 88d → 1d | 74d → 22.38d |
| 1060 | Carga masiva - plantilla | 2022-07-15 A → 2022-11-11 A (+119d) | 2022-12-19 → 2022-11-14 (-35d) | 88d → 1d | 74d → 21.44d |
| 1061 | Recálculo de coeficiente | 2022-07-15 A → 2022-11-14 A (+122d) | 2022-12-19 → 2022-11-15 (-34d) | 88d → 1d | 74d → 20.5d |
| 1062 | Editar información individual | 2022-07-15 A → 2022-11-15 A (+123d) | 2022-12-19 → 2022-11-16 (-33d) | 88d → 1d | 74d → 19.56d |
| 1063 | Cálculo de coeficiente | 2022-07-15 A → 2022-11-15 A (+123d) | 2022-12-19 → 2022-11-16 (-33d) | 88d → 1d | 74d → 19.56d |
| 1064 | Proceso Autorización | 2022-07-15 A → 2022-11-15 A (+123d) | 2022-12-19 → 2022-11-16 (-33d) | 88d → 1d | 74d → 19.56d |
| 1065 | Ventanas emergentes de validación | 2022-07-15 A → 2022-11-15 A (+123d) | 2022-12-19 → 2022-11-16 (-33d) | 88d → 1d | 74d → 19.56d |
| 1066 | **Dashboard Articulo 14 Fracción III** | 2022-07-15 A → 2022-11-03 A (+111d) | 2022-12-19 → 2022-11-16 (-33d) | 112d → 8.5d | 74d → 19.56d |
| 1067 | Pantalla Principal | 2022-07-15 A → 2022-11-03 A (+111d) | 2022-12-19 → 2022-11-04 (-45d) | 88d → 1d | 74d → 27.06d |
| 1068 | Dashboard eficiencia recaudatoria | 2022-07-15 A → 2022-11-04 A (+112d) | 2022-12-19 → 2022-11-07 (-42d) | 88d → 1d | 74d → 26.12d |
| 1069 | generar plantilla | 2022-07-15 A → 2022-11-07 A (+115d) | 2022-12-19 → 2022-11-08 (-41d) | 88d → 1d | 74d → 25.19d |
| 1070 | Carga masiva - plantilla | 2022-07-15 A → 2022-11-08 A (+116d) | 2022-12-19 → 2022-11-09 (-40d) | 88d → 1d | 74d → 24.25d |
| 1071 | Recálculo de coeficiente | 2022-07-15 A → 2022-11-09 A (+117d) | 2022-12-19 → 2022-11-10 (-39d) | 88d → 1d | 74d → 23.31d |
| 1072 | Editar información individual | 2022-07-15 A → 2022-11-10 A (+118d) | 2022-12-19 → 2022-11-11 (-38d) | 88d → 1d | 74d → 22.38d |
| 1073 | Dashboard crecimiento recaudación | 2022-07-15 A → 2022-11-11 A (+119d) | 2022-12-19 → 2022-11-14 (-35d) | 88d → 1d | 74d → 21.44d |
| 1074 | Carga masiva - plantilla | 2022-07-15 A → 2022-11-14 A (+122d) | 2022-12-19 → 2022-11-15 (-34d) | 88d → 1d | 74d → 20.5d |
| 1075 | Recálculo de coeficiente | 2022-07-15 A → 2022-11-15 A (+123d) | 2022-12-19 → 2022-11-16 (-33d) | 88d → 1d | 74d → 19.56d |
| 1076 | Editar información individual | 2022-07-15 A → 2022-11-15 A (+123d) | 2022-12-19 → 2022-11-16 (-33d) | 88d → 1d | 74d → 19.56d |
| 1077 | Cálculo de coeficiente | 2022-07-15 A → 2022-11-15 A (+123d) | 2022-12-19 → 2022-11-16 (-33d) | 88d → 1d | 74d → 19.56d |
| 1078 | Proceso Autorización | 2022-07-15 A → 2022-11-15 A (+123d) | 2022-12-19 → 2022-11-16 (-33d) | 88d → 1d | 74d → 19.56d |
| 1079 | Ventanas emergentes de validación | 2022-07-15 A → 2022-11-15 A (+123d) | 2022-12-19 → 2022-11-16 (-33d) | 88d → 1d | 74d → 19.56d |
| 1080 | Participaciones Federales | 2022-07-15 A → 2022-11-15 A (+123d) | 2022-12-19 → 2022-11-16 (-33d) | 88d → 1d | 74d → 19.56d |
| 1081 | Dashboard Participaciones Federales | 2022-07-15 A → 2022-11-15 A (+123d) | 2022-12-19 → 2022-11-16 (-33d) | 88d → 1d | 74d → 19.56d |
| 1082 | Proceso Envío general Participaciones Federales | 2022-07-15 A → 2022-11-15 A (+123d) | 2022-12-19 → 2022-11-16 (-33d) | 88d → 1d | 74d → 19.56d |
| 1083 | Track general Participaciones Federales | 2022-07-15 A → 2022-11-15 A (+123d) | 2022-12-19 → 2022-11-16 (-33d) | 88d → 1d | 74d → 19.56d |
| 1084 | **Dashboard FG** | 2022-07-15 A → 2022-11-04 A (+112d) | 2022-12-19 → 2022-11-16 (-33d) | 112d → 7.56d | 74d → 19.56d |
| 1085 | Configuración inicial Fondo General (FG) | 2022-07-15 A → 2022-11-04 A (+112d) | 2022-12-19 → 2022-11-07 (-42d) | 88d → 1d | 74d → 26.12d |
| 1086 | Carga inicial | 2022-07-15 A → 2022-11-07 A (+115d) | 2022-12-19 → 2022-11-08 (-41d) | 88d → 1d | 74d → 25.19d |
| 1087 | Pantalla Principal | 2022-07-15 A → 2022-11-08 A (+116d) | 2022-12-19 → 2022-11-09 (-40d) | 88d → 1d | 74d → 24.25d |
| 1088 | Proceso cálculo | 2022-07-15 A → 2022-11-09 A (+117d) | 2022-12-19 → 2022-11-10 (-39d) | 88d → 1d | 74d → 23.31d |
| 1089 | Proceso autorización | 2022-07-15 A → 2022-11-10 A (+118d) | 2022-12-19 → 2022-11-11 (-38d) | 88d → 1d | 74d → 22.38d |
| 1090 | Proceso envío | 2022-07-15 A → 2022-11-11 A (+119d) | 2022-12-19 → 2022-11-14 (-35d) | 88d → 1d | 74d → 21.44d |
| 1091 | Avance programático Fondo General | 2022-07-15 A → 2022-11-14 A (+122d) | 2022-12-19 → 2022-11-15 (-34d) | 88d → 1d | 74d → 20.5d |
| 1092 | Proceso Cancelación Fondo General | 2022-07-15 A → 2022-11-15 A (+123d) | 2022-12-19 → 2022-11-16 (-33d) | 88d → 1d | 74d → 19.56d |
| 1093 | Ventanas emergentes de validación | 2022-07-15 A → 2022-11-15 A (+123d) | 2022-12-19 → 2022-11-16 (-33d) | 88d → 1d | 74d → 19.56d |
| 1094 | **Dashboard FFM 70** | 2022-07-15 A → 2022-10-12 A (+89d) | 2022-12-19 → 2022-11-01 (-48d) | 112d → 13.19d | 74d → 29.88d |
| 1095 | Configuración inicial Fondo Fomento Municipal 70 % (FFM 70% ) | 2022-07-15 A → 2022-10-12 A (+89d) | 2022-12-19 → 2022-10-13 (-67d) | 88d → 1d | 74d → 42.06d |
| 1096 | Carga inicial | 2022-07-15 A → 2022-10-13 A (+90d) | 2022-12-19 → 2022-10-14 (-66d) | 88d → 1d | 74d → 41.12d |
| 1097 | Pantalla Principal | 2022-07-15 A → 2022-10-14 A (+91d) | 2022-12-19 → 2022-10-17 (-63d) | 88d → 1d | 74d → 40.19d |
| 1098 | Proceso cálculo | 2022-07-15 A → 2022-10-17 A (+94d) | 2022-12-19 → 2022-10-18 (-62d) | 88d → 1d | 74d → 39.25d |
| 1099 | Proceso autorización | 2022-07-15 A → 2022-10-18 A (+95d) | 2022-12-19 → 2022-10-19 (-61d) | 88d → 1d | 74d → 38.31d |
| 1100 | Proceso envío | 2022-07-15 A → 2022-10-19 A (+96d) | 2022-12-19 → 2022-10-20 (-60d) | 88d → 1d | 74d → 37.38d |
| 1101 | Track | 2022-07-15 A → 2022-10-20 A (+97d) | 2022-12-19 → 2022-10-21 (-59d) | 88d → 1d | 74d → 36.44d |
| 1102 | Ventanas emergentes de validación | 2022-07-15 A → 2022-10-21 A (+98d) | 2022-12-19 → 2022-10-24 (-56d) | 88d → 1d | 74d → 35.5d |
| 1103 | Configuración inicial Fondo Fomento Municipal 30 % (FFM 30% ) | 2022-07-15 A → 2022-10-31 A (+108d) | 2022-12-19 → 2022-11-01 (-48d) | 88d → 1d | 74d → 29.88d |
| 1104 | **Dashboard FFM 30** | 2022-07-15 A → 2022-10-13 A (+90d) | 2022-12-19 → 2022-10-25 (-55d) | 112d → 7.56d | 74d → 34.56d |
| 1105 | Pantalla Principal | 2022-07-15 A → 2022-10-13 A (+90d) | 2022-12-19 → 2022-10-14 (-66d) | 88d → 1d | 74d → 41.12d |
| 1106 | Carga Inicial | 2022-07-15 A → 2022-10-14 A (+91d) | 2022-12-19 → 2022-10-17 (-63d) | 88d → 1d | 74d → 40.19d |
| 1107 | Proceso cálculo | 2022-07-15 A → 2022-10-17 A (+94d) | 2022-12-19 → 2022-10-18 (-62d) | 88d → 1d | 74d → 39.25d |
| 1108 | Proceso autorización | 2022-07-15 A → 2022-10-18 A (+95d) | 2022-12-19 → 2022-10-19 (-61d) | 88d → 1d | 74d → 38.31d |
| 1109 | Proceso envío | 2022-07-15 A → 2022-10-19 A (+96d) | 2022-12-19 → 2022-10-20 (-60d) | 88d → 1d | 74d → 37.38d |
| 1110 | Track | 2022-07-15 A → 2022-10-20 A (+97d) | 2022-12-19 → 2022-10-21 (-59d) | 88d → 1d | 74d → 36.44d |
| 1111 | Ventanas emergentes de validación | 2022-07-15 A → 2022-10-21 A (+98d) | 2022-12-19 → 2022-10-24 (-56d) | 88d → 1d | 74d → 35.5d |
| 1112 | Configuración inicial Impuesto Especial sobre Producción y Servicios (IEPS) | 2022-07-15 A → 2022-10-24 A (+101d) | 2022-12-19 → 2022-10-25 (-55d) | 88d → 1d | 74d → 34.56d |
| 1113 | **Dashboard IEPS** | 2022-07-15 A → 2022-10-14 A (+91d) | 2022-12-19 → 2022-10-26 (-54d) | 112d → 7.56d | 74d → 33.62d |
| 1114 | Carga inicial | 2022-07-15 A → 2022-10-14 A (+91d) | 2022-12-19 → 2022-10-17 (-63d) | 88d → 1d | 74d → 40.19d |
| 1115 | Pantalla Principal | 2022-07-15 A → 2022-10-17 A (+94d) | 2022-12-19 → 2022-10-18 (-62d) | 88d → 1d | 74d → 39.25d |
| 1116 | Proceso cálculo | 2022-07-15 A → 2022-10-18 A (+95d) | 2022-12-19 → 2022-10-19 (-61d) | 88d → 1d | 74d → 38.31d |
| 1117 | Proceso autorización | 2022-07-15 A → 2022-10-19 A (+96d) | 2022-12-19 → 2022-10-20 (-60d) | 88d → 1d | 74d → 37.38d |
| 1118 | Proceso envío | 2022-07-15 A → 2022-10-20 A (+97d) | 2022-12-19 → 2022-10-21 (-59d) | 88d → 1d | 74d → 36.44d |
| 1119 | Track | 2022-07-15 A → 2022-10-21 A (+98d) | 2022-12-19 → 2022-10-24 (-56d) | 88d → 1d | 74d → 35.5d |
| 1120 | Ventanas emergentes de validación | 2022-07-15 A → 2022-10-24 A (+101d) | 2022-12-19 → 2022-10-25 (-55d) | 88d → 1d | 74d → 34.56d |
| 1121 | Configuración inicial Impuesto sobre la Venta Final de Gasolinas y Diesel (IEPS GyD) | 2022-07-15 A → 2022-10-25 A (+102d) | 2022-12-19 → 2022-10-26 (-54d) | 88d → 1d | 74d → 33.62d |
| 1122 | **Dashboard IEPS GyD** | 2022-07-15 A → 2022-10-14 A (+91d) | 2022-12-19 → 2022-10-25 (-55d) | 112d → 6.62d | 74d → 34.56d |
| 1123 | Carga inicial | 2022-07-15 A → 2022-10-14 A (+91d) | 2022-12-19 → 2022-10-17 (-63d) | 88d → 1d | 74d → 40.19d |
| 1124 | Pantalla Principal | 2022-07-15 A → 2022-10-17 A (+94d) | 2022-12-19 → 2022-10-18 (-62d) | 88d → 1d | 74d → 39.25d |
| 1125 | Proceso cálculo | 2022-07-15 A → 2022-10-18 A (+95d) | 2022-12-19 → 2022-10-19 (-61d) | 88d → 1d | 74d → 38.31d |
| 1126 | Proceso autorización | 2022-07-15 A → 2022-10-19 A (+96d) | 2022-12-19 → 2022-10-20 (-60d) | 88d → 1d | 74d → 37.38d |

| ID | Task | Start | Finish | Duration | Total float | Other |
| --- | --- | --- | --- | --- | --- | --- |
| 1127 | Proceso envío | 2022-07-15 A → 2022-10-20 A (+97d) | 2022-12-19 → 2022-10-21 (-59d) | 88d → 1d | 74d → 36.44d |  |
| 1128 | Track | 2022-07-15 A → 2022-10-21 A (+98d) | 2022-12-19 → 2022-10-24 (-56d) | 88d → 1d | 74d → 35.5d |  |
| 1129 | Ventanas emergentes de validación | 2022-07-15 A → 2022-10-22 A (+99d) | 2022-12-19 → 2022-10-25 (-55d) | 88d → 1d | 74d → 34.56d |  |
| 1130 | **Dashboard ISR Bienes Inmuebles** | 2022-07-15 A → 2022-10-17 A (+94d) | 2022-12-19 → 2022-10-27 (-53d) | 112d → 7.56d | 74d → 32.69d |  |
| 1131 | Pantalla Principal | 2022-07-15 A → 2022-10-17 A (+94d) | 2022-12-19 → 2022-10-18 (-62d) | 88d → 1d | 74d → 39.25d |  |
| 1132 | Carga inicial | 2022-07-15 A → 2022-10-18 A (+95d) | 2022-12-19 → 2022-10-19 (-61d) | 88d → 1d | 74d → 38.31d |  |
| 1133 | Configuración inicial ISR Bienes Inmuebles | 2022-07-15 A → 2022-10-19 A (+96d) | 2022-12-19 → 2022-10-20 (-60d) | 88d → 1d | 74d → 37.38d |  |
| 1134 | Proceso cálculo | 2022-07-15 A → 2022-10-20 A (+97d) | 2022-12-19 → 2022-10-21 (-59d) | 88d → 1d | 74d → 36.44d |  |
| 1135 | Proceso autorización | 2022-07-15 A → 2022-10-21 A (+98d) | 2022-12-19 → 2022-10-24 (-56d) | 88d → 1d | 74d → 35.5d |  |
| 1136 | Proceso envío | 2022-07-15 A → 2022-10-24 A (+101d) | 2022-12-19 → 2022-10-25 (-55d) | 88d → 1d | 74d → 34.56d |  |
| 1137 | Track | 2022-07-15 A → 2022-10-25 A (+102d) | 2022-12-19 → 2022-10-26 (-54d) | 88d → 1d | 74d → 33.62d |  |
| 1138 | Ventanas emergentes de validación | 2022-07-15 A → 2022-10-26 A (+103d) | 2022-12-19 → 2022-10-27 (-53d) | 88d → 1d | 74d → 32.69d |  |
| 1139 | **Dashboard FOFIR** | 2022-07-15 A → 2022-10-18 A (+95d) | 2022-12-19 → 2022-10-28 (-52d) | 112d → 7.56d | 74d → 31.75d |  |
| 1140 | Pantalla Principal | 2022-07-15 A → 2022-10-18 A (+95d) | 2022-12-19 → 2022-10-19 (-61d) | 88d → 1d | 74d → 38.31d |  |
| 1141 | Carga inicial | 2022-07-15 A → 2022-10-19 A (+96d) | 2022-12-19 → 2022-10-20 (-60d) | 88d → 1d | 74d → 37.38d |  |
| 1142 | Configuración inicial Fondo de Fiscalización y Recaudación (FOFIR) | 2022-07-15 A → 2022-10-20 A (+97d) | 2022-12-19 → 2022-10-21 (-59d) | 88d → 1d | 74d → 36.44d |  |
| 1143 | Proceso cálculo | 2022-07-15 A → 2022-10-21 A (+98d) | 2022-12-19 → 2022-10-24 (-56d) | 88d → 1d | 74d → 35.5d |  |
| 1144 | Proceso autorización | 2022-07-15 A → 2022-10-24 A (+101d) | 2022-12-19 → 2022-10-25 (-55d) | 88d → 1d | 74d → 34.56d |  |
| 1145 | Proceso envío | 2022-07-15 A → 2022-10-25 A (+102d) | 2022-12-19 → 2022-10-26 (-54d) | 88d → 1d | 74d → 33.62d |  |
| 1146 | Track | 2022-07-15 A → 2022-10-26 A (+103d) | 2022-12-19 → 2022-10-27 (-53d) | 88d → 1d | 74d → 32.69d |  |
| 1147 | Ventanas emergentes de validación | 2022-07-15 A → 2022-10-27 A (+104d) | 2022-12-19 → 2022-10-28 (-52d) | 88d → 1d | 74d → 31.75d |  |
| 1148 | **Dashboard ISAN** | 2022-07-15 A → 2022-10-19 A (+96d) | 2022-12-19 → 2022-11-02 (-47d) | 112d → 9.44d | 74d → 28.94d |  |
| 1149 | Pantalla Principal | 2022-07-15 A → 2022-10-19 A (+96d) | 2022-12-19 → 2022-10-20 (-60d) | 88d → 1d | 74d → 37.38d |  |
| 1150 | Plantilla Carga Masiva ISAN | 2022-07-15 A → 2022-10-20 A (+97d) | 2022-11-15 A → 2022-10-20 A (-26d) | 88d → 1d |  |  |
| 1151 | Api Plantilla caga masiva Municipio - ISAN | 2022-07-15 A → 2022-10-21 A (+98d) | 2022-11-15 A → 2022-10-21 A (-25d) | 88d → 1d |  |  |
| 1152 | Carga inicial | 2022-07-15 A → 2022-10-24 A (+101d) | 2022-12-19 → 2022-10-25 (-55d) | 88d → 1d | 74d → 34.56d |  |
| 1153 | Configuración inicial Impuesto sobre Automóviles Nuevos (ISAN) | 2022-07-15 A → 2022-10-25 A (+102d) | 2022-12-19 → 2022-10-26 (-54d) | 88d → 1d | 74d → 33.62d |  |
| 1154 | Proceso cálculo | 2022-07-15 A → 2022-10-26 A (+103d) | 2022-12-19 → 2022-10-27 (-53d) | 88d → 1d | 74d → 32.69d |  |
| 1155 | Proceso autorización | 2022-07-15 A → 2022-10-27 A (+104d) | 2022-12-19 → 2022-10-28 (-52d) | 88d → 1d | 74d → 31.75d |  |
| 1156 | Proceso envío | 2022-07-15 A → 2022-10-28 A (+105d) | 2022-12-19 → 2022-10-31 (-49d) | 88d → 1d | 74d → 30.81d |  |
| 1157 | Track | 2022-07-15 A → 2022-10-31 A (+108d) | 2022-12-19 → 2022-11-01 (-48d) | 88d → 1d | 74d → 29.88d |  |
| 1158 | Ventanas emergentes de validación | 2022-07-15 A → 2022-11-01 A (+109d) | 2022-12-19 → 2022-11-02 (-47d) | 88d → 1d | 74d → 28.94d |  |
| 1159 | **Dashboard Comp. ISAN** | 2022-07-15 A → 2022-10-20 A (+97d) | 2022-12-19 → 2022-11-01 (-48d) | 112d → 7.56d | 74d → 29.88d |  |
| 1160 | Pantalla Principal | 2022-07-15 A → 2022-10-20 A (+97d) | 2022-12-19 → 2022-10-21 (-59d) | 88d → 1d | 74d → 36.44d |  |
| 1161 | Carga inicial | 2022-07-15 A → 2022-10-21 A (+98d) | 2022-12-19 → 2022-10-24 (-56d) | 88d → 1d | 74d → 35.5d |  |
| 1162 | Configuración inicial Compensación ISAN | 2022-07-15 A → 2022-10-24 A (+101d) | 2022-12-19 → 2022-10-25 (-55d) | 88d → 1d | 74d → 34.56d |  |
| 1163 | Proceso cálculo | 2022-07-15 A → 2022-10-25 A (+102d) | 2022-12-19 → 2022-10-26 (-54d) | 88d → 1d | 74d → 33.62d |  |
| 1164 | Proceso autorización | 2022-07-15 A → 2022-10-26 A (+103d) | 2022-12-19 → 2022-10-27 (-53d) | 88d → 1d | 74d → 32.69d |  |
| 1165 | Proceso envío | 2022-07-15 A → 2022-10-27 A (+104d) | 2022-12-19 → 2022-10-28 (-52d) | 88d → 1d | 74d → 31.75d |  |
| 1166 | Track | 2022-07-15 A → 2022-10-28 A (+105d) | 2022-12-19 → 2022-10-31 (-49d) | 88d → 1d | 74d → 30.81d |  |
| 1167 | Ventanas emergentes de validación | 2022-07-15 A → 2022-10-31 A (+108d) | 2022-12-19 → 2022-11-01 (-48d) | 88d → 1d | 74d → 29.88d |  |
| 1168 | **Dashboard ISN** | 2022-07-15 A → 2022-10-21 A (+98d) | 2022-12-19 → 2022-11-01 (-48d) | 112d → 6.62d | 74d → 29.88d |  |
| 1169 | Pantalla Principal | 2022-07-15 A → 2022-10-21 A (+98d) | 2022-12-19 → 2022-10-24 (-56d) | 88d → 1d | 74d → 35.5d |  |
| 1170 | Carga configuración inicial fondo ISN | 2022-07-15 A → 2022-10-24 A (+101d) | 2022-12-19 → 2022-10-25 (-55d) | 88d → 1d | 74d → 34.56d |  |
| 1171 | Proceso de cálculo | 2022-07-15 A → 2022-10-25 A (+102d) | 2022-12-19 → 2022-10-26 (-54d) | 88d → 1d | 74d → 33.62d |  |
| 1172 | Proceso de Autorización | 2022-07-15 A → 2022-10-26 A (+103d) | 2022-12-19 → 2022-10-27 (-53d) | 88d → 1d | 74d → 32.69d |  |
| 1173 | Proceso de Envío | 2022-07-15 A → 2022-10-27 A (+104d) | 2022-12-19 → 2022-10-28 (-52d) | 88d → 1d | 74d → 31.75d |  |
| 1174 | Track | 2022-07-15 A → 2022-10-28 A (+105d) | 2022-12-19 → 2022-10-31 (-49d) | 88d → 1d | 74d → 30.81d |  |
| 1175 | Ventanas emergentes de validación | 2022-07-15 A → 2022-10-31 A (+108d) | 2022-12-19 → 2022-11-01 (-48d) | 88d → 1d | 74d → 29.88d |  |
| 1176 | **Dashboard ICV** | 2022-07-15 A → 2022-10-24 A (+101d) | 2022-12-19 → 2022-11-03 (-46d) | 112d → 7.56d | 74d → 28d |  |
| 1177 | Pantalla Principal | 2022-07-15 A → 2022-10-24 A (+101d) | 2022-12-19 → 2022-10-25 (-55d) | 88d → 1d | 74d → 34.56d |  |
| 1178 | Carga Configuración inicial ICV | 2022-07-15 A → 2022-10-25 A (+102d) | 2022-12-19 → 2022-10-26 (-54d) | 88d → 1d | 74d → 33.62d |  |
| 1179 | Carga masiva de ICV - (Plantilla) | 2022-07-15 A → 2022-10-26 A (+103d) | 2022-12-19 → 2022-10-27 (-53d) | 88d → 1d | 74d → 32.69d |  |
| 1180 | Proceso de cálculo | 2022-07-15 A → 2022-10-27 A (+104d) | 2022-12-19 → 2022-10-28 (-52d) | 88d → 1d | 74d → 31.75d |  |
| 1181 | Proceso de Autorización | 2022-07-15 A → 2022-10-28 A (+105d) | 2022-12-19 → 2022-10-31 (-49d) | 88d → 1d | 74d → 30.81d |  |
| 1182 | Proceso de Envío | 2022-07-15 A → 2022-10-31 A (+108d) | 2022-12-19 → 2022-11-01 (-48d) | 88d → 1d | 74d → 29.88d |  |
| 1183 | Track | 2022-07-15 A → 2022-11-01 A (+109d) | 2022-12-19 → 2022-11-02 (-47d) | 88d → 1d | 74d → 28.94d |  |
| 1184 | Ventanas emergentes de validación | 2022-07-15 A → 2022-11-02 A (+110d) | 2022-12-19 → 2022-11-03 (-46d) | 88d → 1d | 74d → 28d |  |
| 1185 | **Dashboard Fondo Ultracrecmiento** | 2022-07-15 A → 2022-10-25 A (+102d) | 2022-12-19 → 2022-11-03 (-46d) | 112d → 6.62d | 74d → 28d |  |
| 1186 | Pantalla Principal | 2022-07-15 A → 2022-10-25 A (+102d) | 2022-12-19 → 2022-10-26 (-54d) | 88d → 1d | 74d → 33.62d |  |
| 1187 | Carga configuración inicial Fondo Ultracrecimiento | 2022-07-15 A → 2022-10-26 A (+103d) | 2022-12-19 → 2022-10-27 (-53d) | 88d → 1d | 74d → 32.69d |  |
| 1188 | Proceso de Autorización | 2022-07-15 A → 2022-10-27 A (+104d) | 2022-12-19 → 2022-10-28 (-52d) | 88d → 1d | 74d → 31.75d |  |
| 1189 | Proceso de Envío | 2022-07-15 A → 2022-10-28 A (+105d) | 2022-12-19 → 2022-10-31 (-49d) | 88d → 1d | 74d → 30.81d |  |
| 1190 | Track | 2022-07-15 A → 2022-10-31 A (+108d) | 2022-12-19 → 2022-11-01 (-48d) | 88d → 1d | 74d → 29.88d |  |
| 1191 | Ventanas emergentes de validación | 2022-07-15 A → 2022-11-01 A (+109d) | 2022-12-19 → 2022-11-02 (-47d) | 88d → 1d | 74d → 28.94d |  |
| 1192 | Generación de reporte | 2022-07-15 A → 2022-11-02 A (+110d) | 2022-12-19 → 2022-11-03 (-46d) | 88d → 1d | 74d → 28d |  |
| 1193 | **Dashboard Fondos Descentralizado** | 2022-07-15 A → 2022-10-11 A (+88d) | 2022-12-19 → 2022-10-19 (-61d) | 112d → 5.69d | 74d → 38.31d |  |
| 1194 | Pantalla Principal | 2022-08-18 → 2022-10-11 (+54d) | 2022-12-19 → 2022-10-12 (-68d) | 88d → 1d | 74d → 114.31d | constraint start no earlier than 2022-07-15 → start no earlier than 2022-10-11 |
| 1195 | Carga configuración inicial Fondo Ultracrecimiento | 2022-08-18 → 2022-10-11 (+54d) | 2022-12-19 → 2022-10-12 (-68d) | 88d → 1d | 74d → 114.31d | constraint start no earlier than 2022-07-15 → start no earlier than 2022-10-11 |
| 1196 | Proceso de cálculo | 2022-07-15 A → 2022-10-12 A (+89d) | 2022-12-19 → 2022-10-13 (-67d) | 88d → 1d | 74d → 42.06d |  |

| ID | Task | Start | Finish | Duration | Complete | Total float | Predecessors |
| --- | --- | --- | --- | --- | --- | --- | --- |
| 1197 | Proceso de Autorización | 2022-07-15 A → 2022-10-13 A (+90d) | 2022-12-19 → 2022-10-14 (-66d) | 88d → 1d |  | 74d → 41.12d |  |
| 1198 | Proceso de Envío | 2022-07-15 A → 2022-10-14 A (+91d) | 2022-12-19 → 2022-10-17 (-63d) | 88d → 1d |  | 74d → 40.19d |  |
| 1199 | Track | 2022-07-15 A → 2022-10-17 A (+94d) | 2022-12-19 → 2022-10-18 (-62d) | 88d → 1d |  | 74d → 39.25d |  |
| 1200 | Ventanas emergentes de validación | 2022-07-15 A → 2022-10-18 A (+95d) | 2022-12-19 → 2022-10-19 (-61d) | 88d → 1d |  | 74d → 38.31d |  |
| 1201 | **Dashboard Fondos Seguridad** | 2022-07-15 A → 2022-10-12 A (+89d) | 2022-12-19 → 2022-10-24 (-56d) | 112d → 7.56d |  | 74d → 35.5d |  |
| 1202 | Pantalla Principal | 2022-07-15 A → 2022-10-12 A (+89d) | 2022-12-19 → 2022-10-13 (-67d) | 88d → 1d |  | 74d → 42.06d |  |
| 1203 | Carga configuración inicial Fondo Seguridad | 2022-07-15 A → 2022-10-13 A (+90d) | 2022-12-19 → 2022-10-14 (-66d) | 88d → 1d |  | 74d → 41.12d |  |
| 1204 | Proceso de cálculo | 2022-07-15 A → 2022-10-14 A (+91d) | 2022-12-19 → 2022-10-17 (-63d) | 88d → 1d |  | 74d → 40.19d |  |
| 1205 | Proceso de Autorización | 2022-07-15 A → 2022-10-17 A (+94d) | 2022-12-19 → 2022-10-18 (-62d) | 88d → 1d |  | 74d → 39.25d |  |
| 1206 | Proceso de Envío | 2022-07-15 A → 2022-10-18 A (+95d) | 2022-12-19 → 2022-10-19 (-61d) | 88d → 1d |  | 74d → 38.31d |  |
| 1207 | Track | 2022-07-15 A → 2022-10-19 A (+96d) | 2022-12-19 → 2022-10-20 (-60d) | 88d → 1d |  | 74d → 37.38d |  |
| 1208 | Ventanas emergentes de validación | 2022-07-15 A → 2022-10-20 A (+97d) | 2022-12-19 → 2022-10-21 (-59d) | 88d → 1d |  | 74d → 36.44d |  |
| 1209 | Generación de reporte | 2022-07-15 A → 2022-10-21 A (+98d) | 2022-12-19 → 2022-10-24 (-56d) | 88d → 1d |  | 74d → 35.5d |  |
| 1210 | **Dashboard Fondos de Desarrollo Municipal** | 2022-07-15 A → 2022-10-13 A (+90d) | 2022-12-19 → 2022-10-25 (-55d) | 112d → 7.56d |  | 74d → 34.56d |  |
| 1211 | Pantalla Principal | 2022-07-15 A → 2022-10-13 A (+90d) | 2022-12-19 → 2022-10-14 (-66d) | 88d → 1d |  | 74d → 41.12d |  |
| 1212 | Carga configuración inicial Fondo Desarrollo Municipal | 2022-07-15 A → 2022-10-14 A (+91d) | 2022-12-19 → 2022-10-17 (-63d) | 88d → 1d |  | 74d → 40.19d |  |
| 1213 | Proceso de cálculo | 2022-07-15 A → 2022-10-17 A (+94d) | 2022-12-19 → 2022-10-18 (-62d) | 88d → 1d |  | 74d → 39.25d |  |
| 1214 | Proceso de Autorización | 2022-07-15 A → 2022-10-18 A (+95d) | 2022-12-19 → 2022-10-19 (-61d) | 88d → 1d |  | 74d → 38.31d |  |
| 1215 | Proceso de Envío | 2022-07-15 A → 2022-10-19 A (+96d) | 2022-12-19 → 2022-10-20 (-60d) | 88d → 1d |  | 74d → 37.38d |  |
| 1216 | Track | 2022-07-15 A → 2022-10-20 A (+97d) | 2022-12-19 → 2022-10-21 (-59d) | 88d → 1d |  | 74d → 36.44d |  |
| 1217 | Ventanas emergentes de validación | 2022-07-15 A → 2022-10-21 A (+98d) | 2022-12-19 → 2022-10-24 (-56d) | 88d → 1d |  | 74d → 35.5d |  |
| 1218 | Generación de reporte | 2022-07-15 A → 2022-10-24 A (+101d) | 2022-12-19 → 2022-10-25 (-55d) | 88d → 1d |  | 74d → 34.56d |  |
| 1219 | **Dashboard Fondos FORTAMUN** | 2022-07-15 A → 2022-10-14 A (+91d) | 2022-12-19 → 2022-10-26 (-54d) | 112d → 7.56d |  | 74d → 33.62d |  |
| 1220 | Pantalla Principal | 2022-07-15 A → 2022-10-14 A (+91d) | 2022-12-19 → 2022-10-17 (-63d) | 88d → 1d |  | 74d → 40.19d |  |
| 1221 | Carga configuración inicial Fondo FORTAMUN | 2022-07-15 A → 2022-10-17 A (+94d) | 2022-12-19 → 2022-10-18 (-62d) | 88d → 1d |  | 74d → 39.25d |  |
| 1222 | Proceso de cálculo | 2022-07-15 A → 2022-10-18 A (+95d) | 2022-12-19 → 2022-10-19 (-61d) | 88d → 1d |  | 74d → 38.31d |  |
| 1223 | Proceso de Autorización | 2022-07-15 A → 2022-10-19 A (+96d) | 2022-12-19 → 2022-10-20 (-60d) | 88d → 1d |  | 74d → 37.38d |  |
| 1224 | Proceso de Envío | 2022-07-15 A → 2022-10-20 A (+97d) | 2022-12-19 → 2022-10-21 (-59d) | 88d → 1d |  | 74d → 36.44d |  |
| 1225 | Track | 2022-07-15 A → 2022-10-21 A (+98d) | 2022-12-19 → 2022-10-24 (-56d) | 88d → 1d |  | 74d → 35.5d |  |
| 1226 | Ventanas emergentes de validación | 2022-07-15 A → 2022-10-24 A (+101d) | 2022-12-19 → 2022-10-25 (-55d) | 88d → 1d |  | 74d → 34.56d |  |
| 1227 | Generación de reporte | 2022-07-15 A → 2022-10-25 A (+102d) | 2022-12-19 → 2022-10-26 (-54d) | 88d → 1d |  | 74d → 33.62d |  |
| 1228 | **Dashboard Fondos FISM** | 2022-07-15 A → 2022-10-17 A (+94d) | 2022-12-19 → 2022-10-31 (-49d) | 112d → 9.44d |  | 74d → 30.81d |  |
| 1229 | Pantalla Principal | 2022-07-15 A → 2022-10-17 A (+94d) | 2022-12-19 → 2022-10-18 (-62d) | 88d → 1d |  | 74d → 39.25d |  |
| 1230 | Carga configuración inicial Fondo FISM | 2022-07-15 A → 2022-10-18 A (+95d) | 2022-12-19 → 2022-10-19 (-61d) | 88d → 1d |  | 74d → 38.31d |  |
| 1231 | Proceso de cálculo | 2022-07-15 A → 2022-10-19 A (+96d) | 2022-12-19 → 2022-10-20 (-60d) | 88d → 1d |  | 74d → 37.38d |  |
| 1232 | Proceso de Autorización | 2022-07-15 A → 2022-10-20 A (+97d) | 2022-12-19 → 2022-10-21 (-59d) | 88d → 1d |  | 74d → 36.44d |  |
| 1233 | Proceso de Envío | 2022-07-15 A → 2022-10-21 A (+98d) | 2022-12-19 → 2022-10-24 (-56d) | 88d → 1d |  | 74d → 35.5d |  |
| 1234 | Track | 2022-07-15 A → 2022-10-24 A (+101d) | 2022-12-19 → 2022-10-25 (-55d) | 88d → 1d |  | 74d → 34.56d |  |
| 1235 | Ventanas emergentes de validación | 2022-07-15 A → 2022-10-25 A (+102d) | 2022-12-19 → 2022-10-26 (-54d) | 88d → 1d |  | 74d → 33.62d |  |
| 1236 | Generación de reporte | 2022-07-15 A → 2022-10-26 A (+103d) | 2022-12-19 → 2022-10-27 (-53d) | 88d → 1d |  | 74d → 32.69d |  |
| 1237 | Generador de estadísticas | 2022-07-15 A → 2022-10-27 A (+104d) | 2022-12-19 → 2022-10-28 (-52d) | 88d → 1d |  | 74d → 31.75d |  |
| 1238 | Generador de reportes | 2022-07-15 A → 2022-10-28 A (+105d) | 2022-12-19 → 2022-10-31 (-49d) | 88d → 1d |  | 74d → 30.81d |  |
| 1239 | **sprint 6** | 2022-08-18 → 2022-10-11 A (+54d) | 2023-01-20 → 2022-11-16 (-65d) | 112d → 24.44d | 3% → 5% | none → 19.56d | none → 31 |
| 1240 | **Módulo DAMOP** | 2022-07-15 A → 2022-10-11 A (+88d) | 2022-12-19 → 2022-11-16 (-33d) | 112d → 24.44d | 3% → 5% | 74d → 19.56d |  |
| 1241 | **Base** | 2022-07-15 A → 2022-10-11 A (+88d) | 2022-12-19 → 2022-10-17 (-63d) | 112d → 3.81d | 0% → 25% | 74d → 40.19d |  |
| 1242 | Pantalla Principal | 2022-07-15 A → 2022-10-11 A (+88d) | 2022-12-19 → 2022-10-12 (-68d) | 88d → 1d |  | 74d → 43d |  |
| 1243 | Pop up Notificaciones | 2022-07-15 A → 2022-10-12 A (+89d) | 2022-12-19 → 2022-10-13 (-67d) | 88d → 1d |  | 74d → 42.06d |  |
| 1244 | Contador de Notificaciones (Icono campanita) | 2022-07-15 A → 2022-10-13 A (+90d) | 2022-12-19 → 2022-10-13 A (-67d) | 88d → 1d | 0% → 100% | 74d → none |  |
| 1245 | Bandeja entrada de Notificaciones | 2022-07-15 A → 2022-10-14 A (+91d) | 2022-12-19 → 2022-10-17 (-63d) | 88d → 1d |  | 74d → 40.19d |  |
| 1246 | **Administración de Municipios** | 2022-07-15 A → 2022-10-12 A (+89d) | 2022-12-19 → 2022-10-31 (-49d) | 112d → 12.25d | 0% → 15% | 74d → 30.81d |  |
| 1247 | Pantalla principal | 2022-07-15 A → 2022-10-12 A (+89d) | 2022-12-19 → 2022-10-13 (-67d) | 88d → 1d |  | 74d → 42.06d |  |
| 1248 | Insertar | 2022-07-15 A → 2022-10-13 A (+90d) | 2022-12-19 → 2022-10-13 A (-67d) | 88d → 1d | 0% → 100% | 74d → none |  |
| 1249 | Contactar Municipio | 2022-07-15 A → 2022-10-14 A (+91d) | 2022-12-19 → 2022-10-17 (-63d) | 88d → 1d |  | 74d → 40.19d |  |
| 1250 | Ver Detalles | 2022-07-15 A → 2022-10-17 A (+94d) | 2022-12-19 → 2022-10-18 (-62d) | 88d → 1d |  | 74d → 39.25d |  |
| 1251 | Configuración de Dashboard | 2022-07-15 A → 2022-10-18 A (+95d) | 2022-12-19 → 2022-10-19 (-61d) | 88d → 1d |  | 74d → 38.31d |  |
| 1252 | Exportación de dashboard PDF | 2022-07-15 A → 2022-10-19 A (+96d) | 2022-12-19 → 2022-10-20 (-60d) | 88d → 1d |  | 74d → 37.38d |  |
| 1253 | Exportación de dashboard Excel | 2022-07-15 A → 2022-10-20 A (+97d) | 2022-12-19 → 2022-10-21 (-59d) | 88d → 1d |  | 74d → 36.44d |  |
| 1254 | Paginación Dashboard | 2022-07-15 A → 2022-10-21 A (+98d) | 2022-12-19 → 2022-10-24 (-56d) | 88d → 1d |  | 74d → 35.5d |  |
| 1255 | Busqueda Dash board | 2022-07-15 A → 2022-10-24 A (+101d) | 2022-12-19 → 2022-10-25 (-55d) | 88d → 1d |  | 74d → 34.56d |  |
| 1256 | Ventanas emergentes de validación | 2022-07-15 A → 2022-10-25 A (+102d) | 2022-12-19 → 2022-10-26 (-54d) | 88d → 1d |  | 74d → 33.62d |  |
| 1257 | Modificar | 2022-07-15 A → 2022-10-26 A (+103d) | 2022-12-19 → 2022-10-26 A (-54d) | 88d → 1d | 0% → 100% | 74d → none |  |
| 1258 | Subida de Archivos | 2022-07-15 A → 2022-10-27 A (+104d) | 2022-12-19 → 2022-10-28 (-52d) | 88d → 1d |  | 74d → 31.75d |  |
| 1259 | Descarga de PDF | 2022-07-15 A → 2022-10-28 A (+105d) | 2022-12-19 → 2022-10-31 (-49d) | 88d → 1d |  | 74d → 30.81d |  |
| 1260 | **Administración de Avisos** | 2022-07-15 A → 2022-10-13 A (+90d) | 2022-12-19 → 2022-10-27 (-53d) | 112d → 9.44d |  | 74d → 32.69d |  |
| 1261 | Pantalla principal | 2022-07-15 A → 2022-10-13 A (+90d) | 2022-12-19 → 2022-10-14 (-66d) | 88d → 1d |  | 74d → 41.12d |  |
| 1262 | Agregar | 2022-07-15 A → 2022-10-14 A (+91d) | 2022-12-19 → 2022-10-17 (-63d) | 88d → 1d |  | 74d → 40.19d |  |
| 1263 | Eliminar | 2022-07-15 A → 2022-10-17 A (+94d) | 2022-12-19 → 2022-10-18 (-62d) | 88d → 1d |  | 74d → 39.25d |  |
| 1264 | Editar | 2022-07-15 A → 2022-10-18 A (+95d) | 2022-12-19 → 2022-10-19 (-61d) | 88d → 1d |  | 74d → 38.31d |  |
| 1265 | Configuración de Dashboard | 2022-07-15 A → 2022-10-19 A (+96d) | 2022-12-19 → 2022-10-20 (-60d) | 88d → 1d |  | 74d → 37.38d |  |
| 1266 | Exportación de dashboard PDF | 2022-07-15 A → 2022-10-20 A (+97d) | 2022-12-19 → 2022-10-21 (-59d) | 88d → 1d |  | 74d → 36.44d |  |

| ID | Task | Start | Finish | Duration | Complete | Total float | Other |
| --- | --- | --- | --- | --- | --- | --- | --- |
| 1267 | Exportación de dashboard Excel | 2022-07-15 A → 2022-10-21 A (+98d) | 2022-12-19 → 2022-10-24 (-56d) | 88d → 1d |  | 74d → 35.5d |  |
| 1268 | Paginación Dashboard | 2022-07-15 A → 2022-10-24 A (+101d) | 2022-12-19 → 2022-10-25 (-55d) | 88d → 1d |  | 74d → 34.56d |  |
| 1269 | Busqueda Dash board | 2022-07-15 A → 2022-10-25 A (+102d) | 2022-12-19 → 2022-10-26 (-54d) | 88d → 1d |  | 74d → 33.62d |  |
| 1270 | Ventanas emergentes de validación | 2022-07-15 A → 2022-10-26 A (+103d) | 2022-12-19 → 2022-10-27 (-53d) | 88d → 1d |  | 74d → 32.69d |  |
| 1271 | **Administración de Eventos** | 2022-07-15 A → 2022-10-14 A (+91d) | 2022-12-19 → 2022-10-28 (-52d) | 112d → 9.44d |  | 74d → 31.75d |  |
| 1272 | Pantalla principal | 2022-07-15 A → 2022-10-14 A (+91d) | 2022-12-19 → 2022-10-17 (-63d) | 88d → 1d |  | 74d → 40.19d |  |
| 1273 | Agregar | 2022-07-15 A → 2022-10-17 A (+94d) | 2022-12-19 → 2022-10-18 (-62d) | 88d → 1d |  | 74d → 39.25d |  |
| 1274 | Eliminar | 2022-07-15 A → 2022-10-18 A (+95d) | 2022-12-19 → 2022-10-19 (-61d) | 88d → 1d |  | 74d → 38.31d |  |
| 1275 | Editar | 2022-07-15 A → 2022-10-19 A (+96d) | 2022-12-19 → 2022-10-20 (-60d) | 88d → 1d |  | 74d → 37.38d |  |
| 1276 | Configuración de Dashboard | 2022-07-15 A → 2022-10-20 A (+97d) | 2022-12-19 → 2022-10-21 (-59d) | 88d → 1d |  | 74d → 36.44d |  |
| 1277 | Exportación de dashboard PDF | 2022-07-15 A → 2022-10-21 A (+98d) | 2022-12-19 → 2022-10-24 (-56d) | 88d → 1d |  | 74d → 35.5d |  |
| 1278 | Exportación de dashboard Excel | 2022-07-15 A → 2022-10-24 A (+101d) | 2022-12-19 → 2022-10-25 (-55d) | 88d → 1d |  | 74d → 34.56d |  |
| 1279 | Paginación Dashboard | 2022-07-15 A → 2022-10-25 A (+102d) | 2022-12-19 → 2022-10-26 (-54d) | 88d → 1d |  | 74d → 33.62d |  |
| 1280 | Busqueda Dash board | 2022-07-15 A → 2022-10-26 A (+103d) | 2022-12-19 → 2022-10-27 (-53d) | 88d → 1d |  | 74d → 32.69d |  |
| 1281 | Ventanas emergentes de validación | 2022-07-15 A → 2022-10-27 A (+104d) | 2022-12-19 → 2022-10-28 (-52d) | 88d → 1d |  | 74d → 31.75d |  |
| 1282 | **Administración de Conceptos** | 2022-07-15 A → 2022-10-17 A (+94d) | 2022-12-19 → 2022-10-21 (-59d) | 112d → 3.81d |  | 74d → 36.44d |  |
| 1283 | Pantalla principal | 2022-07-15 A → 2022-10-17 A (+94d) | 2022-12-19 → 2022-10-18 (-62d) | 88d → 1d |  | 74d → 39.25d |  |
| 1284 | Agregar | 2022-07-15 A → 2022-10-18 A (+95d) | 2022-12-19 → 2022-10-19 (-61d) | 88d → 1d |  | 74d → 38.31d |  |
| 1285 | Eliminar | 2022-07-15 A → 2022-10-19 A (+96d) | 2022-12-19 → 2022-10-20 (-60d) | 88d → 1d |  | 74d → 37.38d |  |
| 1286 | Editar | 2022-07-15 A → 2022-10-20 A (+97d) | 2022-12-19 → 2022-10-21 (-59d) | 88d → 1d |  | 74d → 36.44d |  |
| 1287 | **Administración tasa interés BANXICO** | 2022-07-15 A → 2022-10-18 A (+95d) | 2022-12-19 → 2022-10-25 A (-55d) | 112d → 5.62d | 83% → 100% | 74d → none |  |
| 1288 | Pantalla principal | 2022-07-15 A → 2022-10-18 A (+95d) | 2022-12-19 → 2022-10-18 A (-62d) | 88d → 1d | 0% → 100% | 74d → none |  |
| 1289 | Insertar | 2022-07-15 A → 2022-10-19 A (+96d) | 2022-11-15 A → 2022-10-19 A (-27d) | 88d → 1d |  |  |  |
| 1290 | Modificar | 2022-07-15 A → 2022-10-20 A (+97d) | 2022-11-15 A → 2022-10-20 A (-26d) | 88d → 1d |  |  |  |
| 1291 | Eliminar | 2022-07-15 A → 2022-10-21 A (+98d) | 2022-11-15 A → 2022-10-21 A (-25d) | 88d → 1d |  |  |  |
| 1292 | Visualizar | 2022-07-15 A → 2022-10-24 A (+101d) | 2022-11-15 A → 2022-10-24 A (-22d) | 88d → 1d |  |  |  |
| 1293 | Job de Ejecucion automatica | 2022-07-15 A → 2022-10-25 A (+102d) | 2022-11-15 A → 2022-10-25 A (-21d) | 88d → 1d |  |  |  |
| 1294 | **Anticipo Participaciones** | 2022-07-15 A → 2022-10-19 A (+96d) | 2022-12-19 → 2022-11-09 (-40d) | 112d → 14.12d |  | 74d → 24.25d |  |
| 1295 | Pantalla principal | 2022-07-15 A → 2022-10-19 A (+96d) | 2022-12-19 → 2022-10-20 (-60d) | 88d → 1d |  | 74d → 37.38d |  |
| 1296 | Agregar | 2022-07-15 A → 2022-10-20 A (+97d) | 2022-12-19 → 2022-10-21 (-59d) | 88d → 1d |  | 74d → 36.44d |  |
| 1297 | Eliminar | 2022-07-15 A → 2022-10-21 A (+98d) | 2022-12-19 → 2022-10-24 (-56d) | 88d → 1d |  | 74d → 35.5d |  |
| 1298 | Editar | 2022-07-15 A → 2022-10-24 A (+101d) | 2022-12-19 → 2022-10-25 (-55d) | 88d → 1d |  | 74d → 34.56d |  |
| 1299 | Configuración de Dashboard | 2022-07-15 A → 2022-10-25 A (+102d) | 2022-12-19 → 2022-10-26 (-54d) | 88d → 1d |  | 74d → 33.62d |  |
| 1300 | Exportación de dashboard PDF | 2022-07-15 A → 2022-10-26 A (+103d) | 2022-12-19 → 2022-10-27 (-53d) | 88d → 1d |  | 74d → 32.69d |  |
| 1301 | Exportación de dashboard Excel | 2022-07-15 A → 2022-10-27 A (+104d) | 2022-12-19 → 2022-10-28 (-52d) | 88d → 1d |  | 74d → 31.75d |  |
| 1302 | Paginación Dashboard | 2022-07-15 A → 2022-10-28 A (+105d) | 2022-12-19 → 2022-10-31 (-49d) | 88d → 1d |  | 74d → 30.81d |  |
| 1303 | Busqueda Dash board | 2022-07-15 A → 2022-10-31 A (+108d) | 2022-12-19 → 2022-11-01 (-48d) | 88d → 1d |  | 74d → 29.88d |  |
| 1304 | Ventanas emergentes de validación | 2022-07-15 A → 2022-11-01 A (+109d) | 2022-12-19 → 2022-11-02 (-47d) | 88d → 1d |  | 74d → 28.94d |  |
| 1305 | Carga masiva | 2022-07-15 A → 2022-11-02 A (+110d) | 2022-12-19 → 2022-11-03 (-46d) | 88d → 1d |  | 74d → 28d |  |
| 1306 | Copiar información del mes anterior | 2022-07-15 A → 2022-11-03 A (+111d) | 2022-12-19 → 2022-11-04 (-45d) | 88d → 1d |  | 74d → 27.06d |  |
| 1307 | Proceso de Ajuste | 2022-07-15 A → 2022-11-04 A (+112d) | 2022-12-19 → 2022-11-07 (-42d) | 88d → 1d |  | 74d → 26.12d |  |
| 1308 | Proceso de Enviar | 2022-07-15 A → 2022-11-07 A (+115d) | 2022-12-19 → 2022-11-08 (-41d) | 88d → 1d |  | 74d → 25.19d |  |
| 1309 | Track | 2022-07-15 A → 2022-11-08 A (+116d) | 2022-12-19 → 2022-11-09 (-40d) | 88d → 1d |  | 74d → 24.25d |  |
| 1310 | **Solicitud de Recursos** | 2022-07-15 A → 2022-10-20 A (+97d) | 2022-12-19 → 2022-11-09 (-40d) | 112d → 13.19d |  | 74d → 24.25d |  |
| 1311 | Pantalla principal | 2022-08-18 → 2022-10-20 (+63d) | 2022-12-19 → 2022-10-21 (-59d) | 88d → 1d |  | 74d → 107.75d | constraint start no earlier than 2022-07-15 → start no earlier than 2022-10-20 |
| 1312 | Agregar | 2022-08-18 → 2022-10-20 (+63d) | 2022-12-19 → 2022-10-21 (-59d) | 88d → 1d |  | 74d → 107.75d | constraint start no earlier than 2022-07-15 → start no earlier than 2022-10-20 |
| 1313 | Eliminar | 2022-08-18 → 2022-10-24 (+67d) | 2022-12-19 → 2022-10-25 (-55d) | 88d → 1d |  | 74d → 105.88d | constraint start no earlier than 2022-07-15 → start no earlier than 2022-10-24 |
| 1314 | Editar | 2022-08-18 → 2022-10-24 (+67d) | 2022-12-19 → 2022-10-25 (-55d) | 88d → 1d |  | 74d → 105.88d | constraint start no earlier than 2022-07-15 → start no earlier than 2022-10-24 |
| 1315 | Configuración de Dashboard | 2022-07-15 A → 2022-10-25 A (+102d) | 2022-12-19 → 2022-10-26 (-54d) | 88d → 1d |  | 74d → 33.62d |  |
| 1316 | Exportación de dashboard PDF | 2022-07-15 A → 2022-10-26 A (+103d) | 2022-12-19 → 2022-10-27 (-53d) | 88d → 1d |  | 74d → 32.69d |  |
| 1317 | Exportación de dashboard Excel | 2022-07-15 A → 2022-10-27 A (+104d) | 2022-12-19 → 2022-10-28 (-52d) | 88d → 1d |  | 74d → 31.75d |  |
| 1318 | Paginación Dashboard | 2022-07-15 A → 2022-10-28 A (+105d) | 2022-12-19 → 2022-10-31 (-49d) | 88d → 1d |  | 74d → 30.81d |  |
| 1319 | Busqueda Dash board | 2022-07-15 A → 2022-10-31 A (+108d) | 2022-12-19 → 2022-11-01 (-48d) | 88d → 1d |  | 74d → 29.88d |  |
| 1320 | Ventanas emergentes de validación | 2022-07-15 A → 2022-11-01 A (+109d) | 2022-12-19 → 2022-11-02 (-47d) | 88d → 1d |  | 74d → 28.94d |  |
| 1321 | Carga de documento | 2022-07-15 A → 2022-11-02 A (+110d) | 2022-12-19 → 2022-11-03 (-46d) | 88d → 1d |  | 74d → 28d |  |
| 1322 | Copiar información del mes anterior | 2022-07-15 A → 2022-11-03 A (+111d) | 2022-12-19 → 2022-11-04 (-45d) | 88d → 1d |  | 74d → 27.06d |  |
| 1323 | Dashboard de Solicitud de Recursos sección Solicitudes Pendientes | 2022-07-15 A → 2022-11-04 A (+112d) | 2022-12-19 → 2022-11-07 (-42d) | 88d → 1d |  | 74d → 26.12d |  |
| 1324 | Dashboard de Solicitud de Recursos sección Solicitudes en trámite | 2022-07-15 A → 2022-11-07 A (+115d) | 2022-12-19 → 2022-11-08 (-41d) | 88d → 1d |  | 74d → 25.19d |  |
| 1325 | Track | 2022-07-15 A → 2022-11-08 A (+116d) | 2022-12-19 → 2022-11-09 (-40d) | 88d → 1d |  | 74d → 24.25d |  |
| 1326 | **Dashboard Participaciones Federales** | 2022-07-15 A → 2022-10-21 A (+98d) | 2022-12-19 → 2022-11-03 (-46d) | 112d → 8.5d |  | 74d → 28d |  |
| 1327 | Pantalla principal | 2022-07-15 A → 2022-10-21 A (+98d) | 2022-12-19 → 2022-10-24 (-56d) | 88d → 1d |  | 74d → 35.5d |  |
| 1328 | Busqueda de Mes | 2022-07-15 A → 2022-10-24 A (+101d) | 2022-12-19 → 2022-10-25 (-55d) | 88d → 1d |  | 74d → 34.56d |  |
| 1329 | Busqueda de Año | 2022-07-15 A → 2022-10-25 A (+102d) | 2022-12-19 → 2022-10-26 (-54d) | 88d → 1d |  | 74d → 33.62d |  |
| 1330 | Busqueda general | 2022-07-15 A → 2022-10-26 A (+103d) | 2022-12-19 → 2022-10-27 (-53d) | 88d → 1d |  | 74d → 32.69d |  |
| 1331 | Editar | 2022-07-15 A → 2022-10-27 A (+104d) | 2022-12-19 → 2022-10-28 (-52d) | 88d → 1d |  | 74d → 31.75d |  |
| 1332 | Proceso de Autorizar | 2022-07-15 A → 2022-10-28 A (+105d) | 2022-12-19 → 2022-10-31 (-49d) | 88d → 1d |  | 74d → 30.81d |  |
| 1333 | Proceso de Enviar | 2022-07-15 A → 2022-10-31 A (+108d) | 2022-12-19 → 2022-11-01 (-48d) | 88d → 1d |  | 74d → 29.88d |  |
| 1334 | Track | 2022-07-15 A → 2022-11-01 A (+109d) | 2022-12-19 → 2022-11-02 (-47d) | 88d → 1d |  | 74d → 28.94d |  |
| 1335 | Ventanas emergentes de validación | 2022-07-15 A → 2022-11-02 A (+110d) | 2022-12-19 → 2022-11-03 (-46d) | 88d → 1d |  | 74d → 28d |  |
| 1336 | **Dashboard ISN** | 2022-07-15 A → 2022-10-24 A (+101d) | 2022-12-19 → 2022-11-03 (-46d) | 112d → 7.56d |  | 74d → 28d |  |

| ID | Task | Start | Finish | Duration | Total float |
| --- | --- | --- | --- | --- | --- |
| 1337 | Pantalla principal | 2022-07-15 A → 2022-10-24 A (+101d) | 2022-12-19 → 2022-10-25 (-55d) | 88d → 1d | 74d → 34.56d |
| 1338 | Busqueda de Mes | 2022-07-15 A → 2022-10-25 A (+102d) | 2022-12-19 → 2022-10-26 (-54d) | 88d → 1d | 74d → 33.62d |
| 1339 | Busqueda de Año | 2022-07-15 A → 2022-10-26 A (+103d) | 2022-12-19 → 2022-10-27 (-53d) | 88d → 1d | 74d → 32.69d |
| 1340 | Busqueda | 2022-07-15 A → 2022-10-27 A (+104d) | 2022-12-19 → 2022-10-28 (-52d) | 88d → 1d | 74d → 31.75d |
| 1341 | Proceso de Autorización | 2022-07-15 A → 2022-10-28 A (+105d) | 2022-12-19 → 2022-10-31 (-49d) | 88d → 1d | 74d → 30.81d |
| 1342 | Proceso de Envío | 2022-07-15 A → 2022-10-31 A (+108d) | 2022-12-19 → 2022-11-01 (-48d) | 88d → 1d | 74d → 29.88d |
| 1343 | Track | 2022-07-15 A → 2022-11-01 A (+109d) | 2022-12-19 → 2022-11-02 (-47d) | 88d → 1d | 74d → 28.94d |
| 1344 | Ventanas emergentes de validación | 2022-07-15 A → 2022-11-02 A (+110d) | 2022-12-19 → 2022-11-03 (-46d) | 88d → 1d | 74d → 28d |
| 1345 | **Dashboard ICV** | 2022-07-15 A → 2022-10-25 A (+102d) | 2022-12-19 → 2022-11-04 (-45d) | 112d → 7.56d | 74d → 27.06d |
| 1346 | Pantalla principal | 2022-07-15 A → 2022-10-25 A (+102d) | 2022-12-19 → 2022-10-26 (-54d) | 88d → 1d | 74d → 33.62d |
| 1347 | Busqueda de Mes | 2022-07-15 A → 2022-10-26 A (+103d) | 2022-12-19 → 2022-10-27 (-53d) | 88d → 1d | 74d → 32.69d |
| 1348 | Busqueda de Año | 2022-07-15 A → 2022-10-27 A (+104d) | 2022-12-19 → 2022-10-28 (-52d) | 88d → 1d | 74d → 31.75d |
| 1349 | Busqueda | 2022-07-15 A → 2022-10-28 A (+105d) | 2022-12-19 → 2022-10-31 (-49d) | 88d → 1d | 74d → 30.81d |
| 1350 | Proceso de Autorización | 2022-07-15 A → 2022-10-31 A (+108d) | 2022-12-19 → 2022-11-01 (-48d) | 88d → 1d | 74d → 29.88d |
| 1351 | Proceso de Envío | 2022-07-15 A → 2022-11-01 A (+109d) | 2022-12-19 → 2022-11-02 (-47d) | 88d → 1d | 74d → 28.94d |
| 1352 | Track | 2022-07-15 A → 2022-11-02 A (+110d) | 2022-12-19 → 2022-11-03 (-46d) | 88d → 1d | 74d → 28d |
| 1353 | Ventanas emergentes de validación | 2022-07-15 A → 2022-11-03 A (+111d) | 2022-12-19 → 2022-11-04 (-45d) | 88d → 1d | 74d → 27.06d |
| 1354 | **Dashboard Fondos FORTAMUN** | 2022-07-15 A → 2022-10-26 A (+103d) | 2022-12-19 → 2022-11-07 (-42d) | 112d → 7.56d | 74d → 26.12d |
| 1355 | Pantalla principal | 2022-07-15 A → 2022-10-26 A (+103d) | 2022-12-19 → 2022-10-27 (-53d) | 88d → 1d | 74d → 32.69d |
| 1356 | Busqueda de Mes | 2022-07-15 A → 2022-10-27 A (+104d) | 2022-12-19 → 2022-10-28 (-52d) | 88d → 1d | 74d → 31.75d |
| 1357 | Busqueda de Año | 2022-07-15 A → 2022-10-28 A (+105d) | 2022-12-19 → 2022-10-31 (-49d) | 88d → 1d | 74d → 30.81d |
| 1358 | Busqueda | 2022-07-15 A → 2022-10-31 A (+108d) | 2022-12-19 → 2022-11-01 (-48d) | 88d → 1d | 74d → 29.88d |
| 1359 | Proceso de Autorización | 2022-07-15 A → 2022-11-01 A (+109d) | 2022-12-19 → 2022-11-02 (-47d) | 88d → 1d | 74d → 28.94d |
| 1360 | Proceso de Envío | 2022-07-15 A → 2022-11-02 A (+110d) | 2022-12-19 → 2022-11-03 (-46d) | 88d → 1d | 74d → 28d |
| 1361 | Track | 2022-07-15 A → 2022-11-03 A (+111d) | 2022-12-19 → 2022-11-04 (-45d) | 88d → 1d | 74d → 27.06d |
| 1362 | Ventanas emergentes de validación | 2022-07-15 A → 2022-11-04 A (+112d) | 2022-12-19 → 2022-11-07 (-42d) | 88d → 1d | 74d → 26.12d |
| 1363 | **Dashboard Fondos FISM** | 2022-07-15 A → 2022-10-27 A (+104d) | 2022-12-19 → 2022-11-08 (-41d) | 112d → 7.56d | 74d → 25.19d |
| 1364 | Pantalla principal | 2022-07-15 A → 2022-10-27 A (+104d) | 2022-12-19 → 2022-10-28 (-52d) | 88d → 1d | 74d → 31.75d |
| 1365 | Busqueda de Mes | 2022-07-15 A → 2022-10-28 A (+105d) | 2022-12-19 → 2022-10-31 (-49d) | 88d → 1d | 74d → 30.81d |
| 1366 | Busqueda de Año | 2022-07-15 A → 2022-10-31 A (+108d) | 2022-12-19 → 2022-11-01 (-48d) | 88d → 1d | 74d → 29.88d |
| 1367 | Busqueda | 2022-07-15 A → 2022-11-01 A (+109d) | 2022-12-19 → 2022-11-02 (-47d) | 88d → 1d | 74d → 28.94d |
| 1368 | Proceso de Autorización | 2022-07-15 A → 2022-11-02 A (+110d) | 2022-12-19 → 2022-11-03 (-46d) | 88d → 1d | 74d → 28d |
| 1369 | Proceso de Envío | 2022-07-15 A → 2022-11-03 A (+111d) | 2022-12-19 → 2022-11-04 (-45d) | 88d → 1d | 74d → 27.06d |
| 1370 | Track | 2022-07-15 A → 2022-11-04 A (+112d) | 2022-12-19 → 2022-11-07 (-42d) | 88d → 1d | 74d → 26.12d |
| 1371 | Ventanas emergentes de validación | 2022-07-15 A → 2022-11-05 A (+113d) | 2022-12-19 → 2022-11-08 (-41d) | 88d → 1d | 74d → 25.19d |
| 1372 | **Administración de Fondo ultra crecimiento Zona metropolitana y no Metropolitana** | 2022-07-15 A → 2022-10-28 A (+105d) | 2022-12-19 → 2022-11-16 (-33d) | 112d → 12.25d | 74d → 19.56d |
| 1373 | Pantalla principal | 2022-07-15 A → 2022-10-28 A (+105d) | 2022-12-19 → 2022-10-31 (-49d) | 88d → 1d | 74d → 30.81d |
| 1374 | Filtro mes | 2022-07-15 A → 2022-10-31 A (+108d) | 2022-12-19 → 2022-11-01 (-48d) | 88d → 1d | 74d → 29.88d |
| 1375 | Filtro año | 2022-07-15 A → 2022-11-01 A (+109d) | 2022-12-19 → 2022-11-02 (-47d) | 88d → 1d | 74d → 28.94d |
| 1376 | Filtro busqueda | 2022-07-15 A → 2022-11-02 A (+110d) | 2022-12-19 → 2022-11-03 (-46d) | 88d → 1d | 74d → 28d |
| 1377 | Configuración de Dashboard | 2022-07-15 A → 2022-11-03 A (+111d) | 2022-12-19 → 2022-11-04 (-45d) | 88d → 1d | 74d → 27.06d |
| 1378 | Exportación de dashboard PDF | 2022-07-15 A → 2022-11-04 A (+112d) | 2022-12-19 → 2022-11-07 (-42d) | 88d → 1d | 74d → 26.12d |
| 1379 | Exportación de dashboard Excel | 2022-07-15 A → 2022-11-05 A (+113d) | 2022-12-19 → 2022-11-08 (-41d) | 88d → 1d | 74d → 25.19d |
| 1380 | Paginación Dashboard | 2022-07-15 A → 2022-11-07 A (+115d) | 2022-12-19 → 2022-11-08 (-41d) | 88d → 1d | 74d → 25.19d |
| 1381 | Busqueda Dash board | 2022-07-15 A → 2022-11-08 A (+116d) | 2022-12-19 → 2022-11-09 (-40d) | 88d → 1d | 74d → 24.25d |
| 1382 | Ventanas emergentes de Autorizar por municipio | 2022-07-15 A → 2022-11-09 A (+117d) | 2022-12-19 → 2022-11-10 (-39d) | 88d → 1d | 74d → 23.31d |
| 1383 | Ventanas emergentes de Track por municipio | 2022-07-15 A → 2022-11-10 A (+118d) | 2022-12-19 → 2022-11-11 (-38d) | 88d → 1d | 74d → 22.38d |
| 1384 | Ventanas emergentes de detalles por municipio | 2022-07-15 A → 2022-11-11 A (+119d) | 2022-12-19 → 2022-11-14 (-35d) | 88d → 1d | 74d → 21.44d |
| 1385 | Ventanas emergentes de Adjuntar oficio por municipio | 2022-07-15 A → 2022-11-14 A (+122d) | 2022-12-19 → 2022-11-15 (-34d) | 88d → 1d | 74d → 20.5d |
| 1386 | Ventana repositorio de oficios por municipio | 2022-07-15 A → 2022-11-15 A (+123d) | 2022-12-19 → 2022-11-16 (-33d) | 88d → 1d | 74d → 19.56d |
| 1387 | boton borrar oficio | 2022-07-15 A → 2022-11-15 A (+123d) | 2022-12-19 → 2022-11-16 (-33d) | 88d → 1d | 74d → 19.56d |
| 1388 | boton configurar oficio | 2022-07-15 A → 2022-11-15 A (+123d) | 2022-12-19 → 2022-11-16 (-33d) | 88d → 1d | 74d → 19.56d |
| 1389 | **Administración de Fondo descentralizado Zona Metropolitana y no Metropolitana** | 2022-07-15 A → 2022-10-11 A (+88d) | 2022-12-19 → 2022-11-02 (-47d) | 112d → 15.06d | 74d → 28.94d |
| 1390 | Pantalla principal | 2022-07-15 A → 2022-10-11 A (+88d) | 2022-12-19 → 2022-10-12 (-68d) | 88d → 1d | 74d → 43d |
| 1391 | Filtro mes | 2022-07-15 A → 2022-10-12 A (+89d) | 2022-12-19 → 2022-10-13 (-67d) | 88d → 1d | 74d → 42.06d |
| 1392 | Filtro año | 2022-07-15 A → 2022-10-13 A (+90d) | 2022-12-19 → 2022-10-14 (-66d) | 88d → 1d | 74d → 41.12d |
| 1393 | Filtro busqueda | 2022-07-15 A → 2022-10-14 A (+91d) | 2022-12-19 → 2022-10-17 (-63d) | 88d → 1d | 74d → 40.19d |
| 1394 | Configuración de Dashboard | 2022-07-15 A → 2022-10-17 A (+94d) | 2022-12-19 → 2022-10-18 (-62d) | 88d → 1d | 74d → 39.25d |
| 1395 | Exportación de dashboard PDF | 2022-07-15 A → 2022-10-18 A (+95d) | 2022-12-19 → 2022-10-19 (-61d) | 88d → 1d | 74d → 38.31d |
| 1396 | Exportación de dashboard Excel | 2022-07-15 A → 2022-10-19 A (+96d) | 2022-12-19 → 2022-10-20 (-60d) | 88d → 1d | 74d → 37.38d |
| 1397 | Paginación Dashboard | 2022-07-15 A → 2022-10-20 A (+97d) | 2022-12-19 → 2022-10-21 (-59d) | 88d → 1d | 74d → 36.44d |
| 1398 | Busqueda Dash board | 2022-07-15 A → 2022-10-21 A (+98d) | 2022-12-19 → 2022-10-24 (-56d) | 88d → 1d | 74d → 35.5d |
| 1399 | Ventanas emergentes de Autorizar por municipio | 2022-07-15 A → 2022-10-24 A (+101d) | 2022-12-19 → 2022-10-25 (-55d) | 88d → 1d | 74d → 34.56d |
| 1400 | Ventanas emergentes de Track por municipio | 2022-07-15 A → 2022-10-25 A (+102d) | 2022-12-19 → 2022-10-26 (-54d) | 88d → 1d | 74d → 33.62d |
| 1401 | Ventanas emergentes de detalles por municipio | 2022-07-15 A → 2022-10-26 A (+103d) | 2022-12-19 → 2022-10-27 (-53d) | 88d → 1d | 74d → 32.69d |
| 1402 | Ventanas emergentes de Adjuntar oficio por municipio | 2022-07-15 A → 2022-10-27 A (+104d) | 2022-12-19 → 2022-10-28 (-52d) | 88d → 1d | 74d → 31.75d |
| 1403 | Ventana repositorio de oficios por municipio | 2022-07-15 A → 2022-10-28 A (+105d) | 2022-12-19 → 2022-10-31 (-49d) | 88d → 1d | 74d → 30.81d |
| 1404 | boton borrar oficio | 2022-07-15 A → 2022-10-31 A (+108d) | 2022-12-19 → 2022-11-01 (-48d) | 88d → 1d | 74d → 29.88d |
| 1405 | boton configurar oficio | 2022-07-15 A → 2022-11-01 A (+109d) | 2022-12-19 → 2022-11-02 (-47d) | 88d → 1d | 74d → 28.94d |
| 1406 | **Administración de Fondo de seguridad para municipios Metropolitanos y no Metropolitanos** | 2022-07-15 A → 2022-10-12 A (+89d) | 2022-12-19 → 2022-10-28 (-52d) | 112d → 11.31d | 74d → 31.75d |

| ID | Task | Start | Finish | Duration | Complete | Total float | Predecessors |
| --- | --- | --- | --- | --- | --- | --- | --- |
| 1407 | Pantalla principal | 2022-07-15 A → 2022-10-12 A (+89d) | 2022-12-19 → 2022-10-13 (-67d) | 88d → 1d |  | 74d → 42.06d |  |
| 1408 | Filtro mes | 2022-07-15 A → 2022-10-13 A (+90d) | 2022-12-19 → 2022-10-14 (-66d) | 88d → 1d |  | 74d → 41.12d |  |
| 1409 | Filtro año | 2022-07-15 A → 2022-10-14 A (+91d) | 2022-12-19 → 2022-10-17 (-63d) | 88d → 1d |  | 74d → 40.19d |  |
| 1410 | Filtro busqueda | 2022-07-15 A → 2022-10-17 A (+94d) | 2022-12-19 → 2022-10-18 (-62d) | 88d → 1d |  | 74d → 39.25d |  |
| 1411 | Configuración de Dashboard | 2022-07-15 A → 2022-10-18 A (+95d) | 2022-12-19 → 2022-10-19 (-61d) | 88d → 1d |  | 74d → 38.31d |  |
| 1412 | Exportación de dashboard PDF | 2022-07-15 A → 2022-10-19 A (+96d) | 2022-12-19 → 2022-10-20 (-60d) | 88d → 1d |  | 74d → 37.38d |  |
| 1413 | Exportación de dashboard Excel | 2022-07-15 A → 2022-10-20 A (+97d) | 2022-12-19 → 2022-10-21 (-59d) | 88d → 1d |  | 74d → 36.44d |  |
| 1414 | Paginación Dashboard | 2022-07-15 A → 2022-10-21 A (+98d) | 2022-12-19 → 2022-10-24 (-56d) | 88d → 1d |  | 74d → 35.5d |  |
| 1415 | Busqueda Dash board | 2022-07-15 A → 2022-10-24 A (+101d) | 2022-12-19 → 2022-10-25 (-55d) | 88d → 1d |  | 74d → 34.56d |  |
| 1416 | Ventanas emergentes de Autorizar | 2022-07-15 A → 2022-10-25 A (+102d) | 2022-12-19 → 2022-10-26 (-54d) | 88d → 1d |  | 74d → 33.62d |  |
| 1417 | Ventanas emergentes de Enviar | 2022-07-15 A → 2022-10-26 A (+103d) | 2022-12-19 → 2022-10-27 (-53d) | 88d → 1d |  | 74d → 32.69d |  |
| 1418 | Ventanas emergentes de Track | 2022-07-15 A → 2022-10-27 A (+104d) | 2022-12-19 → 2022-10-28 (-52d) | 88d → 1d |  | 74d → 31.75d |  |
| 1419 | **Administración de Fondo de desarrollo municipal Metropolitanos y no Metropolitanos** | 2022-07-15 A → 2022-10-13 A (+90d) | 2022-12-19 → 2022-11-04 (-45d) | 112d → 15.06d |  | 74d → 27.06d |  |
| 1420 | Pantalla principal | 2022-07-15 A → 2022-10-13 A (+90d) | 2022-12-19 → 2022-10-14 (-66d) | 88d → 1d |  | 74d → 41.12d |  |
| 1421 | Filtro mes | 2022-07-15 A → 2022-10-14 A (+91d) | 2022-12-19 → 2022-10-17 (-63d) | 88d → 1d |  | 74d → 40.19d |  |
| 1422 | Filtro año | 2022-07-15 A → 2022-10-17 A (+94d) | 2022-12-19 → 2022-10-18 (-62d) | 88d → 1d |  | 74d → 39.25d |  |
| 1423 | Filtro busqueda | 2022-07-15 A → 2022-10-18 A (+95d) | 2022-12-19 → 2022-10-19 (-61d) | 88d → 1d |  | 74d → 38.31d |  |
| 1424 | Configuración de Dashboard | 2022-07-15 A → 2022-10-19 A (+96d) | 2022-12-19 → 2022-10-20 (-60d) | 88d → 1d |  | 74d → 37.38d |  |
| 1425 | Exportación de dashboard PDF | 2022-07-15 A → 2022-10-20 A (+97d) | 2022-12-19 → 2022-10-21 (-59d) | 88d → 1d |  | 74d → 36.44d |  |
| 1426 | Exportación de dashboard Excel | 2022-07-15 A → 2022-10-21 A (+98d) | 2022-12-19 → 2022-10-24 (-56d) | 88d → 1d |  | 74d → 35.5d |  |
| 1427 | Paginación Dashboard | 2022-07-15 A → 2022-10-24 A (+101d) | 2022-12-19 → 2022-10-25 (-55d) | 88d → 1d |  | 74d → 34.56d |  |
| 1428 | Busqueda Dash board | 2022-07-15 A → 2022-10-25 A (+102d) | 2022-12-19 → 2022-10-26 (-54d) | 88d → 1d |  | 74d → 33.62d |  |
| 1429 | Ventanas emergentes de Autorizar | 2022-07-15 A → 2022-10-26 A (+103d) | 2022-12-19 → 2022-10-27 (-53d) | 88d → 1d |  | 74d → 32.69d |  |
| 1430 | Ventanas emergentes de Enviar | 2022-07-15 A → 2022-10-27 A (+104d) | 2022-12-19 → 2022-10-28 (-52d) | 88d → 1d |  | 74d → 31.75d |  |
| 1431 | Ventanas emergentes de Track | 2022-07-15 A → 2022-10-28 A (+105d) | 2022-12-19 → 2022-10-31 (-49d) | 88d → 1d |  | 74d → 30.81d |  |
| 1432 | Módulo contacto con municipios | 2022-07-15 A → 2022-10-31 A (+108d) | 2022-12-19 → 2022-11-01 (-48d) | 88d → 1d |  | 74d → 29.88d |  |
| 1433 | Generador de reportes | 2022-07-15 A → 2022-11-01 A (+109d) | 2022-12-19 → 2022-11-02 (-47d) | 88d → 1d |  | 74d → 28.94d |  |
| 1434 | Generador de Estadísticas | 2022-07-15 A → 2022-11-02 A (+110d) | 2022-12-19 → 2022-11-03 (-46d) | 88d → 1d |  | 74d → 28d |  |
| 1435 | Dashboard Calendario | 2022-07-15 A → 2022-11-03 A (+111d) | 2022-12-19 → 2022-11-04 (-45d) | 88d → 1d |  | 74d → 27.06d |  |
| 1436 | **sprint 7** | 2022-08-18 → 2022-11-15 A (+89d) | 2022-09-19 → 2022-11-23 (+65d) | 23d → 4.81d | 0% → 30% | none → 15.75d | none → 459 |
| 1437 | **Módulo DCCP** |  | 2022-12-15 → 2022-11-23 (-22d) | 23d → 4.75d | 0% → 30% | 76d → none |  |
| 1438 | **Dashboard Perfil DCCP** |  | 2022-12-15 → 2022-11-23 (-22d) | 23d → 4.75d | 0% → 30% | 76d → none |  |
| 1439 | Bloqueo de Sesión |  | 2022-12-15 → 2022-11-16 (-29d) | 23d → 1d |  | 76d → 19.56d |  |
| 1440 | Perfil | 2022-11-15 A → 2022-11-16 A (+1d) | 2022-12-15 → 2022-11-17 (-28d) | 23d → 1d |  | 76d → 18.62d |  |
| 1441 | Pop up Notificaciones | 2022-11-15 A → 2022-11-17 A (+2d) | 2022-12-15 → 2022-11-18 (-27d) | 23d → 1d |  | 76d → 17.69d |  |
| 1442 | Contador de Notificaciones (Icono campanita) | 2022-11-15 A → 2022-11-18 A (+3d) | 2022-12-15 → 2022-11-23 A (-22d) | 23d → 2.19d | 0% → 100% | 76d → none |  |
| 1443 | Bandeja entrada de Notificaciones | 2022-11-15 A → 2022-11-21 A (+6d) | 2022-12-15 → 2022-11-23 (-22d) | 23d → 1d |  | 76d → 15.81d |  |
| 1444 | Configuración de Consulta | 2022-11-15 A → 2022-11-22 A (+7d) | 2022-12-15 → 2022-11-23 (-22d) | 23d → 1d |  | 76d → 15.81d |  |
| 1445 | **sprint 8** | 2022-08-18 → 2022-11-15 A (+89d) | 2022-09-19 → 2022-11-23 (+65d) | 23d → 4.81d | 0% → 27% | none → 15.75d | none → 459 |
| 1446 | **Módulo DAF** |  | 2022-12-15 → 2022-11-23 (-22d) | 23d → 4.81d | 0% → 27% | 76d → 15.75d |  |
| 1447 | **Dashboard Perfil DAF** |  | 2022-12-15 → 2022-11-23 (-22d) | 23d → 4.81d | 0% → 27% | 76d → 15.75d |  |
| 1448 | Pantalla Perfil | 2022-11-15 A → 2022-11-16 A (+1d) | 2022-12-15 → 2022-11-17 (-28d) | 23d → 1d |  | 76d → 18.56d |  |
| 1449 | Pop up Notificaciones | 2022-11-15 A → 2022-11-17 A (+2d) | 2022-12-15 → 2022-11-18 (-27d) | 23d → 1d |  | 76d → 17.69d |  |
| 1450 | Contador de Notificaciones (Icono campanita) | 2022-11-15 A → 2022-11-18 A (+3d) | 2022-12-15 → 2022-11-23 A (-22d) | 23d → 2.19d | 0% → 100% | 76d → none |  |
| 1451 | Bandeja entrada de Notificaciones | 2022-11-15 A → 2022-11-19 A (+4d) | 2022-12-15 → 2022-11-23 (-22d) | 23d → 1d |  | 76d → 15.81d |  |
| 1452 | Carga de Speis |  | 2022-12-15 → 2022-11-17 (-28d) | 23d → 1d |  | 76d → 18.56d |  |
| 1453 | Generación de Estadísticas |  | 2022-12-15 → 2022-11-17 (-28d) | 23d → 1d |  | 76d → 18.56d |  |
| 1454 | Generacion de graficas |  | 2022-12-15 → 2022-11-17 (-28d) | 23d → 1d |  | 76d → 18.56d |  |
| 1455 | **sprint 9** | 2022-08-18 → 2022-11-18 A (+92d) | 2022-09-19 → 2022-11-29 (+71d) | 23d → 5.69d | 0% → 17% | none → 12.06d | none → 459 |
| 1456 | **Módulo DPCP** | 2022-11-15 A → 2022-11-18 A (+3d) | 2022-12-15 → 2022-11-29 (-16d) | 23d → 5.69d | 0% → 17% | 76d → 12.06d |  |
| 1457 | **Dashboard Perfil DPCP** | 2022-11-15 A → 2022-11-18 A (+3d) | 2022-12-15 → 2022-11-29 (-16d) | 23d → 5.69d | 0% → 17% | 76d → 12.06d |  |
| 1458 | Pantalla Perfil | 2022-11-15 A → 2022-11-18 A (+3d) | 2022-12-15 → 2022-11-22 (-23d) | 23d → 1d |  | 76d → 16.75d |  |
| 1459 | Pop up Notificaciones | 2022-11-15 A → 2022-11-21 A (+6d) | 2022-12-15 → 2022-11-23 (-22d) | 23d → 1.19d |  | 76d → 15.62d |  |
| 1460 | Contador de Notificaciones (Icono campanita) | 2022-11-15 A → 2022-11-22 A (+7d) | 2022-12-15 → 2022-11-24 A (-21d) | 23d → 1.31d | 0% → 100% | 76d → none |  |
| 1461 | Bandeja entrada de Notificaciones | 2022-11-15 A → 2022-11-23 A (+8d) | 2022-12-15 → 2022-11-24 (-21d) | 23d → 1d |  | 76d → 14.88d |  |
| 1462 | Asignación de Presupuesto | 2022-11-15 A → 2022-11-24 A (+9d) | 2022-12-15 → 2022-11-25 (-20d) | 23d → 1d |  | 76d → 13.94d |  |
| 1463 | Generación de Estadísticas | 2022-11-15 A → 2022-11-25 A (+10d) | 2022-12-15 → 2022-11-28 (-17d) | 23d → 1d |  | 76d → 13d |  |
| 1464 | Generación de graficas | 2022-11-15 A → 2022-11-28 A (+13d) | 2022-12-15 → 2022-11-29 (-16d) | 23d → 1d |  | 76d → 12.06d |  |
| 1465 | **sprint 10** | 2022-08-18 → 2022-11-15 A (+89d) | 2022-09-19 → 2022-12-15 (+87d) | 23d → 19.75d | 3% → 5% | none → 0.81d | none → 459 |
| 1466 | **Módulo Municipios** |  |  | 23d → 19.75d | 3% → 5% | 76d → 0.81d |  |
| 1467 | **Base** | 2022-11-15 A → 2022-11-18 A (+3d) | 2022-12-15 → 2022-11-25 (-20d) | 23d → 3.81d | 40% → 54% | 76d → 13.94d |  |
| 1468 | Buzon | 2022-11-15 A → 2022-11-18 A (+3d) | 2022-12-15 → 2022-11-22 (-23d) | 23d → 1d |  | 76d → 16.75d |  |
| 1469 | Login | 2022-11-15 A → 2022-11-21 A (+6d) | 2022-12-15 A → 2022-11-23 A (-22d) | 23d → 2.19d |  |  |  |
| 1470 | Logout | 2022-11-15 A → 2022-11-22 A (+7d) | 2022-12-15 A → 2022-11-23 A (-22d) | 23d → 1.38d |  |  |  |
| 1471 | Bloqueo de Sesión | 2022-11-15 A → 2022-11-23 A (+8d) | 2022-12-15 → 2022-11-24 (-21d) | 23d → 1d |  | 76d → 14.88d |  |
| 1472 | Perfil | 2022-11-15 A → 2022-11-24 A (+9d) | 2022-12-15 → 2022-11-25 (-20d) | 23d → 1d |  | 76d → 13.94d |  |
| 1473 | **Dashboard Inicio** | 2022-11-15 A → 2022-11-28 A (+13d) | 2022-12-15 → 2022-12-05 (-10d) | 23d → 4.75d |  | 76d → 8.31d |  |
| 1474 | Pantalla Principal | 2022-11-15 A → 2022-11-28 A (+13d) | 2022-12-15 → 2022-11-29 (-16d) | 23d → 1d |  | 76d → 12.06d |  |
| 1475 | Configuración de Dashboard | 2022-11-15 A → 2022-11-29 A (+14d) | 2022-12-15 → 2022-11-30 (-15d) | 23d → 1d |  | 76d → 11.12d |  |
| 1476 | Ventanas emergentes de validación | 2022-11-15 A → 2022-11-30 A (+15d) | 2022-12-15 → 2022-12-01 (-14d) | 23d → 1d |  | 76d → 10.19d |  |

| ID | Task | Start | Finish | Duration | Total float |
| --- | --- | --- | --- | --- | --- |
| 1477 | Ruleta imágenes | 2022-11-15 A → 2022-12-01 A (+16d) | 2022-12-15 → 2022-12-02 (-13d) | 23d → 1d | 76d → 9.25d |
| 1478 | Mensaje de Bienvenida | 2022-11-15 A → 2022-12-02 A (+17d) | 2022-12-15 → 2022-12-05 (-10d) | 23d → 1d | 76d → 8.31d |
| 1479 | **Mis Cuentas** |  |  | 23d → 19.75d | 76d → 0.81d |
| 1480 | Pantalla Principal | 2022-11-15 A → 2022-12-06 A (+21d) | 2022-12-15 → 2022-12-07 (-8d) | 23d → 1d | 76d → 6.44d |
| 1481 | Agregar | 2022-11-15 A → 2022-12-07 A (+22d) | 2022-12-15 → 2022-12-08 (-7d) | 23d → 1d | 76d → 5.5d |
| 1482 | Editar | 2022-11-15 A → 2022-12-08 A (+23d) | 2022-12-15 → 2022-12-09 (-6d) | 23d → 1d | 76d → 4.56d |
| 1483 | Eliminar | 2022-11-15 A → 2022-12-09 A (+24d) | 2022-12-15 → 2022-12-12 (-3d) | 23d → 1d | 76d → 3.62d |
| 1484 | Configuración de Dashboard | 2022-11-15 A → 2022-12-12 A (+27d) | 2022-12-15 → 2022-12-13 (-2d) | 23d → 1d | 76d → 2.69d |
| 1485 | Exportación de dashboard PDF | 2022-11-15 A → 2022-12-13 A (+28d) | 2022-12-15 → 2022-12-14 (-1d) | 23d → 1d | 76d → 1.75d |
| 1486 | Exportación de dashboard Excel | 2022-11-15 A → 2022-12-14 A (+29d) |  | 23d → 1d | 76d → 0.81d |
| 1487 | Paginación Dashboard |  | 2022-12-15 → 2022-11-17 (-28d) | 23d → 1d | 76d → 18.56d |
| 1488 | Busqueda Dash board | 2022-11-15 A → 2022-11-16 A (+1d) | 2022-12-15 → 2022-11-17 (-28d) | 23d → 1d | 76d → 18.56d |
| 1489 | Ventanas emergentes de validación | 2022-11-15 A → 2022-11-17 A (+2d) | 2022-12-15 → 2022-11-18 (-27d) | 23d → 1d | 76d → 17.69d |
| 1490 | **Solicitud de Recursos** | 2022-11-15 A → 2022-11-21 A (+6d) | 2022-12-15 → 2022-12-06 (-9d) | 23d → 9.44d | 76d → 7.38d |
| 1491 | Pantalla Principal | 2022-11-15 A → 2022-11-21 A (+6d) | 2022-12-15 → 2022-11-23 (-22d) | 23d → 1d | 76d → 15.81d |
| 1492 | Agregar | 2022-11-15 A → 2022-11-22 A (+7d) | 2022-12-15 → 2022-11-23 (-22d) | 23d → 1d | 76d → 15.81d |
| 1493 | Editar | 2022-11-15 A → 2022-11-23 A (+8d) | 2022-12-15 → 2022-11-24 (-21d) | 23d → 1d | 76d → 14.88d |
| 1494 | Eliminar | 2022-11-15 A → 2022-11-24 A (+9d) | 2022-12-15 → 2022-11-25 (-20d) | 23d → 1d | 76d → 13.94d |
| 1495 | Configuración de Dashboard | 2022-11-15 A → 2022-11-25 A (+10d) | 2022-12-15 → 2022-11-28 (-17d) | 23d → 1d | 76d → 13d |
| 1496 | Exportación de dashboard PDF | 2022-11-15 A → 2022-11-28 A (+13d) | 2022-12-15 → 2022-11-29 (-16d) | 23d → 1d | 76d → 12.06d |
| 1497 | Exportación de dashboard Excel | 2022-11-15 A → 2022-11-29 A (+14d) | 2022-12-15 → 2022-11-30 (-15d) | 23d → 1d | 76d → 11.12d |
| 1498 | Paginación Dashboard | 2022-11-15 A → 2022-11-30 A (+15d) | 2022-12-15 → 2022-12-01 (-14d) | 23d → 1d | 76d → 10.19d |
| 1499 | Busqueda Dash board | 2022-11-15 A → 2022-12-01 A (+16d) | 2022-12-15 → 2022-12-02 (-13d) | 23d → 1d | 76d → 9.25d |
| 1500 | Ventanas emergentes de validación | 2022-11-15 A → 2022-12-02 A (+17d) | 2022-12-15 → 2022-12-05 (-10d) | 23d → 1d | 76d → 8.31d |
| 1501 | Boton Detalles | 2022-11-15 A → 2022-12-05 A (+20d) | 2022-12-15 → 2022-12-06 (-9d) | 23d → 1d | 76d → 7.38d |
| 1502 | **Dashboard Ayuda** | 2022-11-15 A → 2022-12-07 A (+22d) | 2022-12-15 → 2022-12-09 (-6d) | 23d → 1.94d | 76d → 4.56d |
| 1503 | Pantalla principal | 2022-11-15 A → 2022-12-07 A (+22d) | 2022-12-15 → 2022-12-08 (-7d) | 23d → 1d | 76d → 5.5d |
| 1504 | Configuracion de Enlaces | 2022-11-15 A → 2022-12-08 A (+23d) | 2022-12-15 → 2022-12-09 (-6d) | 23d → 1d | 76d → 4.56d |
| 1505 | **Recepcion de Recursos Participaciones Federales** |  |  | 23d → 19.75d | 76d → 0.81d |
| 1506 | Pantalla Principal | 2022-11-15 A → 2022-12-12 A (+27d) | 2022-12-15 → 2022-12-13 (-2d) | 23d → 1d | 76d → 2.69d |
| 1507 | Agregar | 2022-11-15 A → 2022-12-13 A (+28d) | 2022-12-15 → 2022-12-14 (-1d) | 23d → 1d | 76d → 1.75d |
| 1508 | Editar | 2022-11-15 A → 2022-12-14 A (+29d) |  | 23d → 1d | 76d → 0.81d |
| 1509 | Eliminar |  | 2022-12-15 → 2022-11-17 (-28d) | 23d → 1d | 76d → 18.56d |
| 1510 | Configuración de Dashboard | 2022-11-15 A → 2022-11-16 A (+1d) | 2022-12-15 → 2022-11-17 (-28d) | 23d → 1d | 76d → 18.56d |
| 1511 | Exportación de dashboard PDF | 2022-11-15 A → 2022-11-17 A (+2d) | 2022-12-15 → 2022-11-18 (-27d) | 23d → 1d | 76d → 17.69d |
| 1512 | Exportación de dashboard Excel | 2022-11-15 A → 2022-11-18 A (+3d) | 2022-12-15 → 2022-11-22 (-23d) | 23d → 1d | 76d → 16.75d |
| 1513 | Paginación Dashboard | 2022-11-15 A → 2022-11-21 A (+6d) | 2022-12-15 → 2022-11-23 (-22d) | 23d → 1d | 76d → 15.81d |
| 1514 | Busqueda Dash board | 2022-11-15 A → 2022-11-22 A (+7d) | 2022-12-15 → 2022-11-23 (-22d) | 23d → 1d | 76d → 15.81d |
| 1515 | Ventanas emergentes de validación | 2022-11-15 A → 2022-11-23 A (+8d) | 2022-12-15 → 2022-11-24 (-21d) | 23d → 1d | 76d → 14.88d |
| 1516 | **Recepcion de Recursos Participaciones Estatales** | 2022-11-15 A → 2022-11-25 A (+10d) | 2022-12-15 → 2022-12-09 (-6d) | 23d → 9.44d | 76d → 4.56d |
| 1517 | Pantalla Principal | 2022-11-15 A → 2022-11-25 A (+10d) | 2022-12-15 → 2022-11-28 (-17d) | 23d → 1d | 76d → 13d |
| 1518 | Agregar | 2022-11-15 A → 2022-11-28 A (+13d) | 2022-12-15 → 2022-11-29 (-16d) | 23d → 1d | 76d → 12.06d |
| 1519 | Editar | 2022-11-15 A → 2022-11-29 A (+14d) | 2022-12-15 → 2022-11-30 (-15d) | 23d → 1d | 76d → 11.12d |
| 1520 | Eliminar | 2022-11-15 A → 2022-11-30 A (+15d) | 2022-12-15 → 2022-12-01 (-14d) | 23d → 1d | 76d → 10.19d |
| 1521 | Configuración de Dashboard | 2022-11-15 A → 2022-12-01 A (+16d) | 2022-12-15 → 2022-12-02 (-13d) | 23d → 1d | 76d → 9.25d |
| 1522 | Exportación de dashboard PDF | 2022-11-15 A → 2022-12-02 A (+17d) | 2022-12-15 → 2022-12-05 (-10d) | 23d → 1d | 76d → 8.31d |
| 1523 | Exportación de dashboard Excel | 2022-11-15 A → 2022-12-05 A (+20d) | 2022-12-15 → 2022-12-06 (-9d) | 23d → 1d | 76d → 7.38d |
| 1524 | Paginación Dashboard | 2022-11-15 A → 2022-12-06 A (+21d) | 2022-12-15 → 2022-12-07 (-8d) | 23d → 1d | 76d → 6.44d |
| 1525 | Busqueda Dash board | 2022-11-15 A → 2022-12-07 A (+22d) | 2022-12-15 → 2022-12-08 (-7d) | 23d → 1d | 76d → 5.5d |
| 1526 | Ventanas emergentes de validación | 2022-11-15 A → 2022-12-08 A (+23d) | 2022-12-15 → 2022-12-09 (-6d) | 23d → 1d | 76d → 4.56d |
| 1527 | **Recepcion de Recursos Aportaciones Federales** |  |  | 23d → 19.75d | 76d → 0.81d |
| 1528 | Pantalla Principal | 2022-11-15 A → 2022-12-12 A (+27d) | 2022-12-15 → 2022-12-13 (-2d) | 23d → 1d | 76d → 2.69d |
| 1529 | Agregar | 2022-11-15 A → 2022-12-13 A (+28d) | 2022-12-15 → 2022-12-14 (-1d) | 23d → 1d | 76d → 1.75d |
| 1530 | Editar | 2022-11-15 A → 2022-12-14 A (+29d) |  | 23d → 1d | 76d → 0.81d |
| 1531 | Eliminar |  | 2022-12-15 → 2022-11-17 (-28d) | 23d → 1d | 76d → 18.56d |
| 1532 | Configuración de Dashboard | 2022-11-15 A → 2022-11-16 A (+1d) | 2022-12-15 → 2022-11-17 (-28d) | 23d → 1d | 76d → 18.56d |
| 1533 | Exportación de dashboard PDF | 2022-11-15 A → 2022-11-17 A (+2d) | 2022-12-15 → 2022-11-18 (-27d) | 23d → 1d | 76d → 17.69d |
| 1534 | Exportación de dashboard Excel | 2022-11-15 A → 2022-11-18 A (+3d) | 2022-12-15 → 2022-11-22 (-23d) | 23d → 1d | 76d → 16.75d |
| 1535 | Paginación Dashboard | 2022-11-15 A → 2022-11-21 A (+6d) | 2022-12-15 → 2022-11-23 (-22d) | 23d → 1d | 76d → 15.81d |
| 1536 | Busqueda Dash board | 2022-11-15 A → 2022-11-22 A (+7d) | 2022-12-15 → 2022-11-23 (-22d) | 23d → 1d | 76d → 15.81d |
| 1537 | Ventanas emergentes de validación | 2022-11-15 A → 2022-11-23 A (+8d) | 2022-12-15 → 2022-11-24 (-21d) | 23d → 1d | 76d → 14.88d |
| 1538 | **Recepcion de Recursos Aportaciones Estatales** | 2022-11-15 A → 2022-11-25 A (+10d) | 2022-12-15 → 2022-12-08 (-7d) | 23d → 8.5d | 76d → 5.5d |
| 1539 | Pantalla Principal | 2022-11-15 A → 2022-11-25 A (+10d) | 2022-12-15 → 2022-11-28 (-17d) | 23d → 1d | 76d → 13d |
| 1540 | Agregar | 2022-11-15 A → 2022-11-25 A (+10d) | 2022-12-15 → 2022-11-28 (-17d) | 23d → 1d | 76d → 13d |
| 1541 | Editar | 2022-11-15 A → 2022-11-28 A (+13d) | 2022-12-15 → 2022-11-29 (-16d) | 23d → 1d | 76d → 12.06d |
| 1542 | Eliminar | 2022-11-15 A → 2022-11-29 A (+14d) | 2022-12-15 → 2022-11-30 (-15d) | 23d → 1d | 76d → 11.12d |
| 1543 | Configuración de Dashboard | 2022-11-15 A → 2022-11-30 A (+15d) | 2022-12-15 → 2022-12-01 (-14d) | 23d → 1d | 76d → 10.19d |
| 1544 | Exportación de dashboard PDF | 2022-11-15 A → 2022-12-01 A (+16d) | 2022-12-15 → 2022-12-02 (-13d) | 23d → 1d | 76d → 9.25d |
| 1545 | Exportación de dashboard Excel | 2022-11-15 A → 2022-12-02 A (+17d) | 2022-12-15 → 2022-12-05 (-10d) | 23d → 1d | 76d → 8.31d |
| 1546 | Paginación Dashboard | 2022-11-15 A → 2022-12-05 A (+20d) | 2022-12-15 → 2022-12-06 (-9d) | 23d → 1d | 76d → 7.38d |

| ID | Task | Start | Finish | Duration | Complete | Total float | Predecessors |
| --- | --- | --- | --- | --- | --- | --- | --- |
| 1547 | Busqueda Dash board | 2022-11-15 A → 2022-12-06 A (+21d) | 2022-12-15 → 2022-12-07 (-8d) | 23d → 1d |  | 76d → 6.44d |  |
| 1548 | Ventanas emergentes de validación | 2022-11-15 A → 2022-12-07 A (+22d) | 2022-12-15 → 2022-12-08 (-7d) | 23d → 1d |  | 76d → 5.5d |  |
| 1549 | **sprint 11** | 2022-08-18 → 2022-11-15 A (+89d) | 2022-09-19 → 2022-12-15 (+87d) | 23d → 19.75d | 0% → 3% | none → 0.81d | none → 459 |
| 1550 | **Módulo OPD** |  |  | 23d → 19.75d | 0% → 3% | 76d → 0.81d |  |
| 1551 | **Base** |  | 2022-12-15 → 2022-11-23 (-22d) | 23d → 5.19d | 0% → 42% | 76d → 15.37d |  |
| 1552 | Perfil |  | 2022-12-15 → 2022-11-17 (-28d) | 23d → 1d |  | 76d → 18.56d |  |
| 1553 | Pop up Notificaciones | 2022-11-15 A → 2022-11-16 A (+1d) | 2022-12-15 → 2022-11-17 (-28d) | 23d → 1d |  | 76d → 18.56d |  |
| 1554 | Contador de Notificaciones (Icono campanita) | 2022-11-15 A → 2022-11-17 A (+2d) | 2022-12-15 → 2022-11-23 A (-22d) | 23d → 2.19d | 0% → 100% | 76d → none |  |
| 1555 | Bandeja entrada de Notificaciones | 2022-11-15 A → 2022-11-18 A (+3d) | 2022-12-15 → 2022-11-22 (-23d) | 23d → 1d |  | 76d → 16.75d |  |
| 1556 | **Dashboard mis cuentas** | 2022-11-15 A → 2022-11-22 A (+7d) | 2022-12-15 → 2022-12-06 (-9d) | 23d → 9.44d |  | 76d → 7.38d |  |
| 1557 | Pantalla Principal | 2022-11-15 A → 2022-11-22 A (+7d) | 2022-12-15 → 2022-11-23 (-22d) | 23d → 1d |  | 76d → 15.81d |  |
| 1558 | Configuración de Dashboard | 2022-11-15 A → 2022-11-23 A (+8d) | 2022-12-15 → 2022-11-24 (-21d) | 23d → 1d |  | 76d → 14.88d |  |
| 1559 | Exportación de dashboard PDF | 2022-11-15 A → 2022-11-24 A (+9d) | 2022-12-15 → 2022-11-25 (-20d) | 23d → 1d |  | 76d → 13.94d |  |
| 1560 | Exportación de dashboard Excel | 2022-11-15 A → 2022-11-25 A (+10d) | 2022-12-15 → 2022-11-28 (-17d) | 23d → 1d |  | 76d → 13d |  |
| 1561 | Paginación Dashboard | 2022-11-15 A → 2022-11-28 A (+13d) | 2022-12-15 → 2022-11-29 (-16d) | 23d → 1d |  | 76d → 12.06d |  |
| 1562 | Busqueda Dashboard | 2022-11-15 A → 2022-11-29 A (+14d) | 2022-12-15 → 2022-11-30 (-15d) | 23d → 1d |  | 76d → 11.12d |  |
| 1563 | Agregar | 2022-11-15 A → 2022-11-30 A (+15d) | 2022-12-15 → 2022-12-01 (-14d) | 23d → 1d |  | 76d → 10.19d |  |
| 1564 | Editar | 2022-11-15 A → 2022-12-01 A (+16d) | 2022-12-15 → 2022-12-02 (-13d) | 23d → 1d |  | 76d → 9.25d |  |
| 1565 | Eliminar | 2022-11-15 A → 2022-12-02 A (+17d) | 2022-12-15 → 2022-12-05 (-10d) | 23d → 1d |  | 76d → 8.31d |  |
| 1566 | Ventanas emergentes de validación | 2022-11-15 A → 2022-12-05 A (+20d) | 2022-12-15 → 2022-12-06 (-9d) | 23d → 1d |  | 76d → 7.38d |  |
| 1567 | **Dashboard Facturación** |  |  | 23d → 19.75d |  | 76d → 0.81d |  |
| 1568 | Pantalla Principal | 2022-11-15 A → 2022-12-06 A (+21d) | 2022-12-15 → 2022-12-07 (-8d) | 23d → 1d |  | 76d → 6.44d |  |
| 1569 | Configuración de Dashboard | 2022-11-15 A → 2022-12-07 A (+22d) | 2022-12-15 → 2022-12-08 (-7d) | 23d → 1d |  | 76d → 5.5d |  |
| 1570 | Exportación de dashboard PDF | 2022-11-15 A → 2022-12-08 A (+23d) | 2022-12-15 → 2022-12-09 (-6d) | 23d → 1d |  | 76d → 4.56d |  |
| 1571 | Exportación de dashboard Excel | 2022-11-15 A → 2022-12-09 A (+24d) | 2022-12-15 → 2022-12-12 (-3d) | 23d → 1d |  | 76d → 3.62d |  |
| 1572 | Paginación Dashboard | 2022-11-15 A → 2022-12-12 A (+27d) | 2022-12-15 → 2022-12-13 (-2d) | 23d → 1d |  | 76d → 2.69d |  |
| 1573 | Busqueda Dashboard | 2022-11-15 A → 2022-12-13 A (+28d) | 2022-12-15 → 2022-12-14 (-1d) | 23d → 1d |  | 76d → 1.75d |  |
| 1574 | Ventanas de visualización de detalle | 2022-11-15 A → 2022-12-14 A (+29d) |  | 23d → 1d |  | 76d → 0.81d |  |
| 1575 | Busqueda por Año |  | 2022-12-15 → 2022-11-17 (-28d) | 23d → 1d |  | 76d → 18.56d |  |
| 1576 | **Dashboard Solicitud de recursos** | 2022-11-15 A → 2022-11-16 A (+1d) | 2022-12-15 → 2022-11-23 (-22d) | 23d → 3.81d |  | 76d → 15.81d |  |
| 1577 | Pantalla Principal | 2022-11-15 A → 2022-11-16 A (+1d) | 2022-12-15 → 2022-11-17 (-28d) | 23d → 1d |  | 76d → 18.56d |  |
| 1578 | Configuración de Dashboard | 2022-11-15 A → 2022-11-17 A (+2d) | 2022-12-15 → 2022-11-18 (-27d) | 23d → 1d |  | 76d → 17.69d |  |
| 1579 | Exportación de dashboard PDF | 2022-11-15 A → 2022-11-18 A (+3d) | 2022-12-15 → 2022-11-22 (-23d) | 23d → 1d |  | 76d → 16.75d |  |
| 1580 | Exportación de dashboard Excel | 2022-11-15 A → 2022-11-21 A (+6d) | 2022-12-15 → 2022-11-23 (-22d) | 23d → 1d |  | 76d → 15.81d |  |
| 1581 | Paginación Dashboard | 2022-11-15 A → 2022-11-22 A (+7d) | 2022-12-15 → 2022-11-23 (-22d) | 23d → 1d |  | 76d → 15.81d |  |
| 1582 | **Busqueda Dashboard** | 2022-11-15 A → 2022-11-23 A (+8d) | 2022-12-15 → 2022-12-05 (-10d) | 23d → 7.56d |  | 76d → 8.31d |  |
| 1583 | Pantalla Principal | 2022-11-15 A → 2022-11-23 A (+8d) | 2022-12-15 → 2022-11-24 (-21d) | 23d → 1d |  | 76d → 14.88d |  |
| 1584 | Agregar | 2022-11-15 A → 2022-11-24 A (+9d) | 2022-12-15 → 2022-11-25 (-20d) | 23d → 1d |  | 76d → 13.94d |  |
| 1585 | Editar | 2022-11-15 A → 2022-11-25 A (+10d) | 2022-12-15 → 2022-11-28 (-17d) | 23d → 1d |  | 76d → 13d |  |
| 1586 | Eliminar | 2022-11-15 A → 2022-11-28 A (+13d) | 2022-12-15 → 2022-11-29 (-16d) | 23d → 1d |  | 76d → 12.06d |  |
| 1587 | Ventanas emergentes de validación | 2022-11-15 A → 2022-11-29 A (+14d) | 2022-12-15 → 2022-11-30 (-15d) | 23d → 1d |  | 76d → 11.12d |  |
| 1588 | Busqueda por Año | 2022-11-15 A → 2022-11-30 A (+15d) | 2022-12-15 → 2022-12-01 (-14d) | 23d → 1d |  | 76d → 10.19d |  |
| 1589 | Carga de documentos | 2022-11-15 A → 2022-12-01 A (+16d) | 2022-12-15 → 2022-12-02 (-13d) | 23d → 1d |  | 76d → 9.25d |  |
| 1590 | PDF generado por la solicitud de recursos | 2022-11-15 A → 2022-12-02 A (+17d) | 2022-12-15 → 2022-12-05 (-10d) | 23d → 1d |  | 76d → 8.31d |  |
| 1591 | **Dashboard menu preguntas frecuentes** | 2022-11-15 A → 2022-12-05 A (+20d) | 2022-12-15 → 2022-12-07 (-8d) | 23d → 1.94d |  | 76d → 6.44d |  |
| 1592 | Pantalla Principal | 2022-11-15 A → 2022-12-05 A (+20d) | 2022-12-15 → 2022-12-06 (-9d) | 23d → 1d |  | 76d → 7.38d |  |
| 1593 | Configuracion de dashboard | 2022-11-15 A → 2022-12-06 A (+21d) | 2022-12-15 → 2022-12-07 (-8d) | 23d → 1d |  | 76d → 6.44d |  |
| 1594 | **Dashboard Recepción de recursos** |  |  | 23d → 19.75d |  | 76d → 0.81d |  |
| 1595 | Pantalla Principal | 2022-11-15 A → 2022-12-08 A (+23d) | 2022-12-15 → 2022-12-09 (-6d) | 23d → 1d |  | 76d → 4.56d |  |
| 1596 | Configuracion de dashboard | 2022-11-15 A → 2022-12-09 A (+24d) | 2022-12-15 → 2022-12-12 (-3d) | 23d → 1d |  | 76d → 3.62d |  |
| 1597 | Exportación de dashboard PDF | 2022-11-15 A → 2022-12-12 A (+27d) | 2022-12-15 → 2022-12-13 (-2d) | 23d → 1d |  | 76d → 2.69d |  |
| 1598 | Exportación de dashboard Excel | 2022-11-15 A → 2022-12-13 A (+28d) | 2022-12-15 → 2022-12-14 (-1d) | 23d → 1d |  | 76d → 1.75d |  |
| 1599 | Paginación Dashboard | 2022-11-15 A → 2022-12-14 A (+29d) |  | 23d → 1d |  | 76d → 0.81d |  |
| 1600 | Busqueda Dashboard |  | 2022-12-15 → 2022-11-17 (-28d) | 23d → 1d |  | 76d → 18.56d |  |
| 1601 | Subida de Archivo | 2022-11-15 A → 2022-11-16 A (+1d) | 2022-12-15 → 2022-11-17 (-28d) | 23d → 1d |  | 76d → 18.56d |  |
| 1602 | **Dashboard Recepción de recursos sección participaciones estatales** | 2022-11-15 A → 2022-11-17 A (+2d) | 2022-12-15 → 2022-11-28 (-17d) | 23d → 5.69d |  | 76d → 13d |  |
| 1603 | Pantalla Principal | 2022-11-15 A → 2022-11-17 A (+2d) | 2022-12-15 → 2022-11-18 (-27d) | 23d → 1d |  | 76d → 17.69d |  |
| 1604 | Configuracion de dashboard | 2022-11-15 A → 2022-11-18 A (+3d) | 2022-12-15 → 2022-11-22 (-23d) | 23d → 1d |  | 76d → 16.75d |  |
| 1605 | Exportación de dashboard PDF | 2022-11-15 A → 2022-11-21 A (+6d) | 2022-12-15 → 2022-11-23 (-22d) | 23d → 1d |  | 76d → 15.81d |  |
| 1606 | Exportación de dashboard Excel | 2022-11-15 A → 2022-11-22 A (+7d) | 2022-12-15 → 2022-11-23 (-22d) | 23d → 1d |  | 76d → 15.81d |  |
| 1607 | Paginación Dashboard | 2022-11-15 A → 2022-11-23 A (+8d) | 2022-12-15 → 2022-11-24 (-21d) | 23d → 1d |  | 76d → 14.88d |  |
| 1608 | Busqueda Dashboard | 2022-11-15 A → 2022-11-24 A (+9d) | 2022-12-15 → 2022-11-25 (-20d) | 23d → 1d |  | 76d → 13.94d |  |
| 1609 | Subida de Archivo | 2022-11-15 A → 2022-11-25 A (+10d) | 2022-12-15 → 2022-11-28 (-17d) | 23d → 1d |  | 76d → 13d |  |
| 1610 | **Dashboard Recepción de recursos sección aportaciones federales** | 2022-11-15 A → 2022-11-28 A (+13d) | 2022-12-15 → 2022-12-07 (-8d) | 23d → 6.62d |  | 76d → 6.44d |  |
| 1611 | Pantalla Principal | 2022-11-15 A → 2022-11-28 A (+13d) | 2022-12-15 → 2022-11-29 (-16d) | 23d → 1d |  | 76d → 12.06d |  |
| 1612 | Configuracion de dashboard | 2022-11-15 A → 2022-11-29 A (+14d) | 2022-12-15 → 2022-11-30 (-15d) | 23d → 1d |  | 76d → 11.12d |  |
| 1613 | Exportación de dashboard PDF | 2022-11-15 A → 2022-11-30 A (+15d) | 2022-12-15 → 2022-12-01 (-14d) | 23d → 1d |  | 76d → 10.19d |  |
| 1614 | Exportación de dashboard Excel | 2022-11-15 A → 2022-12-01 A (+16d) | 2022-12-15 → 2022-12-02 (-13d) | 23d → 1d |  | 76d → 9.25d |  |
| 1615 | Paginación Dashboard | 2022-11-15 A → 2022-12-02 A (+17d) | 2022-12-15 → 2022-12-05 (-10d) | 23d → 1d |  | 76d → 8.31d |  |
| 1616 | Busqueda Dashboard | 2022-11-15 A → 2022-12-05 A (+20d) | 2022-12-15 → 2022-12-06 (-9d) | 23d → 1d |  | 76d → 7.38d |  |

| ID | Task | Start | Finish | Duration | Total float | Predecessors | Other |
| --- | --- | --- | --- | --- | --- | --- | --- |
| 1617 | Subida de Archivo | 2022-11-15 A → 2022-12-06 A (+21d) | 2022-12-15 → 2022-12-07 (-8d) | 23d → 1d | 76d → 6.44d |  |  |
| 1618 | **Dashboard Recepción de recursos sección aportaciones estatales** | 2022-11-15 A → 2022-12-07 A (+22d) |  | 23d → 5.69d | 76d → 0.81d |  |  |
| 1619 | Pantalla Principal | 2022-11-15 A → 2022-12-07 A (+22d) | 2022-12-15 → 2022-12-08 (-7d) | 23d → 1d | 76d → 5.5d |  |  |
| 1620 | Configuracion de dashboard | 2022-11-15 A → 2022-12-08 A (+23d) | 2022-12-15 → 2022-12-09 (-6d) | 23d → 1d | 76d → 4.56d |  |  |
| 1621 | Exportación de dashboard PDF | 2022-11-15 A → 2022-12-09 A (+24d) | 2022-12-15 → 2022-12-12 (-3d) | 23d → 1d | 76d → 3.62d |  |  |
| 1622 | Exportación de dashboard Excel | 2022-11-15 A → 2022-12-12 A (+27d) | 2022-12-15 → 2022-12-13 (-2d) | 23d → 1d | 76d → 2.69d |  |  |
| 1623 | Paginación Dashboard | 2022-11-15 A → 2022-12-13 A (+28d) | 2022-12-15 → 2022-12-14 (-1d) | 23d → 1d | 76d → 1.75d |  |  |
| 1624 | Busqueda Dashboard | 2022-11-15 A → 2022-12-14 A (+29d) |  | 23d → 1d | 76d → 0.81d |  |  |
| 1625 | Subida de Archivo | 2022-11-15 A → 2022-12-09 A (+24d) | 2022-12-15 → 2022-12-12 (-3d) | 23d → 1d | 76d → 3.62d |  |  |
| 1626 | **Fase 3 Pruebas Unitarias e Integrales** | 2022-11-15 → 2022-11-16 (+1d) | 2022-12-23 → 2022-12-08 (-15d) | 29d → 14.62d |  | none → 847 |  |
| 1627 | **Pruebas Unitarias** | 2022-11-15 → 2022-11-16 (+1d) | 2022-12-23 → 2022-11-25 (-28d) | 29d → 5.94d | none → 8.69d |  |  |
| 1628 | Métodos | 2022-11-15 → 2022-11-16 (+1d) | 2022-12-23 → 2022-11-24 (-29d) | 29d → 5d | none → 80.94d |  | constraint none → start no earlier than 2022-11-16 |
| 1629 | Funciones y Calculos individuales de las clases | 2022-11-15 → 2022-11-17 (+2d) | 2022-12-23 → 2022-11-25 (-28d) | 29d → 5d | none → 80d |  | constraint none → start no earlier than 2022-11-17 |
| 1630 | **Pruebas de Integrales** | 2022-11-15 → 2022-11-18 (+3d) | 2022-12-23 → 2022-11-29 (-24d) | 29d → 5.94d | none → 6.81d |  |  |
| 1631 | Consultas a la base de datos | 2022-11-15 → 2022-11-18 (+3d) | 2022-12-23 → 2022-11-28 (-25d) | 29d → 5d | none → 79.06d |  | constraint none → start no earlier than 2022-11-18 |
| 1632 | Microservicios | 2022-11-15 → 2022-11-22 (+7d) | 2022-12-23 → 2022-11-29 (-24d) | 29d → 5d | none → 78.12d |  | constraint none → start no earlier than 2022-11-19 |
| 1633 | **Pruebas de Funcionales** | 2022-11-15 → 2022-11-23 (+8d) | 2022-12-23 → 2022-11-30 (-23d) | 29d → 5d | none → 5.88d |  |  |
| 1634 | Interacción con la base de datos | 2022-11-15 → 2022-11-23 (+8d) | 2022-12-23 → 2022-11-30 (-23d) | 29d → 5d | none → 77.19d |  | constraint none → start no earlier than 2022-11-23 |
| 1635 | **Integraciones y Web Services** | 2022-11-15 → 2022-11-24 (+9d) | 2022-12-23 → 2022-12-08 (-15d) | 29d → 9.94d | none → 0d |  |  |
| 1636 | Implementation | 2022-11-15 → 2022-11-24 (+9d) | 2022-12-23 → 2022-12-01 (-22d) | 29d → 5d | none → 76.25d |  | constraint none → start no earlier than 2022-11-24 |
| 1637 | Pruebas | 2022-11-15 → 2022-11-25 (+10d) | 2022-12-23 → 2022-12-08 (-15d) | 29d → 9d | none → 0d |  | constraint none → start no earlier than 2022-11-25 |
| 1638 | Ajustes | 2022-11-15 → 2022-11-28 (+13d) | 2022-12-23 → 2022-12-05 (-18d) | 29d → 5d | none → 74.38d |  | constraint none → start no earlier than 2022-11-28 |
| 1639 | **Fase 4 Públicación y Puesta a Punto** | 2022-08-18 → 2022-12-08 (+112d) | 2023-03-31 → 2022-12-15 (-106d) | 162d → 5d |  | none → 1626 |  |
| 1640 | Manuales de Usuario | 2023-03-15 → 2022-12-08 (-97d) | 2023-03-31 → 2022-12-15 (-106d) | 13d → 5d | none → 0d |  | constraint start no earlier than 2023-03-15 → start no earlier than 2022-12-01 |
| 1641 | Informe de cumplimiento de capacitación | 2023-03-15 → 2022-12-08 (-97d) | 2023-03-31 → 2022-12-15 (-106d) | 13d → 5d | none → 0d |  | constraint start no earlier than 2023-03-15 → start no earlier than 2022-12-01 |
| 1642 | Evidencia de Procesos de Inicialización | 2023-03-15 → 2022-12-08 (-97d) | 2023-03-31 → 2022-12-15 (-106d) | 13d → 5d | none → 0d |  | constraint start no earlier than 2023-03-15 → start no earlier than 2022-12-01 |
| 1643 | Evidencia de Ejecución de Procesos | 2023-03-15 → 2022-12-08 (-97d) | 2023-03-31 → 2022-12-15 (-106d) | 13d → 5d | none → 0d |  | constraint start no earlier than 2023-03-15 → start no earlier than 2022-12-01 |
| 1644 | Carta de Aceptación de Procesos Implementados | 2023-03-15 → 2022-12-08 (-97d) | 2023-03-31 → 2022-12-15 (-106d) | 13d → 5d | none → 0d |  | constraint start no earlier than 2023-03-15 → start no earlier than 2022-12-01 |
| 1645 | Plan de soporte Post-productivo | 2023-03-15 → 2022-12-08 (-97d) | 2023-03-31 → 2022-12-15 (-106d) | 13d → 5d | none → 0d |  | constraint start no earlier than 2023-03-15 → start no earlier than 2022-12-01 |
| 1646 | Fin | 2022-08-18 → 2022-12-15 (+119d) | 2022-08-18 → 2022-12-15 (+119d) |  | 162d → none |  | constraint none → start no earlier than 2022-12-15 |

## Version 4 (data date 2022-06-15, saved 2022-10-03, file PROJECT PDRMyE 4.0.mpp)

Note of the change: Create PROJECT PDRMyE 4.0.mpp

Last finish stays 2022-12-15. Complete tasks 367 → 655.

Added:

| ID | Task | Duration | Start | Finish | Constraint | Resources |
| --- | --- | --- | --- | --- | --- | --- |
| 173 | **Administración de Inflación Año** | 11.31d | 2022-10-17 A | 2022-11-02 A |  | Adolfo |
| 174 | Pantalla Principal | 1d | 2022-10-17 A | 2022-10-18 A |  | Adolfo |
| 175 | Plantilla Carga Masiva Inflación | 1d | 2022-10-18 A | 2022-10-19 A |  | Adolfo |
| 176 | Api Plantilla caga masiva Municipio - Inflación | 1d | 2022-10-19 A | 2022-10-20 A |  | Adolfo |
| 177 | Agregar | 1d | 2022-10-20 A | 2022-10-21 A |  | Adolfo |
| 178 | Editar | 1d | 2022-10-21 A | 2022-10-24 A |  | Adolfo |
| 179 | Eliminar | 1d | 2022-10-24 A | 2022-10-25 A |  | Adolfo |
| 180 | Configuración de Dashboard | 1d | 2022-10-25 A | 2022-10-26 A |  | Adolfo |
| 181 | Exportación de dashboard PDF | 1d | 2022-10-26 A | 2022-10-27 A |  | Adolfo |
| 182 | Exportación de dashboard Excel | 1d | 2022-10-27 A | 2022-10-28 A |  | Adolfo |
| 183 | Paginación Dashboard | 1d | 2022-10-28 A | 2022-10-31 A |  | Adolfo |
| 184 | Busqueda Dash board | 1d | 2022-10-31 A | 2022-11-01 A |  | Adolfo |
| 185 | Ventanas emergentes de validación | 1d | 2022-11-01 A | 2022-11-02 A |  | Adolfo |
| 263 | Pantalla Principal | 1d | 2022-10-28 A | 2022-10-31 A | start no earlier than 2022-10-27 | Adolfo |
| 264 | Agregar | 1d | 2022-10-31 A | 2022-11-01 A | start no earlier than 2022-10-27 | Juanita |
| 265 | Editar | 1d | 2022-11-01 A | 2022-11-02 A | start no earlier than 2022-10-27 | Juanita |
| 266 | Eliminar | 1d | 2022-11-02 A | 2022-11-03 A | start no earlier than 2022-10-27 | Juanita |
| 267 | Configuración de Dashboard | 1d | 2022-11-03 A | 2022-11-04 A | start no earlier than 2022-10-27 | Abelino |
| 268 | Exportación de dashboard PDF | 1d | 2022-11-04 A | 2022-11-07 A | start no earlier than 2022-10-27 | Abelino |
| 269 | Exportación de dashboard Excel | 1d | 2022-11-05 A | 2022-11-08 A | start no earlier than 2022-10-27 | Abelino |
| 270 | Paginación Dashboard | 1d | 2022-11-07 A | 2022-11-08 A | start no earlier than 2022-10-27 | Abelino |
| 271 | Busqueda Dash board | 1d | 2022-11-08 A | 2022-11-09 A | start no earlier than 2022-10-27 | Abelino |
| 272 | Ventanas emergentes de validación | 1d | 2022-11-09 A | 2022-11-10 A | start no earlier than 2022-10-27 | Abelino |
| 276 | Pantalla Principal | 1d | 2022-10-31 A | 2022-11-01 A | start no earlier than 2022-10-28 | Adolfo |
| 277 | Agregar | 1d | 2022-11-01 A | 2022-11-02 A | start no earlier than 2022-10-28 | Juanita |
| 278 | Editar | 1d | 2022-11-02 A | 2022-11-03 A | start no earlier than 2022-10-28 | Juanita |
| 279 | Eliminar | 1d | 2022-11-03 A | 2022-11-04 A | start no earlier than 2022-10-28 | Juanita |
| 280 | Configuración de Dashboard | 1d | 2022-11-04 A | 2022-11-07 A | start no earlier than 2022-10-28 | Abelino |
| 281 | Exportación de dashboard PDF | 1d | 2022-11-07 A | 2022-11-08 A | start no earlier than 2022-10-28 | Abelino |
| 282 | Exportación de dashboard Excel | 1d | 2022-11-08 A | 2022-11-09 A | start no earlier than 2022-10-28 | Abelino |
| 283 | Paginación Dashboard | 1d | 2022-11-09 A | 2022-11-10 A | start no earlier than 2022-10-28 | Abelino |
| 284 | Busqueda Dash board | 1d | 2022-11-10 A | 2022-11-11 A | start no earlier than 2022-10-28 | Abelino |
| 285 | Ventanas emergentes de validación | 1d | 2022-11-11 A | 2022-11-14 A | start no earlier than 2022-10-28 | Abelino |
| 924 | **Coeficientes** | 9.44d | 2022-10-12 A | 2022-10-26 A |  |  |
| 925 | Pantalla principal | 1d | 2022-10-12 A | 2022-10-13 A | start no earlier than 2022-10-12 |  |
| 926 | Agregar | 1d | 2022-10-13 A | 2022-10-14 A | start no earlier than 2022-10-13 |  |
| 927 | Eliminar | 1d | 2022-10-14 A | 2022-10-17 A | start no earlier than 2022-10-14 |  |
| 928 | Editar | 1d | 2022-10-17 A | 2022-10-18 A | start no earlier than 2022-10-15 |  |
| 929 | Configuración de Dashboard | 1d | 2022-10-18 A | 2022-10-19 A | start no earlier than 2022-10-18 |  |
| 930 | Exportación de dashboard PDF | 1d | 2022-10-19 A | 2022-10-20 A | start no earlier than 2022-10-19 |  |
| 931 | Exportación de dashboard Excel | 1d | 2022-10-20 A | 2022-10-21 A | start no earlier than 2022-10-20 |  |
| 932 | Paginación Dashboard | 1d | 2022-10-21 A | 2022-10-24 A | start no earlier than 2022-10-21 |  |
| 933 | Busqueda Dash board | 1d | 2022-10-24 A | 2022-10-25 A | start no earlier than 2022-10-22 |  |
| 934 | Ventanas emergentes de validación | 1d | 2022-10-25 A | 2022-10-26 A | start no earlier than 2022-10-25 |  |
| 935 | **Bienvenida** | 1d | 2022-10-11 | 2022-10-12 |  |  |
| 936 | Configuracion de bienvenida | 1d | 2022-10-11 | 2022-10-12 | start no earlier than 2022-10-11 |  |
| 999 | **Administración de Inflación Año** | 11.31d | 2022-10-17 A | 2022-11-02 A |  |  |
| 1000 | Pantalla Principal | 1d | 2022-10-17 A | 2022-10-18 A | start no earlier than 2022-10-17 |  |
| 1001 | Plantilla Carga Masiva Inflación | 1d | 2022-10-18 A | 2022-10-19 A | start no earlier than 2022-10-18 |  |
| 1002 | Api Plantilla caga masiva Municipio - Inflación | 1d | 2022-10-19 A | 2022-10-20 A | start no earlier than 2022-10-19 |  |
| 1003 | Agregar | 1d | 2022-10-20 A | 2022-10-21 A | start no earlier than 2022-10-20 |  |
| 1004 | Editar | 1d | 2022-10-21 A | 2022-10-24 A | start no earlier than 2022-10-21 |  |
| 1005 | Eliminar | 1d | 2022-10-24 A | 2022-10-25 A | start no earlier than 2022-10-24 |  |
| 1006 | Configuración de Dashboard | 1d | 2022-10-25 A | 2022-10-26 A | start no earlier than 2022-10-25 |  |
| 1007 | Exportación de dashboard PDF | 1d | 2022-10-26 A | 2022-10-27 A | start no earlier than 2022-10-26 |  |
| 1008 | Exportación de dashboard Excel | 1d | 2022-10-27 A | 2022-10-28 A | start no earlier than 2022-10-27 |  |
| 1009 | Paginación Dashboard | 1d | 2022-10-28 A | 2022-10-31 A | start no earlier than 2022-10-28 |  |
| 1010 | Busqueda Dash board | 1d | 2022-10-31 A | 2022-11-01 A | start no earlier than 2022-10-31 |  |
| 1011 | Ventanas emergentes de validación | 1d | 2022-11-01 A | 2022-11-02 A | start no earlier than 2022-11-01 |  |
| 1089 | Pantalla Principal | 1d | 2022-10-28 A | 2022-10-31 A |  |  |
| 1090 | Agregar | 1d | 2022-10-31 A | 2022-11-01 A |  |  |
| 1091 | Editar | 1d | 2022-11-01 A | 2022-11-02 A |  |  |
| 1092 | Eliminar | 1d | 2022-11-02 A | 2022-11-03 A |  |  |
| 1093 | Configuración de Dashboard | 1d | 2022-11-03 A | 2022-11-04 A |  | Abelino |
| 1094 | Exportación de dashboard PDF | 1d | 2022-11-04 A | 2022-11-07 A |  | Abelino |
| 1095 | Exportación de dashboard Excel | 1d | 2022-11-07 A | 2022-11-08 A |  | Abelino |
| 1096 | Paginación Dashboard | 1d | 2022-11-08 A | 2022-11-09 A |  | Abelino |
| 1097 | Busqueda Dash board | 1d | 2022-11-09 A | 2022-11-10 A |  | Abelino |
| 1098 | Ventanas emergentes de validación | 1d | 2022-11-10 A | 2022-11-11 A |  | Abelino |
| 1102 | Pantalla Principal | 1d | 2022-10-31 A | 2022-11-01 A |  |  |
| 1103 | Agregar | 1d | 2022-11-01 A | 2022-11-02 A |  |  |
| 1104 | Editar | 1d | 2022-11-02 A | 2022-11-03 A |  |  |
| 1105 | Eliminar | 1d | 2022-11-03 A | 2022-11-04 A |  | Juanita |
| 1106 | Configuración de Dashboard | 1d | 2022-11-04 A | 2022-11-07 A |  | Abelino |
| 1107 | Exportación de dashboard PDF | 1d | 2022-11-07 A | 2022-11-08 A |  | Abelino |
| 1108 | Exportación de dashboard Excel | 1d | 2022-11-08 A | 2022-11-09 A |  | Abelino |
| 1109 | Paginación Dashboard | 1d | 2022-11-09 A | 2022-11-10 A |  | Abelino |
| 1110 | Busqueda Dash board | 1d | 2022-11-10 A | 2022-11-11 A |  | Abelino |
| 1111 | Ventanas emergentes de validación | 1d | 2022-11-11 A | 2022-11-14 A |  | Abelino |

Changed:

| ID | Task | Start | Finish | Duration | Complete | Total float | Predecessors | Other |
| --- | --- | --- | --- | --- | --- | --- | --- | --- |
| 1 | **Proyecto PDRMyE** |  |  |  | 25% → 42% |  |  |  |
| 3 | **Fase 1 Inicio y Planificación** |  |  |  |  |  | none → 2 |  |
| 64 | **Fase 2 Diseño y Desarrollo** |  |  |  | 24% → 42% |  | none → 3 |  |
| 65 | **Diseño y Desarrollo BACK** | 2022-08-19 A → 2022-08-18 A (-1d) |  | 76.94d → 77.88d | 28% → 58% |  | none → 3 |  |
| 69 | Login |  |  |  |  |  |  | resources none → Abelino |
| 70 | Logout |  |  |  |  |  |  | resources none → Abelino |
| 95 | **sprint 5** | 2022-10-11 A → 2022-08-18 A (-54d) |  | 24.44d → 59.12d | 41% → 99% |  |  |  |
| 96 | **Módulo CPH** | 2022-10-11 A → 2022-08-18 A (-54d) |  | 24.44d → 59.12d | 41% → 99% |  |  |  |
| 97 | **Coeficientes** | 2022-10-11 A | 2022-10-21 → 2022-10-24 A (+3d) | 8.44d → 8.5d | 0% → 100% | 0d → none |  | resources none → Adolfo |
| 98 | Pantalla principal | 2022-10-11 A | 2022-10-12 A |  | 0% → 100% |  |  | resources none → Adolfo |
| 99 | Agregar | 2022-10-13 A | 2022-10-13 → 2022-10-14 A (+1d) |  | 0% → 100% |  |  | resources none → Adolfo |
| 100 | Eliminar | 2022-10-14 A | 2022-10-14 → 2022-10-17 A (+3d) |  | 0% → 100% |  |  | resources none → Adolfo |
| 101 | Editar | 2022-10-15 A | 2022-10-15 → 2022-10-18 A (+3d) |  | 0% → 100% |  |  | resources none → Adolfo |
| 102 | Configuración de Dashboard | 2022-10-16 A | 2022-10-16 → 2022-10-18 A (+2d) |  | 0% → 100% |  |  | resources none → Adolfo |
| 103 | Exportación de dashboard PDF | 2022-10-17 A | 2022-10-17 → 2022-10-18 A (+1d) |  | 0% → 100% |  |  | resources none → Adolfo |
| 104 | Exportación de dashboard Excel | 2022-10-18 A | 2022-10-18 → 2022-10-19 A (+1d) |  | 0% → 100% |  |  | resources none → Adolfo |
| 105 | Paginación Dashboard | 2022-10-19 A | 2022-10-19 → 2022-10-20 A (+1d) |  | 0% → 100% |  |  | resources none → Adolfo |
| 106 | Busqueda Dash board | 2022-10-20 A | 2022-10-20 → 2022-10-21 A (+1d) |  | 0% → 100% |  |  | resources none → Adolfo |
| 107 | Ventanas emergentes de validación | 2022-10-21 A | 2022-10-21 → 2022-10-24 A (+3d) |  | 0% → 100% |  |  | resources none → Adolfo |
| 108 | **Bienvenida** | 2022-10-11 → 2022-08-18 A (-54d) | 2022-10-11 → 2022-08-19 A (-53d) | 0.94d → 1d | 0% → 100% | 0d → none |  |  |
| 109 | Configuracion de bienvenida | 2022-10-11 → 2022-08-18 A (-54d) | 2022-10-11 → 2022-08-19 A (-53d) |  | 0% → 100% |  |  | resources none → Gonzalo |
| 110 | **Base** |  |  |  | 20% → 40% |  |  |  |
| 111 | Perfil |  | 2022-10-12 A |  | 0% → 100% | 43d → none |  | resources none → Gonzalo |
| 115 | Contador de Notificaciones (Icono campanita) |  |  |  |  |  |  | resources none → Adolfo |
| 116 | **Administración de Municipios** |  | 2022-10-24 A |  | 40% → 100% | 35.5d → none |  | resources none → Abelino |
| 117 | Pantalla Principal |  |  |  |  |  |  | resources none → Abelino |
| 118 | Agregar |  |  |  |  |  |  | resources none → Juanita |
| 119 | Editar |  |  |  |  |  |  | resources none → Juanita |
| 120 | Eliminar |  |  |  |  |  |  | resources none → Juanita |
| 121 | Configuración de Dashboard |  | 2022-10-18 A |  | 0% → 100% | 39.25d → none |  | resources none → Abelino |
| 122 | Exportación de dashboard PDF |  | 2022-10-18 A |  | 0% → 100% | 39.25d → none |  | resources none → Abelino |
| 123 | Exportación de dashboard Excel |  | 2022-10-19 A |  | 0% → 100% | 38.31d → none |  | resources none → Abelino |
| 124 | Paginación Dashboard |  | 2022-10-20 A |  | 0% → 100% | 37.38d → none |  | resources none → Abelino |
| 125 | Busqueda Dash board |  | 2022-10-21 A |  | 0% → 100% | 36.44d → none |  | resources none → Abelino |
| 126 | Ventanas emergentes de validación |  | 2022-10-24 A |  | 0% → 100% | 35.5d → none |  | resources none → Abelino |
| 127 | **Administración de Fondos** |  |  |  |  |  |  | resources none → Adolfo |
| 128 | Pantalla Principal |  |  |  |  |  |  | resources none → Adolfo |
| 129 | Agregar |  |  |  |  |  |  | resources none → Adolfo |
| 130 | Editar |  |  |  |  |  |  | resources none → Adolfo |
| 131 | Eliminar |  |  |  |  |  |  | resources none → Adolfo |
| 132 | Configuración de Dashboard |  |  |  |  |  |  | resources none → Adolfo |
| 133 | Exportación de dashboard PDF |  |  |  |  |  |  | resources none → Adolfo |
| 134 | Exportación de dashboard Excel |  |  |  |  |  |  | resources none → Adolfo |
| 135 | Paginación Dashboard |  |  |  |  |  |  | resources none → Adolfo |
| 136 | Busqueda Dash board |  |  |  |  |  |  | resources none → Adolfo |
| 137 | Ventanas emergentes de validación |  |  |  |  |  |  | resources none → Adolfo |
| 138 | **Administración de Presupuesto** |  | 2022-10-28 A |  | 0% → 100% | 31.75d → none |  |  |
| 139 | Pantalla Principal |  | 2022-10-17 A |  | 0% → 100% | 40.19d → none |  |  |
| 140 | Agregar |  | 2022-10-18 A |  | 0% → 100% | 39.25d → none |  |  |
| 141 | Editar |  | 2022-10-19 A |  | 0% → 100% | 38.31d → none |  |  |
| 142 | Eliminar |  | 2022-10-20 A |  | 0% → 100% | 37.38d → none |  |  |
| 143 | Configuración de Dashboard |  | 2022-10-21 A |  | 0% → 100% | 36.44d → none |  |  |
| 144 | Exportación de dashboard PDF |  | 2022-10-24 A |  | 0% → 100% | 35.5d → none |  |  |
| 145 | Exportación de dashboard Excel |  | 2022-10-25 A |  | 0% → 100% | 34.56d → none |  |  |
| 146 | Paginación Dashboard |  | 2022-10-26 A |  | 0% → 100% | 33.62d → none |  |  |
| 147 | Busqueda Dash board |  | 2022-10-27 A |  | 0% → 100% | 32.69d → none |  |  |
| 148 | Ventanas emergentes de validación |  | 2022-10-28 A |  | 0% → 100% | 31.75d → none |  |  |
| 149 | **Administración de UMA** |  |  |  |  |  |  | resources none → Abelino |
| 150 | Pantalla Principal |  |  |  |  |  |  | resources none → Abelino |
| 151 | Agregar |  |  |  |  |  |  | resources none → Adolfo |
| 152 | Editar |  |  |  |  |  |  | resources none → Adolfo |
| 153 | Eliminar |  |  |  |  |  |  | resources none → Adolfo |
| 154 | Configuración de Dashboard |  |  |  |  |  |  | resources none → Abelino |
| 155 | Exportación de dashboard PDF |  |  |  |  |  |  | resources none → Abelino |
| 156 | Exportación de dashboard Excel |  |  |  |  |  |  | resources none → Abelino |
| 157 | Paginación Dashboard |  |  |  |  |  |  | resources none → Abelino |
| 158 | Busqueda Dashboard |  |  |  |  |  |  | resources none → Abelino |
| 159 | Ventanas emergentes de validación |  |  |  |  |  |  | resources none → Abelino |
| 160 | **Administración de Inflación Mes** |  |  |  |  |  |  | was named Administración de Inflación; resources none → Adolfo |
| 161 | Pantalla Principal |  |  |  |  |  |  | resources none → Adolfo |

| ID | Task | Other |
| --- | --- | --- |
| 162 | Plantilla Carga Masiva Inflación | resources none → Adolfo |
| 163 | Api Plantilla caga masiva Municipio - Inflación | resources none → Adolfo |
| 164 | Agregar | resources none → Adolfo |
| 165 | Editar | resources none → Adolfo |
| 166 | Eliminar | resources none → Adolfo |
| 167 | Configuración de Dashboard | resources none → Adolfo |
| 168 | Exportación de dashboard PDF | resources none → Adolfo |
| 169 | Exportación de dashboard Excel | resources none → Adolfo |
| 170 | Paginación Dashboard | resources none → Adolfo |
| 171 | Busqueda Dash board | resources none → Adolfo |
| 172 | Ventanas emergentes de validación | resources none → Adolfo |
| 186 | **Administración de Crecimiento** | resources none → Adolfo |
| 187 | Pantalla Principal | resources none → Adolfo |
| 188 | Plantilla Carga Masiva Crecimiento | resources none → Adolfo |
| 189 | Api Plantilla caga masiva Municipio - Crecimiento | resources none → Adolfo |
| 190 | Agregar | resources none → Adolfo |
| 191 | Editar | resources none → Adolfo |
| 192 | Eliminar | resources none → Adolfo |
| 193 | Configuración de Dashboard | resources none → Adolfo |
| 194 | Exportación de dashboard PDF | resources none → Adolfo |
| 195 | Exportación de dashboard Excel | resources none → Adolfo |
| 196 | Paginación Dashboard | resources none → Adolfo |
| 197 | Busqueda Dash board | resources none → Adolfo |
| 198 | Ventanas emergentes de validación | resources none → Adolfo |
| 200 | Pantalla Principal | resources none → Adolfo |
| 201 | Agregar | resources none → Juanita |
| 202 | Editar | resources none → Juanita |
| 203 | Eliminar | resources none → Juanita |
| 204 | Configuración de Dashboard | resources none → Adolfo |
| 205 | Exportación de dashboard PDF | resources none → Adolfo |
| 206 | Exportación de dashboard Excel | resources none → Adolfo |
| 207 | Paginación Dashboard | resources none → Adolfo |
| 208 | Busqueda Dash board | resources none → Adolfo |
| 209 | Ventanas emergentes de validación | resources none → Adolfo |
| 210 | **Administración de Recaudación** | resources none → Abelino |
| 211 | Pantalla Principal | resources none → Adolfo |
| 212 | Plantilla Carga Masiva Recaudación | resources none → Abelino |
| 213 | Api Plantilla caga masiva Municipio - Recaudación | resources none → Abelino |
| 214 | Agregar | resources none → Juanita |
| 215 | Editar | resources none → Juanita |
| 216 | Eliminar | resources none → Juanita |
| 217 | Configuración de Dashboard | resources none → Abelino |
| 218 | Exportación de dashboard PDF | resources none → Abelino |
| 219 | Exportación de dashboard Excel | resources none → Abelino |
| 220 | Paginación Dashboard | resources none → Abelino |
| 221 | Busqueda Dash board | resources none → Abelino |
| 222 | Ventanas emergentes de validación | resources none → Abelino |
| 223 | **Administración de Población** | resources none → Abelino |
| 224 | Pantalla Principal | resources none → Adolfo |
| 225 | Agregar | resources none → Juanita |
| 226 | Editar | resources none → Juanita |
| 227 | Eliminar | resources none → Juanita |
| 228 | Configuración de Dashboard | resources none → Abelino |
| 229 | Exportación de dashboard PDF | resources none → Abelino |
| 230 | Exportación de dashboard Excel | resources none → Abelino |
| 231 | Paginación Dashboard | resources none → Abelino |
| 232 | Busqueda Dash board | resources none → Abelino |
| 233 | Ventanas emergentes de validación | resources none → Abelino |
| 234 | **Administración de Territorio** | resources none → Abelino |
| 235 | Pantalla Principal | resources none → Adolfo |
| 236 | Plantilla Carga Masiva Territorio | resources none → Adolfo |
| 237 | Api Plantilla caga masiva Municipio - Territorio | resources none → Adolfo |
| 238 | Agregar | resources none → Juanita |
| 239 | Editar | resources none → Juanita |
| 240 | Eliminar | resources none → Juanita |
| 241 | Configuración de Dashboard | resources none → Abelino |
| 242 | Exportación de dashboard PDF | resources none → Abelino |
| 243 | Exportación de dashboard Excel | resources none → Abelino |
| 244 | Paginación Dashboard | resources none → Abelino |
| 245 | Busqueda Dash board | resources none → Abelino |

| ID | Task | Finish | Duration | Complete | Total float | Other |
| --- | --- | --- | --- | --- | --- | --- |
| 246 | Ventanas emergentes de validación |  |  |  |  | resources none → Abelino |
| 247 | **Administración de pobreza** |  |  |  |  | resources none → Abelino |
| 248 | Pantalla Principal |  |  |  |  | resources none → Adolfo |
| 249 | Plantilla Carga Masiva Pobreza |  |  |  |  | resources none → Adolfo |
| 250 | Api Plantilla caga masiva Municipio - Pobreza |  |  |  |  | resources none → Adolfo |
| 251 | Agregar |  |  |  |  | resources none → Juanita |
| 252 | Editar |  |  |  |  | resources none → Juanita |
| 253 | Eliminar |  |  |  |  | resources none → Juanita |
| 254 | Configuración de Dashboard |  |  |  |  | resources none → Abelino |
| 255 | Exportación de dashboard PDF |  |  |  |  | resources none → Abelino |
| 256 | Exportación de dashboard Excel |  |  |  |  | resources none → Abelino |
| 257 | Paginación Dashboard |  |  |  |  | resources none → Abelino |
| 258 | Busqueda Dash board |  |  |  |  | resources none → Abelino |
| 259 | Ventanas emergentes de validación |  |  |  |  | resources none → Abelino |
| 260 | **Administración de Pobreza Extrema** | 2022-10-27 A → 2022-11-10 A (+14d) | 1.88d → 10.38d |  |  | resources none → Abelino |
| 261 | Plantilla Carga Masiva Pobreza Extrema |  |  |  |  | resources none → Adolfo |
| 262 | Api Plantilla caga masiva Municipio - Pobreza Extrema |  |  |  |  | resources none → Adolfo |
| 273 | **Administración de Pobreza Moderada** | 2022-10-28 A → 2022-11-14 A (+17d) | 1.88d → 11.31d |  |  | resources none → Abelino |
| 274 | Plantilla Carga Masiva Pobreza Moderada |  |  |  |  | resources none → Adolfo |
| 275 | Api Plantilla caga masiva Municipio - Pobreza Moderada |  |  |  |  | resources none → Adolfo |
| 293 | **Dashboard Articulo 14 Fracción I** | 2022-11-16 A |  | 0% → 100% | 19.56d → none |  |
| 294 | Pantalla Principal | 2022-11-02 A |  | 0% → 100% | 28.94d → none |  |
| 295 | Generar plantilla | 2022-11-03 A |  | 0% → 100% | 28d → none |  |
| 296 | Carga masiva - plantilla | 2022-11-04 A |  | 0% → 100% | 27.06d → none |  |
| 297 | Recálculo de coeficiente | 2022-11-07 A |  | 0% → 100% | 26.12d → none |  |
| 298 | Editar información | 2022-11-08 A |  | 0% → 100% | 25.19d → none |  |
| 299 | Dashboard predial | 2022-11-09 A |  | 0% → 100% | 24.25d → none |  |
| 300 | Dashboard población y territorio | 2022-11-10 A |  | 0% → 100% | 23.31d → none |  |
| 301 | Dashboard carencia social | 2022-11-11 A |  | 0% → 100% | 22.38d → none |  |
| 302 | Cálculo de coeficiente | 2022-11-14 A |  | 0% → 100% | 21.44d → none |  |
| 303 | Proceso Autorización | 2022-11-15 A |  | 0% → 100% | 20.5d → none |  |
| 304 | Ventanas emergentes de validación | 2022-11-16 A |  | 0% → 100% | 19.56d → none |  |
| 305 | **Dashboard Articulo 14 Fracción II** | 2022-11-16 A |  | 0% → 100% | 19.56d → none |  |
| 306 | Pantalla Principal | 2022-11-03 A |  | 0% → 100% | 28d → none |  |
| 307 | Dashboard población | 2022-11-04 A |  | 0% → 100% | 27.06d → none |  |
| 308 | generar plantilla | 2022-11-07 A |  | 0% → 100% | 26.12d → none |  |
| 309 | Carga masiva - plantilla | 2022-11-08 A |  | 0% → 100% | 25.19d → none |  |
| 310 | Recálculo de coeficiente | 2022-11-09 A |  | 0% → 100% | 24.25d → none |  |
| 311 | Editar información individual | 2022-11-10 A |  | 0% → 100% | 23.31d → none |  |
| 312 | Dashboard proyección población | 2022-11-11 A |  | 0% → 100% | 22.38d → none |  |
| 313 | Carga masiva - plantilla | 2022-11-14 A |  | 0% → 100% | 21.44d → none |  |
| 314 | Recálculo de coeficiente | 2022-11-15 A |  | 0% → 100% | 20.5d → none |  |
| 315 | Editar información individual | 2022-11-16 A |  | 0% → 100% | 19.56d → none |  |
| 316 | Cálculo de coeficiente | 2022-11-16 A |  | 0% → 100% | 19.56d → none |  |
| 317 | Proceso Autorización | 2022-11-16 A |  | 0% → 100% | 19.56d → none |  |
| 318 | Ventanas emergentes de validación | 2022-11-16 A |  | 0% → 100% | 19.56d → none |  |
| 319 | **Dashboard Articulo 14 Fracción III** | 2022-11-16 A |  | 6% → 100% | 19.56d → none |  |
| 320 | Pantalla Principal | 2022-11-04 A |  | 0% → 100% | 27.06d → none |  |
| 321 | Dashboard eficiencia recaudatoria | 2022-11-07 A |  | 0% → 100% | 26.12d → none |  |
| 322 | generar plantilla | 2022-11-08 A |  | 0% → 100% | 25.19d → none |  |
| 323 | Carga masiva - plantilla | 2022-11-09 A |  | 0% → 100% | 24.25d → none |  |
| 324 | Recálculo de coeficiente | 2022-11-10 A |  | 0% → 100% | 23.31d → none |  |
| 325 | Editar información individual | 2022-11-11 A |  | 0% → 100% | 22.38d → none |  |
| 326 | Dashboard crecimiento recaudación | 2022-11-14 A |  | 0% → 100% | 21.44d → none |  |
| 327 | Carga masiva - plantilla | 2022-11-15 A |  | 0% → 100% | 20.5d → none |  |
| 328 | Recálculo de coeficiente | 2022-11-16 A |  | 0% → 100% | 19.56d → none |  |
| 329 | Editar información individual | 2022-11-16 A |  | 0% → 100% | 19.56d → none |  |
| 330 | Cálculo de coeficiente | 2022-11-16 A |  | 0% → 100% | 19.56d → none |  |
| 331 | Proceso Autorización | 2022-11-16 A |  | 0% → 100% | 19.56d → none |  |
| 332 | Ventanas emergentes de validación | 2022-11-16 A |  | 0% → 100% | 19.56d → none |  |
| 333 | Participaciones Federales | 2022-11-16 A |  | 0% → 100% | 19.56d → none |  |
| 334 | Dashboard Participaciones Federales | 2022-11-16 A |  | 0% → 100% | 19.56d → none |  |
| 335 | Proceso Envío general Participaciones Federales | 2022-11-16 A |  | 0% → 100% | 19.56d → none |  |
| 336 | Track general Participaciones Federales |  |  |  |  | resources none → Adolfo |
| 337 | **Dashboard FG** | 2022-11-16 A |  | 0% → 100% | 19.56d → none |  |
| 338 | Configuración inicial Fondo General (FG) | 2022-11-07 A |  | 0% → 100% | 26.12d → none |  |
| 339 | Carga inicial | 2022-11-08 A |  | 0% → 100% | 25.19d → none | resources none → Juanita |
| 340 | Pantalla Principal | 2022-11-09 A |  | 0% → 100% | 24.25d → none |  |
| 341 | Proceso cálculo | 2022-11-10 A |  | 0% → 100% | 23.31d → none | resources none → Juanita |
| 342 | Proceso autorización | 2022-11-11 A |  | 0% → 100% | 22.38d → none |  |

| ID | Task | Finish | Complete | Total float | Other |
| --- | --- | --- | --- | --- | --- |
| 343 | Proceso envío | 2022-11-14 A | 0% → 100% | 21.44d → none |  |
| 344 | Avance programático Fondo General | 2022-11-15 A | 0% → 100% | 20.5d → none |  |
| 345 | Proceso Cancelación Fondo General | 2022-11-16 A | 0% → 100% | 19.56d → none |  |
| 346 | Ventanas emergentes de validación | 2022-11-16 A | 0% → 100% | 19.56d → none |  |
| 347 | **Dashboard FFM 70** | 2022-11-01 A | 11% → 100% | 29.88d → none |  |
| 348 | Configuración inicial Fondo Fomento Municipal 70 % (FFM 70% ) | 2022-10-13 A | 0% → 100% | 42.06d → none |  |
| 349 | Carga inicial | 2022-10-14 A | 0% → 100% | 41.12d → none | resources none → Juanita |
| 350 | Pantalla Principal | 2022-10-17 A | 0% → 100% | 40.19d → none |  |
| 351 | Proceso cálculo | 2022-10-18 A | 0% → 100% | 39.25d → none | resources none → Juanita |
| 352 | Proceso autorización | 2022-10-19 A | 0% → 100% | 38.31d → none |  |
| 353 | Proceso envío | 2022-10-20 A | 0% → 100% | 37.38d → none |  |
| 354 | Track |  |  |  | resources none → Adolfo |
| 355 | Ventanas emergentes de validación | 2022-10-24 A | 0% → 100% | 35.5d → none |  |
| 356 | Configuración inicial Fondo Fomento Municipal 30 % (FFM 30% ) | 2022-11-01 A | 0% → 100% | 29.88d → none |  |
| 357 | **Dashboard FFM 30** | 2022-10-25 A | 13% → 100% | 34.56d → none |  |
| 358 | Pantalla Principal | 2022-10-14 A | 0% → 100% | 41.12d → none |  |
| 359 | Carga Inicial | 2022-10-17 A | 0% → 100% | 40.19d → none | resources none → Juanita |
| 360 | Proceso cálculo | 2022-10-18 A | 0% → 100% | 39.25d → none | resources none → Juanita |
| 361 | Proceso autorización | 2022-10-19 A | 0% → 100% | 38.31d → none | resources none → Juanita |
| 362 | Proceso envío | 2022-10-20 A | 0% → 100% | 37.38d → none | resources none → Juanita |
| 363 | Track |  |  |  | resources none → Juanita |
| 364 | Ventanas emergentes de validación | 2022-10-24 A | 0% → 100% | 35.5d → none | resources none → Juanita |
| 365 | Configuración inicial Impuesto Especial sobre Producción y Servicios (IEPS) | 2022-10-25 A | 0% → 100% | 34.56d → none | resources none → Juanita |
| 366 | **Dashboard IEPS** | 2022-10-26 A | 13% → 100% | 33.62d → none |  |
| 367 | Carga inicial | 2022-10-17 A | 0% → 100% | 40.19d → none | resources none → Juanita |
| 368 | Pantalla Principal | 2022-10-18 A | 0% → 100% | 39.25d → none | resources none → Juanita |
| 369 | Proceso cálculo | 2022-10-19 A | 0% → 100% | 38.31d → none | resources none → Juanita |
| 370 | Proceso autorización | 2022-10-20 A | 0% → 100% | 37.38d → none | resources none → Juanita |
| 371 | Proceso envío | 2022-10-21 A | 0% → 100% | 36.44d → none | resources none → Juanita |
| 372 | Track |  |  |  | resources none → Juanita |
| 373 | Ventanas emergentes de validación | 2022-10-25 A | 0% → 100% | 34.56d → none | resources none → Juanita |
| 374 | Configuración inicial Impuesto sobre la Venta Final de Gasolinas y Diesel (IEPS GyD) | 2022-10-26 A | 0% → 100% | 33.62d → none | resources none → Juanita |
| 375 | **Dashboard IEPS GyD** | 2022-10-25 A | 14% → 100% | 34.56d → none |  |
| 376 | Carga inicial | 2022-10-17 A | 0% → 100% | 40.19d → none | resources none → Juanita |
| 377 | Pantalla Principal | 2022-10-18 A | 0% → 100% | 39.25d → none | resources none → Juanita |
| 378 | Proceso cálculo | 2022-10-19 A | 0% → 100% | 38.31d → none | resources none → Juanita |
| 379 | Proceso autorización | 2022-10-20 A | 0% → 100% | 37.38d → none | resources none → Juanita |
| 380 | Proceso envío | 2022-10-21 A | 0% → 100% | 36.44d → none | resources none → Juanita |
| 381 | Track |  |  |  | resources none → Juanita |
| 382 | Ventanas emergentes de validación | 2022-10-25 A | 0% → 100% | 34.56d → none | resources none → Juanita |
| 383 | **Dashboard ISR Bienes Inmuebles** | 2022-10-27 A | 13% → 100% | 32.69d → none |  |
| 384 | Pantalla Principal | 2022-10-18 A | 0% → 100% | 39.25d → none | resources none → Juanita |
| 385 | Carga inicial | 2022-10-19 A | 0% → 100% | 38.31d → none | resources none → Juanita |
| 386 | Configuración inicial ISR Bienes Inmuebles | 2022-10-20 A | 0% → 100% | 37.38d → none | resources none → Juanita |
| 387 | Proceso cálculo | 2022-10-21 A | 0% → 100% | 36.44d → none | resources none → Juanita |
| 388 | Proceso autorización | 2022-10-24 A | 0% → 100% | 35.5d → none | resources none → Juanita |
| 389 | Proceso envío | 2022-10-25 A | 0% → 100% | 34.56d → none | resources none → Juanita |
| 390 | Track |  |  |  | resources none → Juanita |
| 391 | Ventanas emergentes de validación | 2022-10-27 A | 0% → 100% | 32.69d → none | resources none → Juanita |
| 392 | **Dashboard FOFIR** | 2022-10-28 A | 13% → 100% | 31.75d → none |  |
| 393 | Pantalla Principal | 2022-10-19 A | 0% → 100% | 38.31d → none | resources none → Juanita |
| 394 | Carga inicial | 2022-10-20 A | 0% → 100% | 37.38d → none | resources none → Juanita |
| 395 | Configuración inicial Fondo de Fiscalización y Recaudación (FOFIR) | 2022-10-21 A | 0% → 100% | 36.44d → none | resources none → Juanita |
| 396 | Proceso cálculo | 2022-10-24 A | 0% → 100% | 35.5d → none | resources none → Juanita |
| 397 | Proceso autorización | 2022-10-25 A | 0% → 100% | 34.56d → none | resources none → Juanita |
| 398 | Proceso envío | 2022-10-26 A | 0% → 100% | 33.62d → none | resources none → Juanita |
| 399 | Track |  |  |  | resources none → Juanita |
| 400 | Ventanas emergentes de validación | 2022-10-28 A | 0% → 100% | 31.75d → none | resources none → Juanita |
| 401 | **Dashboard ISAN** | 2022-11-02 A | 30% → 100% | 28.94d → none |  |
| 402 | Pantalla Principal | 2022-10-20 A | 0% → 100% | 37.38d → none | resources none → Juanita |
| 403 | Plantilla Carga Masiva ISAN |  |  |  | resources none → Juanita |
| 404 | Api Plantilla caga masiva Municipio - ISAN |  |  |  | resources none → Juanita |
| 405 | Carga inicial | 2022-10-25 A | 0% → 100% | 34.56d → none | resources none → Juanita |
| 406 | Configuración inicial Impuesto sobre Automóviles Nuevos (ISAN) | 2022-10-26 A | 0% → 100% | 33.62d → none | resources none → Juanita |
| 407 | Proceso cálculo | 2022-10-27 A | 0% → 100% | 32.69d → none | resources none → Juanita |
| 408 | Proceso autorización | 2022-10-28 A | 0% → 100% | 31.75d → none | resources none → Juanita |
| 409 | Proceso envío | 2022-10-31 A | 0% → 100% | 30.81d → none | resources none → Juanita |
| 410 | Track |  |  |  | resources none → Juanita |
| 411 | Ventanas emergentes de validación | 2022-11-02 A | 0% → 100% | 28.94d → none | resources none → Juanita |
| 412 | **Dashboard Comp. ISAN** | 2022-11-01 A | 13% → 100% | 29.88d → none |  |

| ID | Task | Start | Finish | Duration | Complete | Total float | Predecessors | Other |
| --- | --- | --- | --- | --- | --- | --- | --- | --- |
| 413 | Pantalla Principal |  | 2022-10-21 A |  | 0% → 100% | 36.44d → none |  | resources none → Juanita |
| 414 | Carga inicial |  | 2022-10-24 A |  | 0% → 100% | 35.5d → none |  | resources none → Juanita |
| 415 | Configuración inicial Compensación ISAN |  | 2022-10-25 A |  | 0% → 100% | 34.56d → none |  |  |
| 416 | Proceso cálculo |  | 2022-10-26 A |  | 0% → 100% | 33.62d → none |  | resources none → Juanita |
| 417 | Proceso autorización |  | 2022-10-27 A |  | 0% → 100% | 32.69d → none |  |  |
| 418 | Proceso envío |  | 2022-10-28 A |  | 0% → 100% | 31.75d → none |  |  |
| 419 | Track |  |  |  |  |  |  | resources none → Adolfo |
| 420 | Ventanas emergentes de validación |  | 2022-11-01 A |  | 0% → 100% | 29.88d → none |  |  |
| 421 | **Dashboard ISN** |  | 2022-11-01 A |  | 14% → 100% | 29.88d → none |  |  |
| 422 | Pantalla Principal |  | 2022-10-24 A |  | 0% → 100% | 35.5d → none |  |  |
| 423 | Carga configuración inicial fondo ISN |  | 2022-10-25 A |  | 0% → 100% | 34.56d → none |  |  |
| 424 | Proceso de cálculo |  | 2022-10-26 A |  | 0% → 100% | 33.62d → none |  | resources none → Juanita |
| 425 | Proceso de Autorización |  | 2022-10-27 A |  | 0% → 100% | 32.69d → none |  |  |
| 426 | Proceso de Envío |  | 2022-10-28 A |  | 0% → 100% | 31.75d → none |  |  |
| 427 | Track |  |  |  |  |  |  | resources none → Adolfo |
| 428 | Ventanas emergentes de validación |  | 2022-11-01 A |  | 0% → 100% | 29.88d → none |  |  |
| 429 | **Dashboard ICV** |  | 2022-11-03 A |  | 13% → 100% | 28d → none |  |  |
| 430 | Pantalla Principal |  | 2022-10-25 A |  | 0% → 100% | 34.56d → none |  |  |
| 431 | Carga Configuración inicial ICV |  | 2022-10-26 A |  | 0% → 100% | 33.62d → none |  |  |
| 432 | Carga masiva de ICV - (Plantilla) |  | 2022-10-27 A |  | 0% → 100% | 32.69d → none |  |  |
| 433 | Proceso de cálculo |  | 2022-10-28 A |  | 0% → 100% | 31.75d → none |  | resources none → Adolfo |
| 434 | Proceso de Autorización |  | 2022-10-31 A |  | 0% → 100% | 30.81d → none |  |  |
| 435 | Proceso de Envío |  | 2022-11-01 A |  | 0% → 100% | 29.88d → none |  |  |
| 436 | Track |  |  |  |  |  |  | resources none → Adolfo |
| 437 | Ventanas emergentes de validación |  | 2022-11-03 A |  | 0% → 100% | 28d → none |  |  |
| 438 | **Dashboard Fondo Ultracrecmiento** |  | 2022-11-03 A |  | 14% → 100% | 28d → none |  |  |
| 439 | Pantalla Principal |  | 2022-10-26 A |  | 0% → 100% | 33.62d → none |  |  |
| 440 | Carga configuración inicial Fondo Ultracrecimiento |  | 2022-10-27 A |  | 0% → 100% | 32.69d → none |  |  |
| 441 | Proceso de Autorización |  | 2022-10-28 A |  | 0% → 100% | 31.75d → none |  |  |
| 442 | Proceso de Envío |  | 2022-10-31 A |  | 0% → 100% | 30.81d → none |  |  |
| 443 | Track |  |  |  |  |  |  | resources none → Adolfo |
| 444 | Ventanas emergentes de validación |  | 2022-11-02 A |  | 0% → 100% | 28.94d → none |  |  |
| 445 | Generación de reporte |  | 2022-11-03 A |  | 0% → 100% | 28d → none |  |  |
| 446 | **Dashboard Fondos Descentralizado** | 2022-10-11 A → 2022-11-03 A (+23d) | 2022-10-19 → 2022-11-14 A (+26d) | 5.69d → 6.56d | 14% → 100% | 38.31d → none | none → 437 |  |
| 447 | Pantalla Principal | 2022-10-11 → 2022-11-03 A (+23d) | 2022-10-11 → 2022-11-04 A (+24d) |  | 0% → 100% |  |  |  |
| 448 | Carga configuración inicial Fondo Descentralizado | 2022-10-11 → 2022-11-03 A (+23d) | 2022-10-11 → 2022-11-04 A (+24d) |  | 0% → 100% |  |  |  |
| 449 | Proceso de cálculo | 2022-10-12 A → 2022-11-07 A (+26d) | 2022-10-13 → 2022-11-08 A (+26d) |  | 0% → 100% | 42.06d → none |  |  |
| 450 | Proceso de Autorización | 2022-10-13 A → 2022-11-08 A (+26d) | 2022-10-14 → 2022-11-09 A (+26d) |  | 0% → 100% | 41.12d → none |  |  |
| 451 | Proceso de Envío | 2022-10-14 A → 2022-11-09 A (+26d) | 2022-10-17 → 2022-11-10 A (+24d) |  | 0% → 100% | 40.19d → none |  |  |
| 452 | Track | 2022-10-17 A → 2022-11-10 A (+24d) | 2022-10-17 A → 2022-11-11 A (+25d) |  |  |  |  | resources none → Adolfo |
| 453 | Ventanas emergentes de validación | 2022-10-18 A → 2022-11-11 A (+24d) | 2022-10-19 → 2022-11-14 A (+26d) |  | 0% → 100% | 38.31d → none |  |  |
| 454 | **Dashboard Fondos Seguridad** |  | 2022-10-24 A |  | 13% → 100% | 35.5d → none |  |  |
| 455 | Pantalla Principal |  | 2022-10-13 A |  | 0% → 100% | 42.06d → none |  |  |
| 456 | Carga configuración inicial Fondo Seguridad |  | 2022-10-14 A |  | 0% → 100% | 41.12d → none |  |  |
| 457 | Proceso de cálculo |  | 2022-10-17 A |  | 0% → 100% | 40.19d → none |  |  |
| 458 | Proceso de Autorización |  | 2022-10-18 A |  | 0% → 100% | 39.25d → none |  |  |
| 459 | Proceso de Envío |  | 2022-10-19 A |  | 0% → 100% | 38.31d → none |  |  |
| 460 | Track |  |  |  |  |  |  | resources none → Adolfo |
| 461 | Ventanas emergentes de validación |  | 2022-10-21 A |  | 0% → 100% | 36.44d → none |  |  |
| 462 | Generación de reporte |  | 2022-10-24 A |  | 0% → 100% | 35.5d → none |  |  |
| 463 | **Dashboard Fondos de Desarrollo Municipal** |  | 2022-10-25 A |  | 13% → 100% | 34.56d → none |  |  |
| 464 | Pantalla Principal |  | 2022-10-14 A |  | 0% → 100% | 41.12d → none |  |  |
| 465 | Carga configuración inicial Fondo Desarrollo Municipal |  | 2022-10-17 A |  | 0% → 100% | 40.19d → none |  |  |
| 466 | Proceso de cálculo |  | 2022-10-18 A |  | 0% → 100% | 39.25d → none |  |  |
| 467 | Proceso de Autorización |  | 2022-10-19 A |  | 0% → 100% | 38.31d → none |  |  |
| 468 | Proceso de Envío |  | 2022-10-20 A |  | 0% → 100% | 37.38d → none |  |  |
| 469 | Track |  |  |  |  |  |  | resources none → Adolfo |
| 470 | Ventanas emergentes de validación |  | 2022-10-24 A |  | 0% → 100% | 35.5d → none |  |  |
| 471 | Generación de reporte |  | 2022-10-25 A |  | 0% → 100% | 34.56d → none |  |  |
| 472 | **Dashboard Fondos FORTAMUN** |  | 2022-10-26 A |  | 13% → 100% | 33.62d → none |  |  |
| 473 | Pantalla Principal |  | 2022-10-17 A |  | 0% → 100% | 40.19d → none |  |  |
| 474 | Carga configuración inicial Fondo FORTAMUN |  | 2022-10-18 A |  | 0% → 100% | 39.25d → none |  |  |
| 475 | Proceso de cálculo |  | 2022-10-19 A |  | 0% → 100% | 38.31d → none |  |  |
| 476 | Proceso de Autorización |  | 2022-10-20 A |  | 0% → 100% | 37.38d → none |  |  |
| 477 | Proceso de Envío |  | 2022-10-21 A |  | 0% → 100% | 36.44d → none |  |  |
| 478 | Track |  |  |  |  |  |  | resources none → Adolfo |
| 479 | Ventanas emergentes de validación |  | 2022-10-25 A |  | 0% → 100% | 34.56d → none |  |  |
| 480 | Generación de reporte |  | 2022-10-26 A |  | 0% → 100% | 33.62d → none |  |  |
| 481 | **Dashboard Fondos FISM** |  | 2022-10-31 A |  | 10% → 100% | 30.81d → none |  |  |
| 482 | Pantalla Principal |  | 2022-10-18 A |  | 0% → 100% | 39.25d → none |  |  |

| ID | Task | Finish | Complete | Total float | Other |
| --- | --- | --- | --- | --- | --- |
| 483 | Carga configuración inicial Fondo FISM | 2022-10-19 A | 0% → 100% | 38.31d → none |  |
| 484 | Proceso de cálculo | 2022-10-20 A | 0% → 100% | 37.38d → none |  |
| 485 | Proceso de Autorización | 2022-10-21 A | 0% → 100% | 36.44d → none |  |
| 486 | Proceso de Envío | 2022-10-24 A | 0% → 100% | 35.5d → none |  |
| 487 | Track |  |  |  | resources none → Adolfo |
| 488 | Ventanas emergentes de validación | 2022-10-26 A | 0% → 100% | 33.62d → none |  |
| 489 | Generación de reporte | 2022-10-27 A | 0% → 100% | 32.69d → none |  |
| 490 | Generador de estadísticas | 2022-10-28 A | 0% → 100% | 31.75d → none |  |
| 491 | Generador de reportes | 2022-10-31 A | 0% → 100% | 30.81d → none |  |
| 492 | **sprint 6** |  | 22% → 30% |  |  |
| 493 | **Módulo DAMOP** |  | 22% → 30% |  |  |
| 494 | **Base** | 2022-10-17 A | 25% → 100% | 19.62d → none |  |
| 495 | Pantalla Principal | 2022-10-12 A | 0% → 100% | 22.44d → none |  |
| 496 | Pop up Notificaciones | 2022-10-13 A | 0% → 100% | 21.5d → none |  |
| 497 | Contador de Notificaciones (Icono campanita) |  |  |  | resources none → Adolfo |
| 498 | Bandeja entrada de Notificaciones | 2022-10-17 A | 0% → 100% | 19.62d → none |  |
| 499 | **Administración de Municipios** | 2022-10-31 A | 15% → 100% | 10.25d → none | resources none → Abelino; Juanita |
| 500 | Pantalla principal | 2022-10-13 A | 0% → 100% | 21.5d → none | resources none → Abelino |
| 501 | Insertar |  |  |  | resources none → Juanita |
| 502 | Contactar Municipio | 2022-10-17 A | 0% → 100% | 19.62d → none | resources none → Abelino |
| 503 | Ver Detalles | 2022-10-18 A | 0% → 100% | 18.69d → none | resources none → Abelino |
| 504 | Configuración de Dashboard | 2022-10-19 A | 0% → 100% | 17.75d → none | resources none → Abelino |
| 505 | Exportación de dashboard PDF | 2022-10-20 A | 0% → 100% | 16.81d → none | resources none → Abelino |
| 506 | Exportación de dashboard Excel | 2022-10-21 A | 0% → 100% | 15.88d → none | resources none → Abelino |
| 507 | Paginación Dashboard | 2022-10-24 A | 0% → 100% | 14.94d → none | resources none → Abelino |
| 508 | Busqueda Dash board | 2022-10-25 A | 0% → 100% | 14d → none | resources none → Abelino |
| 509 | Ventanas emergentes de validación | 2022-10-26 A | 0% → 100% | 13.06d → none | resources none → Abelino |
| 510 | Modificar |  |  |  | resources none → Juanita |
| 511 | Subida de Archivos | 2022-10-28 A | 0% → 100% | 11.19d → none | resources none → Abelino |
| 512 | Descarga de PDF | 2022-10-31 A | 0% → 100% | 10.25d → none | resources none → Abelino |
| 513 | **Administración de Avisos** |  |  |  | resources none → Abelino |
| 514 | Pantalla principal |  |  |  | resources none → Abelino |
| 515 | Agregar |  |  |  | resources none → Adolfo |
| 516 | Eliminar |  |  |  | resources none → Adolfo |
| 517 | Editar |  |  |  | resources none → Adolfo |
| 518 | Configuración de Dashboard |  |  |  | resources none → Abelino |
| 519 | Exportación de dashboard PDF |  |  |  | resources none → Abelino |
| 520 | Exportación de dashboard Excel |  |  |  | resources none → Abelino |
| 521 | Paginación Dashboard |  |  |  | resources none → Abelino |
| 522 | Busqueda Dash board |  |  |  | resources none → Abelino |
| 523 | Ventanas emergentes de validación |  |  |  | resources none → Abelino |
| 524 | **Administración de Eventos** |  |  |  | resources none → Abelino |
| 525 | Pantalla principal |  |  |  | resources none → Abelino |
| 526 | Agregar |  |  |  | resources none → Adolfo |
| 527 | Eliminar |  |  |  | resources none → Adolfo |
| 528 | Editar |  |  |  | resources none → Adolfo |
| 529 | Configuración de Dashboard |  |  |  | resources none → Abelino |
| 530 | Exportación de dashboard PDF |  |  |  | resources none → Abelino |
| 531 | Exportación de dashboard Excel |  |  |  | resources none → Abelino |
| 532 | Paginación Dashboard |  |  |  | resources none → Abelino |
| 533 | Busqueda Dash board |  |  |  | resources none → Abelino |
| 534 | Ventanas emergentes de validación |  |  |  | resources none → Abelino |
| 541 | Pantalla principal |  |  |  | resources none → Abelino |
| 542 | Insertar |  |  |  | resources none → Adolfo |
| 543 | Modificar |  |  |  | resources none → Adolfo |
| 544 | Eliminar |  |  |  | resources none → Adolfo |
| 545 | Visualizar |  |  |  | resources none → Adolfo |
| 546 | Job de Ejecucion automatica |  |  |  | resources none → Adolfo |
| 562 | Track |  |  |  | resources none → Adolfo |
| 578 | Track |  |  |  | resources none → Adolfo |
| 587 | Track |  |  |  | resources none → Adolfo |
| 596 | Track |  |  |  | resources none → Adolfo |
| 605 | Track |  |  |  | resources none → Adolfo |
| 614 | Track |  |  |  | resources none → Adolfo |
| 623 | Track |  |  |  | resources none → Adolfo |
| 636 | Ventanas emergentes de Track por municipio |  |  |  | resources none → Adolfo |
| 653 | Ventanas emergentes de Track por municipio |  |  |  | resources none → Adolfo |
| 671 | Ventanas emergentes de Track |  |  |  | resources none → Adolfo |
| 684 | Ventanas emergentes de Track |  |  |  | resources none → Adolfo |
| 695 | Contador de Notificaciones (Icono campanita) |  |  |  | resources none → Adolfo |

| ID | Task | Start | Finish | Duration | Complete | Total float | Predecessors | Other |
| --- | --- | --- | --- | --- | --- | --- | --- | --- |
| 703 | Contador de Notificaciones (Icono campanita) |  |  |  |  |  |  | resources none → Adolfo |
| 713 | Contador de Notificaciones (Icono campanita) |  |  |  |  |  |  | resources none → Adolfo |
| 722 | Login |  |  |  |  |  |  | resources none → Abelino |
| 723 | Logout |  |  |  |  |  |  | resources none → Abelino |
| 791 | **Recepcion de Recursos Aportaciones Estatales** | 2022-11-24 → 2022-11-25 A (+1d) | 2022-11-30 → 2022-12-08 (+8d) | 3.81d → 8.5d |  | none → 5.5d |  |  |
| 807 | Contador de Notificaciones (Icono campanita) |  |  |  |  |  |  | resources none → Adolfo |
| 879 | **Diseño y Desarrollo FRONT** |  |  |  | 19% → 26% |  | none → 3 |  |
| 896 | Login |  |  |  |  |  |  | resources none → Abelino |
| 897 | Logout |  |  |  |  |  |  | resources none → Abelino |
| 922 | **sprint 5** |  |  |  | 36% → 43% |  |  |  |
| 923 | **Módulo CPH** |  |  |  | 36% → 43% |  |  |  |
| 976 | Pantalla Principal |  |  |  |  |  |  | resources none → Abelino |
| 980 | Configuración de Dashboard |  |  |  |  |  |  | resources none → Abelino |
| 981 | Exportación de dashboard PDF |  |  |  |  |  |  | resources none → Abelino |
| 982 | Exportación de dashboard Excel |  |  |  |  |  |  | resources none → Abelino |
| 983 | Paginación Dashboard |  |  |  |  |  |  | resources none → Abelino |
| 984 | Busqueda Dashboard |  |  |  |  |  |  | resources none → Abelino |
| 985 | Ventanas emergentes de validación |  |  |  |  |  |  | resources none → Abelino |
| 986 | **Administración de Inflación Mes** |  |  |  |  |  |  | was named Administración de Inflación |
| 1012 | **Administración de Crecimiento** |  |  |  | 92% → 75% |  |  |  |
| 1013 | Pantalla Principal |  | 2022-10-19 A |  | 0% → 100% | 38.31d → none |  |  |
| 1016 | Agregar | 2022-10-21 A → 2022-10-21 | 2022-10-21 A → 2022-10-24 (+3d) |  | 100% → 0% | none → 35.38d |  | constraint none → start no earlier than 2022-10-21 |
| 1017 | Editar | 2022-10-24 A → 2022-10-24 | 2022-10-24 A → 2022-10-25 (+1d) |  | 100% → 0% | none → 34.44d |  | constraint none → start no earlier than 2022-10-22 |
| 1018 | Eliminar | 2022-10-25 A → 2022-10-25 | 2022-10-25 A → 2022-10-26 (+1d) |  | 100% → 0% | none → 33.5d |  | constraint none → start no earlier than 2022-10-25 |
| 1043 | Configuración de Dashboard |  |  |  |  |  |  | resources none → Abelino |
| 1044 | Exportación de dashboard PDF |  |  |  |  |  |  | resources none → Abelino |
| 1045 | Exportación de dashboard Excel |  |  |  |  |  |  | resources none → Abelino |
| 1046 | Paginación Dashboard |  |  |  |  |  |  | resources none → Abelino |
| 1047 | Busqueda Dash board |  |  |  |  |  |  | resources none → Abelino |
| 1048 | Ventanas emergentes de validación |  |  |  |  |  |  | resources none → Abelino |
| 1054 | Configuración de Dashboard |  |  |  |  |  |  | resources none → Abelino |
| 1055 | Exportación de dashboard PDF |  |  |  |  |  |  | resources none → Abelino |
| 1056 | Exportación de dashboard Excel |  |  |  |  |  |  | resources none → Abelino |
| 1057 | Paginación Dashboard |  |  |  |  |  |  | resources none → Abelino |
| 1058 | Busqueda Dash board |  |  |  |  |  |  | resources none → Abelino |
| 1059 | Ventanas emergentes de validación |  |  |  |  |  |  | resources none → Abelino |
| 1067 | Configuración de Dashboard |  |  |  |  |  |  | resources none → Abelino |
| 1068 | Exportación de dashboard PDF |  |  |  |  |  |  | resources none → Abelino |
| 1069 | Exportación de dashboard Excel |  |  |  |  |  |  | resources none → Abelino |
| 1070 | Paginación Dashboard |  |  |  |  |  |  | resources none → Abelino |
| 1071 | Busqueda Dash board |  |  |  |  |  |  | resources none → Abelino |
| 1072 | Ventanas emergentes de validación |  |  |  |  |  |  | resources none → Abelino |
| 1080 | Configuración de Dashboard |  |  |  |  |  |  | resources none → Abelino |
| 1081 | Exportación de dashboard PDF |  |  |  |  |  |  | resources none → Abelino |
| 1082 | Exportación de dashboard Excel |  |  |  |  |  |  | resources none → Abelino |
| 1083 | Paginación Dashboard |  |  |  |  |  |  | resources none → Abelino |
| 1084 | Busqueda Dash board |  |  |  |  |  |  | resources none → Abelino |
| 1085 | Ventanas emergentes de validación |  |  |  |  |  |  | resources none → Abelino |
| 1086 | **Administración de Pobreza Extrema** |  | 2022-10-27 A → 2022-11-11 A (+15d) | 1.88d → 11.31d |  |  |  |  |
| 1099 | **Administración de Pobreza Moderada** |  | 2022-10-28 A → 2022-11-14 A (+17d) | 1.88d → 11.31d |  |  |  |  |
| 1112 | **Administración de Proyección** |  |  |  |  |  |  | resources none → Abelino |
| 1113 | Pantalla Principal |  |  |  |  |  |  | resources none → Abelino |
| 1114 | Agregar |  |  |  |  |  |  | resources none → Abelino |
| 1115 | Editar |  |  |  |  |  |  | resources none → Abelino |
| 1116 | Eliminar |  |  |  |  |  |  | resources none → Abelino |
| 1117 | Plantilla Carga Masiva Proyección |  |  |  |  |  |  | resources none → Abelino |
| 1118 | Api Plantilla caga masiva Municipio - Proyección |  |  |  |  |  |  | resources none → Abelino |
| 1229 | Plantilla Carga Masiva ISAN |  |  |  |  |  |  | resources none → Juanita |
| 1230 | Api Plantilla caga masiva Municipio - ISAN |  |  |  |  |  |  | resources none → Juanita |
| 1318 | **sprint 6** | 2022-10-11 A → 2022-08-18 A (-54d) |  | 24.44d → 59.12d | 5% → 13% |  |  |  |
| 1319 | **Módulo DAMOP** | 2022-10-11 A → 2022-08-18 A (-54d) |  | 24.44d → 59.12d | 5% → 13% |  |  |  |
| 1323 | Contador de Notificaciones (Icono campanita) |  |  |  |  |  |  | resources none → Adolfo |
| 1327 | Insertar |  |  |  |  |  |  | resources none → Juanita |
| 1336 | Modificar |  |  |  |  |  |  | resources none → Juanita |
| 1339 | **Administración de Avisos** |  |  |  | 0% → 70% |  |  |  |
| 1340 | Pantalla principal |  | 2022-10-14 A |  | 0% → 100% | 41.12d → none |  | resources none → Abelino |
| 1344 | Configuración de Dashboard |  | 2022-10-20 A |  | 0% → 100% | 37.38d → none |  | resources none → Abelino |
| 1345 | Exportación de dashboard PDF |  | 2022-10-21 A |  | 0% → 100% | 36.44d → none |  | resources none → Abelino |
| 1346 | Exportación de dashboard Excel |  | 2022-10-24 A |  | 0% → 100% | 35.5d → none |  | resources none → Abelino |
| 1347 | Paginación Dashboard |  | 2022-10-25 A |  | 0% → 100% | 34.56d → none |  | resources none → Abelino |

| ID | Task | Start | Finish | Duration | Complete | Total float | Predecessors | Other |
| --- | --- | --- | --- | --- | --- | --- | --- | --- |
| 1348 | Busqueda Dash board |  | 2022-10-26 A |  | 0% → 100% | 33.62d → none |  | resources none → Abelino |
| 1349 | Ventanas emergentes de validación |  | 2022-10-27 A |  | 0% → 100% | 32.69d → none |  | resources none → Abelino |
| 1350 | **Administración de Eventos** | 2022-10-14 A → 2022-08-18 A (-57d) | 2022-10-28 → 2022-10-20 (-8d) | 9.44d → 41.31d | 0% → 70% | 31.75d → 37.38d |  |  |
| 1351 | Pantalla principal | 2022-10-14 A → 2022-08-18 A (-57d) | 2022-10-17 → 2022-08-19 A (-59d) |  | 0% → 100% | 40.19d → none |  | resources none → Abelino |
| 1355 | Configuración de Dashboard | 2022-10-20 A → 2022-08-18 A (-63d) | 2022-10-21 → 2022-08-19 A (-63d) |  | 0% → 100% | 36.44d → none |  | resources none → Abelino |
| 1356 | Exportación de dashboard PDF | 2022-10-21 A → 2022-08-18 A (-64d) | 2022-10-24 → 2022-08-19 A (-66d) |  | 0% → 100% | 35.5d → none |  | resources none → Abelino |
| 1357 | Exportación de dashboard Excel | 2022-10-24 A → 2022-08-18 A (-67d) | 2022-10-25 → 2022-08-19 A (-67d) |  | 0% → 100% | 34.56d → none |  | resources none → Abelino |
| 1358 | Paginación Dashboard | 2022-10-25 A → 2022-08-18 A (-68d) | 2022-10-26 → 2022-08-19 A (-68d) |  | 0% → 100% | 33.62d → none |  | resources none → Abelino |
| 1359 | Busqueda Dash board | 2022-10-26 A → 2022-08-18 A (-69d) | 2022-10-27 → 2022-08-19 A (-69d) |  | 0% → 100% | 32.69d → none |  | resources none → Abelino |
| 1360 | Ventanas emergentes de validación | 2022-10-27 A → 2022-08-18 A (-70d) | 2022-10-28 → 2022-08-19 A (-70d) |  | 0% → 100% | 31.75d → none |  | resources none → Abelino |
| 1367 | Pantalla principal |  |  |  |  |  |  | resources none → Abelino |
| 1368 | Insertar |  |  |  |  |  |  | resources none → Adolfo |
| 1369 | Modificar |  |  |  |  |  |  | resources none → Adolfo |
| 1370 | Eliminar |  |  |  |  |  |  | resources none → Adolfo |
| 1371 | Visualizar |  |  |  |  |  |  | resources none → Adolfo |
| 1372 | Job de Ejecucion automatica |  |  |  |  |  |  | resources none → Adolfo |
| 1516 | **Módulo DCCP** |  |  | 4.75d → 4.81d |  | none → 15.75d |  |  |
| 1517 | **Dashboard Perfil DCCP** |  |  | 4.75d → 4.81d |  | none → 15.75d |  |  |
| 1518 | Bloqueo de Sesión |  | 2022-11-16 → 2022-11-17 (+1d) |  |  | 19.56d → 18.56d |  |  |
| 1521 | Contador de Notificaciones (Icono campanita) |  |  |  |  |  |  | resources none → Adolfo |
| 1529 | Contador de Notificaciones (Icono campanita) |  |  |  |  |  |  | resources none → Adolfo |
| 1539 | Contador de Notificaciones (Icono campanita) |  |  |  |  |  |  | resources none → Adolfo |
| 1548 | Login |  |  |  |  |  |  | resources none → Abelino |
| 1549 | Logout |  |  |  |  |  |  | resources none → Abelino |
| 1633 | Contador de Notificaciones (Icono campanita) |  |  |  |  |  |  | resources none → Adolfo |
| 1725 | Fin |  |  |  |  | none → 0d | none → 1718 |  |
